# Familynow3

Schedule from MS Project, 2017-05-19 to 2017-07-25, A marks actual dates.

## Calendars

- Standard: Mon-Fri 08:00-12:00, 13:00-17:00; Sat-Sun off.

## Resources

| Resource |
| --- |
| RA - Guruprasad K J |
| RA - Naveen Math |
| RA - Ramkumar |
| RA - Sudhaker |
| RT - Debarghya Das |
| RD9 - Shijo |
| RD2 - Kiran Rohit |
| RD3 - Karthik P |
| RD4 - Mahmooda |
| RD5 - Swarnashree |
| RD1 - Ravindra |
| RD6 - Kamalkanth |
| RD7 - Kishore Kumar |
| RD8 - Nagesha |
| UD3 - Miju Mathew |
| RQL - Sudha |
| RQA - Sharath Shet |
| RP - Vineeth R S |
| UD1 - Ankit Kumar |
| UD2 - Yuvaraj |
| UQ - Lalit Kumar Jha |
| UA - Raju |
| UL - Alok Kumar Pandey |
| RQA - Dinesha Kullal |
| RH - Rajeev R |
| RS - Niranjan Bhat |
| RA - Prashanth Hegde |
| RA - Kiran B |
| RD10 - Basil |
| RD11 - Sharan |
| RD12 - Vaishali N Telang |
| RD13 - Karthik S S |
| UX - Shiva |
| UMDM - Eferin |
| UR - Dhanu |
| UX - Chethana |
| UO Rob Plummer |
| U-SI |
| UO - Rob Plummer |
| RD14 -Vijayaraj |
| RD15 - Akshay Kumar |
| RD16 - Rakesh Jangid |

## Schedule

| ID | WBS | Task | Duration | Start | Finish | Predecessors | Complete | Remaining | Total slack | Free slack | Constraint | Resources | Work | Actual work |
| --- | --- | --- | --- | --- | --- | --- | --- | --- | --- | --- | --- | --- | --- | --- |
| 1 | 1 | **Family Now - Demonstration App** | 48d | 2017-05-19 A | 2017-07-25 |  | 3% | 46.48d | 0d |  |  |  | 7074.4h | 320.64h |
| 2 | 1.1 | Requirement gathering | 8d | 2017-05-19 | 2017-05-30 |  |  |  | 28d | 0d | start no earlier than 2017-05-19 | RH - Rajeev R; RA - Guruprasad K J | 128h |  |
| 3 | 1.2 | **Sprint 0** | 8d | 2017-05-31 | 2017-06-09 | 2 |  |  | 27d |  |  |  | 392h |  |
| 4 | 1.2.1 | **Planning and Definition** | 8d | 2017-05-31 | 2017-06-09 |  |  |  | 27d |  |  |  | 136h |  |
| 5 | 1.2.1.1 | Project Plan V1.0 | 7d | 2017-05-31 | 2017-06-08 |  |  |  | 28d |  | start no earlier than 2017-05-31 | RP - Vineeth R S | 56h |  |
| 6 | 1.2.1.2 | HLD V1.0 | 6d | 2017-06-02 | 2017-06-09 |  |  |  | 26d | 2d | finish no earlier than 2017-06-09 | RA - Guruprasad K J | 48h |  |
| 7 | 1.2.1.3 | Security Architecture View | 2d | 2017-06-08 | 2017-06-09 |  |  |  | 27d |  | finish no earlier than 2017-06-09 | RA - Guruprasad K J | 16h |  |
| 8 | 1.2.1.4 | Message Flow and Data View | 2d | 2017-06-08 | 2017-06-09 |  |  |  | 27d |  | finish no earlier than 2017-06-09 | RA - Guruprasad K J | 16h |  |
| 9 | 1.2.2 | **Infrastructure Definition** | 4d | 2017-06-06 | 2017-06-09 |  |  |  | 27d |  |  |  | 128h |  |
| 10 | 1.2.2.1 | Deployment Diagram | 4d | 2017-06-06 | 2017-06-09 |  |  |  | 27d |  | finish no earlier than 2017-06-09 | UA - Raju; RA - Guruprasad K J | 64h |  |
| 11 | 1.2.2.2 | Bill of Material | 4d | 2017-06-06 | 2017-06-09 |  |  |  | 27d |  | finish no earlier than 2017-06-09 | UA - Raju; RA - Guruprasad K J | 64h |  |
| 12 | 1.2.3 | **MF Location Services** | 1d | 2017-06-09 | 2017-06-09 |  |  |  | 27d |  |  |  | 8h |  |
| 13 | 1.2.3.1 | Screen Image for RFP | 1d | 2017-06-09 | 2017-06-09 |  |  |  | 27d |  | finish no earlier than 2017-06-09 | UX - Shiva | 8h |  |
| 14 | 1.2.4 | **Third Party Tools - Analysis / Evaluation** | 3d | 2017-06-06 | 2017-06-08 |  |  |  | 28d |  |  |  | 120h |  |
| 15 | 1.2.4.1 | Forms Library | 3d | 2017-06-06 | 2017-06-08 |  |  |  | 28d |  | finish no earlier than 2017-06-08 | UA - Raju | 24h |  |
| 16 | 1.2.4.2 | Chat Engine | 2d | 2017-06-07 | 2017-06-08 |  |  |  | 28d |  | finish no earlier than 2017-06-08 | RA - Guruprasad K J | 16h |  |
| 17 | 1.2.4.3 | Digital Signature | 2d | 2017-06-07 | 2017-06-08 |  |  |  | 28d |  | finish no earlier than 2017-06-08 | UA - Raju | 16h |  |
| 18 | 1.2.4.4 | Audio Tagging | 2d | 2017-06-07 | 2017-06-08 |  |  |  | 28d |  | finish no earlier than 2017-06-08 | UA - Raju | 16h |  |
| 19 | 1.2.4.5 | Dictation | 2d | 2017-06-07 | 2017-06-08 |  |  |  | 28d |  | finish no earlier than 2017-06-08 | UA - Raju | 16h |  |
| 20 | 1.2.4.6 | Work Flow Engine - JBPM | 2d | 2017-06-07 | 2017-06-08 |  |  |  | 28d |  | finish no earlier than 2017-06-08 | UA - Raju | 16h |  |
| 21 | 1.2.4.7 | MDM - Airwatch | 2d | 2017-06-07 | 2017-06-08 |  |  |  | 28d |  | finish no earlier than 2017-06-08 | UA - Raju | 16h |  |
| 22 | 1.3 | **Sprint 1** | 21d | 2017-05-31 A | 2017-06-28 |  | 5% | 19.91d | 14d |  |  |  | 1213.6h | 86h |
| 23 | 1.3.1 | **Environment Setup** | 4d | 2017-06-06 | 2017-06-09 |  |  |  | 22d |  |  |  | 64h |  |
| 24 | 1.3.1.1 | **Robosoft - Installations** | 4d | 2017-06-06 | 2017-06-09 |  |  |  | 27d |  |  |  | 32h |  |
| 25 | 1.3.1.1.1 | Dev Env - MobileFirst, Mobile First - MTW, AngularJS 4, Ionic 3 | 1d | 2017-06-06 | 2017-06-06 |  |  |  | 27d | 0d | start no earlier than 2017-06-06 | RA - Sudhaker | 8h |  |
| 26 | 1.3.1.1.2 | Build Automation - Git, JIRA, SONAR, Jenkins | 3d | 2017-06-07 | 2017-06-09 | 25 |  |  | 27d |  |  | RQL - Sudha | 24h |  |

Notes:
- 6: Text1: When Raju signs off; Serves any necessary RFP and documentation requirements
- 10: Text1: Defined for Mobile Devices and MBaaS - required for SaaS and on-premise definitions
- 11: Text1: BoM for Mobile Devices and MBaaS - required for SaaS and on-premise definitions
- 12: Text1: Documentation supplied to Rob, Successor tasks identified if any; called Live Tracking
- 14: Text1: For each 3rd party tool - may require business partner agreement; agreement with Robosoft and Unisys on functional behavior and technical implementation

| ID | WBS | Task | Duration | Start | Finish | Predecessors | Complete | Remaining | Total slack | Free slack | Constraint | Resources | Work | Actual work |
| --- | --- | --- | --- | --- | --- | --- | --- | --- | --- | --- | --- | --- | --- | --- |
| 27 | 1.3.1.2 | **Unisys Installations** | 4d | 2017-06-06 | 2017-06-09 |  |  |  | 22d |  |  |  | 32h |  |
| 28 | 1.3.1.2.1 | Dev Env - MobileFirst, Mobile First - MTW, AngularJS 4, Ionic 3 | 1d | 2017-06-06 | 2017-06-06 |  |  |  | 22d | 0d | start no earlier than 2017-06-06 | UL - Alok Kumar Pandey | 8h |  |
| 29 | 1.3.1.2.2 | Build Automation - Git, JIRA, SONAR, Jenkins | 3d | 2017-06-07 | 2017-06-09 | 28 |  |  | 27d |  |  | UA - Raju | 24h |  |
| 30 | 1.3.2 | **Planning and Definition** | 3d | 2017-06-12 | 2017-06-14 |  |  |  | 24d |  |  |  | 32h |  |
| 31 | 1.3.2.1 | Updated Project Plan V2.0 (planning for Sprint 2) | 1d | 2017-06-14 | 2017-06-14 | 6 |  |  | 24d |  | start no earlier than 2017-06-14 | RP - Vineeth R S | 8h |  |
| 32 | 1.3.2.2 | Updated HLD V2.0 (Update for Sprint 2 Tasks) | 3d | 2017-06-12 | 2017-06-14 |  |  |  | 24d |  | start no earlier than 2017-06-12 | RA - Guruprasad K J | 24h |  |
| 33 | 1.3.3 | **Proof of Concept - Phase 1 (3rd party independent items)** | 18d | 2017-05-31 A | 2017-06-23 |  | 2% | 17.68d | 17d |  |  |  | 616h | 8h |
| 34 | 1.3.3.1 | PoC Technical Solution Overview Template | 1d | 2017-06-08 A | 2017-06-08 A |  | 100% |  |  |  | start no earlier than 2017-06-08 | UA - Raju | 8h | 8h |
| 35 | 1.3.3.2 | **Offline-online sync** | 11d | 2017-06-09 | 2017-06-23 |  |  |  | 11d |  |  |  | 152h |  |
| 36 | 1.3.3.2.1 | Scope agreement / Requirements affirmations | 1d | 2017-06-09 | 2017-06-09 |  |  |  | 11d | 0d | start no earlier than 2017-06-09 | UA - Raju | 8h |  |
| 37 | 1.3.3.2.2 | Technical Solution Overview Template | 1d | 2017-06-12 | 2017-06-12 | 36 |  |  | 11d | 0d | start no earlier than 2017-06-09 | RA - Guruprasad K J | 8h |  |
| 38 | 1.3.3.2.3 | Development, Testing, Demo | 8d | 2017-06-13 | 2017-06-22 | 37 |  |  | 11d | 0d | start no earlier than 2017-06-06 | RA - Sudhaker; RD9 - Shijo | 128h |  |
| 39 | 1.3.3.2.4 | Validations by Raju or designate | 1d | 2017-06-23 | 2017-06-23 | 38 |  |  | 17d |  | start no earlier than 2017-06-16 | UA - Raju | 8h |  |
| 40 | 1.3.3.3 | **Secure picture storage on Mobile device** | 12d | 2017-06-08 | 2017-06-23 |  |  |  | 17d |  |  |  | 152h |  |
| 41 | 1.3.3.3.1 | Determine approach | 1d | 2017-06-08 | 2017-06-08 |  |  |  | 17d | 0d | start no earlier than 2017-06-08 | RA - Guruprasad K J | 8h |  |
| 42 | 1.3.3.3.2 | Scope agreement / Requirements affirmations | 1d | 2017-06-09 | 2017-06-09 | 41 |  |  | 17d | 0d |  | UA - Raju | 8h |  |
| 43 | 1.3.3.3.3 | Technical Solution Overview Template | 1d | 2017-06-12 | 2017-06-12 | 42 |  |  | 17d | 0d | start no earlier than 2017-06-09 |  |  |  |
| 44 | 1.3.3.3.4 | Development, Testing, Demo | 8d | 2017-06-13 | 2017-06-22 | 43 |  |  | 17d | 0d | start no earlier than 2017-06-06 | RA - Ramkumar; RD2 - Kiran Rohit | 128h |  |
| 45 | 1.3.3.3.5 | Validation by Raju or designate | 1d | 2017-06-23 | 2017-06-23 | 44 |  |  | 17d |  |  | UA - Raju | 8h |  |
| 46 | 1.3.3.4 | **Lazy loading** | 11d | 2017-06-09 | 2017-06-23 |  |  |  | 15d |  |  |  | 144h |  |
| 47 | 1.3.3.4.1 | Scope agreement / Requirements affirmations | 1d | 2017-06-09 | 2017-06-09 |  |  |  | 15d | 0d | start no earlier than 2017-06-09 | UA - Raju | 8h |  |
| 48 | 1.3.3.4.2 | Technical Solution Overview Template | 1d | 2017-06-12 | 2017-06-12 | 47 |  |  | 15d | 0d | start no earlier than 2017-06-09 |  |  |  |
| 49 | 1.3.3.4.3 | Development, Testing, Demo | 8d | 2017-06-13 | 2017-06-22 | 48 |  |  | 15d | 0d | start no earlier than 2017-06-09 | RA - Guruprasad K J; RD3 - Karthik P | 128h |  |
| 50 | 1.3.3.4.4 | Validation by Raju or designate | 1d | 2017-06-23 | 2017-06-23 | 49 |  |  | 17d |  | start no earlier than 2017-06-16 | UA - Raju | 8h |  |

Notes:
- 34: Text1: Design Technical Solution Overview Template for documentation capture
- 35: Text1: Demo, PoC Technical Solution Overview Template completed
- 36: Text1: Raju confident POC Developer understands / Developer Affirms understanding
- 37: Text1: Reviewed by Raju or Rob
- 38: Text1: Serves RFP Response
- 40: Text1: Demo,PoC Technical Solution Overview Template completed
- 42: Text1: Raju confident POC Developer understands / Developer Affirms understanding
- 43: Text1: Reviewed by Raju or Rob
- 46: Text1: Demo, PoC Technical Solution Overview Template completed
- 47: Text1: Raju confident POC Developer understands / Developer Affirms understanding
- 48: Text1: Reviewed by Raju or Rob

| ID | WBS | Task | Type | Duration | Start | Finish | Predecessors | Complete | Remaining | Total slack | Free slack | Constraint | Resources | Work | Actual work |
| --- | --- | --- | --- | --- | --- | --- | --- | --- | --- | --- | --- | --- | --- | --- | --- |
| 51 | 1.3.3.5 | **View large manual in pdf** |  | 11d | 2017-06-08 | 2017-06-22 |  |  |  | 18d |  |  |  | 80h |  |
| 52 | 1.3.3.5.1 | Identify technology, approach and design |  | 1d | 2017-06-08 | 2017-06-08 |  |  |  | 18d | 0d | start no earlier than 2017-06-08 | RA - Guruprasad K J | 8h |  |
| 53 | 1.3.3.5.2 | Scope agreement / Requirements affirmations |  | 1d | 2017-06-09 | 2017-06-09 | 52 |  |  | 18d | 0d |  | UA - Raju | 8h |  |
| 54 | 1.3.3.5.3 | Technical Solution Overview Template |  | 1d | 2017-06-12 | 2017-06-12 | 53 |  |  | 18d | 0d | start no earlier than 2017-06-09 |  |  |  |
| 55 | 1.3.3.5.4 | Development, Testing, Demo |  | 7d | 2017-06-13 | 2017-06-21 | 28, 54 |  |  | 18d | 0d |  | UL - Alok Kumar Pandey | 56h |  |
| 56 | 1.3.3.5.5 | Validation by Raju or designate |  | 1d | 2017-06-22 | 2017-06-22 | 55 |  |  | 18d |  |  | UA - Raju | 8h |  |
| 57 | 1.3.3.6 | **MDM integration** |  | 17d | 2017-05-31 | 2017-06-22 |  |  |  | 18d |  |  |  | 80h |  |
| 58 | 1.3.3.6.1 | Documentation for Airwatch supplier |  | 1d | 2017-05-31 | 2017-05-31 |  |  |  | 24d | 6d |  | UMDM - Eferin | 8h |  |
| 59 | 1.3.3.6.2 | Scope agreement / Requirements affirmations |  | 1d | 2017-06-09 | 2017-06-09 | 58 |  |  | 18d | 0d | start no earlier than 2017-06-09 | UA - Raju | 8h |  |
| 60 | 1.3.3.6.3 | Technical Solution Overview Template |  | 1d | 2017-06-12 | 2017-06-12 | 59 |  |  | 18d | 0d | start no earlier than 2017-06-09 |  |  |  |
| 61 | 1.3.3.6.4 | Development, Testing, Demo |  | 7d | 2017-06-13 | 2017-06-21 | 60 |  |  | 18d | 0d | start no earlier than 2017-06-09 | RA - Naveen Math | 56h |  |
| 62 | 1.3.3.6.5 | Validation by Raju or designate |  | 1d | 2017-06-22 | 2017-06-22 | 61 |  |  | 18d |  | start no earlier than 2017-06-20 | UA - Raju | 8h |  |
| 63 | 1.3.4 | **Client App Development** |  | 17d | 2017-05-31 A | 2017-06-22 |  | 8% | 15.58d | 18d |  |  |  | 493.6h | 78h |
| 64 | 1.3.4.1 | **(Investig:Case Workload) View Case List** |  | 9d | 2017-06-09 A | 2017-06-21 |  | 2% | 8.78d | 19d |  |  |  | 54.8h | 2h |
| 65 | 1.3.4.1.1 | **Development** |  | 9d | 2017-06-09 A | 2017-06-21 |  | 2% | 8.78d | 19d |  |  |  | 54.8h | 2h |
| 66 | 1.3.4.1.1.1 | User Story Defined | milestone | 0d | 2017-06-09 A | 2017-06-09 A |  | 100% |  |  |  | finish no earlier than 2017-06-08 | UR - Dhanu |  |  |
| 67 | 1.3.4.1.1.2 | Prototype Wireframe | milestone | 0d | 2017-06-09 A | 2017-06-09 A |  | 100% |  |  |  | finish no earlier than 2017-06-08 | UX - Chethana |  |  |
| 68 | 1.3.4.1.1.3 | User story review with developer |  | 0.12d | 2017-06-09 A | 2017-06-09 A |  | 100% |  |  |  | start no earlier than 2017-06-09 | UR - Dhanu | 1h | 1h |
| 69 | 1.3.4.1.1.4 | Wireframe walkthru with Developer |  | 0.12d | 2017-06-09 A | 2017-06-09 A |  | 100% |  |  |  | start no earlier than 2017-06-09 | UX - Chethana | 1h | 1h |
| 70 | 1.3.4.1.1.5 | Coding Backend |  | 2d | 2017-06-09 | 2017-06-12 | 67 |  |  | 25d | 0d |  | RD5 - Swarnashree | 16h |  |
| 71 | 1.3.4.1.1.6 | **Coding Frontend** |  | 1d | 2017-06-09 | 2017-06-09 | 66 |  |  | 26d | 1d |  | RD1 - Ravindra | 8h |  |
| 72 | 1.3.4.1.1.6.1 | UI Development |  | 1d | 2017-06-09 | 2017-06-09 |  |  |  | 26d |  |  |  |  |  |
| 73 | 1.3.4.1.1.6.2 | Navigation |  | 1d | 2017-06-09 | 2017-06-09 |  |  |  | 26d |  |  |  |  |  |
| 74 | 1.3.4.1.1.6.3 | Business Logic |  | 1d | 2017-06-09 | 2017-06-09 |  |  |  | 26d |  |  |  |  |  |
| 75 | 1.3.4.1.1.7 | UX/UI Review |  | 1d | 2017-06-19 | 2017-06-19 |  |  |  | 21d |  | start no earlier than 2017-06-19 | UX - Chethana | 8h |  |
| 76 | 1.3.4.1.1.8 | Sanity Test Cases |  | 1d | 2017-06-09 | 2017-06-09 |  |  |  | 27d |  | start no earlier than 2017-06-09 | UQ - Lalit Kumar Jha [10%] | 0.8h |  |
| 77 | 1.3.4.1.1.9 | Sanity Testing |  | 1d | 2017-06-13 | 2017-06-13 | 70, 71 |  |  | 25d |  |  | UQ - Lalit Kumar Jha [50%]; RQA - Sharath Shet [50%] | 8h |  |
| 78 | 1.3.4.1.1.10 | Code Review |  | 1d | 2017-06-13 | 2017-06-13 | 70, 71 |  |  | 25d |  |  | RT - Debarghya Das [50%] | 4h |  |
| 79 | 1.3.4.1.1.11 | Demo / Acceptance test |  | 1d | 2017-06-21 | 2017-06-21 |  |  |  | 19d |  | start no earlier than 2017-06-21 | UO - Rob Plummer | 8h |  |

Notes:
- 51: Text1: Demo, PoC Technical Solution Overview Template completed
- 53: Text1: Raju confident POC Developer understands / Developer Affirms understanding
- 54: Text1: Reviewed by Raju or Rob
- 57: Text1: Demo PoC Technical Solution Overview Template completed
- 59: Text1: Raju confident POC Developer understands / Developer Affirms understanding
- 60: Text1: Reviewed by Raju or Rob
- 64: Text2: TBD
- 66: Text1: User Story, Design Notes (no design notes for stubbed out User Stories) / Text2: User Story, Design Notes (no design notes for stubbed out User Stories)
- 67: Text1: Full interactive prototype delivered / Text2: Full interactive prototype delivered
- 70: Text1: Acceptance criteria satisfied thru unit testing
- 71: Text1: Acceptance criteria satisfied thru unit testing

| ID | WBS | Task | Type | Duration | Start | Finish | Predecessors | Complete | Remaining | Total slack | Free slack | Constraint | Resources | Work | Actual work |
| --- | --- | --- | --- | --- | --- | --- | --- | --- | --- | --- | --- | --- | --- | --- | --- |
| 80 | 1.3.4.2 | **(Investig:Case Workload) Call Case Contact** |  | 15d | 2017-05-31 A | 2017-06-20 |  | 2% | 14.77d | 20d |  |  |  | 88.4h | 2h |
| 81 | 1.3.4.2.1 | **Development** |  | 15d | 2017-05-31 A | 2017-06-20 |  | 2% | 14.77d | 20d |  |  |  | 88.4h | 2h |
| 82 | 1.3.4.2.1.1 | User Story Defined | milestone | 0d | 2017-06-09 A | 2017-06-09 A |  | 100% |  |  |  | finish no earlier than 2017-06-09 | UR - Dhanu |  |  |
| 83 | 1.3.4.2.1.2 | Prototype Wireframe | milestone | 0d | 2017-06-09 A | 2017-06-09 A |  | 100% |  |  |  | finish no earlier than 2017-06-09 | UX - Chethana |  |  |
| 84 | 1.3.4.2.1.3 | User story review with developer |  | 0.12d | 2017-06-09 A | 2017-06-09 A |  | 100% |  |  |  | start no earlier than 2017-06-09 | UR - Dhanu | 1h | 1h |
| 85 | 1.3.4.2.1.4 | Wireframe walkthru with Developer |  | 0.12d | 2017-06-09 A | 2017-06-09 A |  | 100% |  |  |  | start no earlier than 2017-06-09 | UX - Chethana | 1h | 1h |
| 86 | 1.3.4.2.1.5 | Coding Backend |  | 5d | 2017-06-09 | 2017-06-15 |  |  |  | 20d | 0d | start no earlier than 2017-06-09 | RD7 - Kishore Kumar | 40h |  |
| 87 | 1.3.4.2.1.6 | **Coding Frontend** |  | 1d | 2017-05-31 | 2017-05-31 |  |  |  | 31d | 11d |  | RD8 - Nagesha | 8h |  |
| 88 | 1.3.4.2.1.6.1 | UI Development |  | 1d | 2017-05-31 | 2017-05-31 |  |  |  | 31d |  |  |  |  |  |
| 89 | 1.3.4.2.1.6.2 | Navigation |  | 1d | 2017-05-31 | 2017-05-31 |  |  |  | 31d |  |  |  |  |  |
| 90 | 1.3.4.2.1.6.3 | Business Logic |  | 1d | 2017-05-31 | 2017-05-31 |  |  |  | 31d |  |  |  |  |  |
| 91 | 1.3.4.2.1.7 | UX/UI Review |  | 1d | 2017-06-19 | 2017-06-19 |  |  |  | 21d |  | finish no earlier than 2017-06-19 | UX - Chethana | 8h |  |
| 92 | 1.3.4.2.1.8 | Sanity Test Cases |  | 3d | 2017-06-09 | 2017-06-13 | 25 |  |  | 25d |  | start no earlier than 2017-06-09 | UQ - Lalit Kumar Jha [10%] | 2.4h |  |
| 93 | 1.3.4.2.1.9 | Sanity Testing |  | 2d | 2017-06-16 | 2017-06-19 | 86, 87 |  |  | 20d | 0d | start no earlier than 2017-06-15 | RQA - Sharath Shet [50%]; UQ - Lalit Kumar Jha [50%] | 16h |  |
| 94 | 1.3.4.2.1.10 | Code Review |  | 1d | 2017-06-16 | 2017-06-16 | 86, 87 |  |  | 22d |  |  | RT - Debarghya Das [50%] | 4h |  |
| 95 | 1.3.4.2.1.11 | Demo / Acceptance test |  | 1d | 2017-06-20 | 2017-06-20 | 93 |  |  | 20d |  |  | UO - Rob Plummer | 8h |  |
| 96 | 1.3.4.3 | **(Investig:Case Workload) SMS Case Contact** |  | 14d | 2017-05-31 A | 2017-06-19 |  | 22% | 10.93d | 21d |  |  |  | 54.8h | 26h |
| 97 | 1.3.4.3.1 | **Development** |  | 14d | 2017-05-31 A | 2017-06-19 |  | 22% | 10.93d | 21d |  |  |  | 54.8h | 26h |
| 98 | 1.3.4.3.1.1 | User Story Defined | milestone | 0d | 2017-06-09 A | 2017-06-09 A |  | 100% |  |  |  | start no earlier than 2017-06-09 | UR - Dhanu |  |  |
| 99 | 1.3.4.3.1.2 | Prototype Wireframe | milestone | 0d | 2017-06-09 A | 2017-06-09 A |  | 100% |  |  |  | start no earlier than 2017-06-09 | UX - Chethana |  |  |
| 100 | 1.3.4.3.1.3 | User story review with developer |  | 0.12d | 2017-06-09 A | 2017-06-09 A |  | 100% |  |  |  | start no earlier than 2017-06-09 | UR - Dhanu | 1h | 1h |
| 101 | 1.3.4.3.1.4 | Wireframe walkthru with Developer |  | 0.12d | 2017-06-09 A | 2017-06-09 A |  | 100% |  |  |  | start no earlier than 2017-06-09 | UX - Chethana | 1h | 1h |
| 102 | 1.3.4.3.1.5 | Coding Backend |  | 2d | 2017-06-09 A | 2017-06-12 A |  | 100% |  |  |  | start no earlier than 2017-06-09 | UD3 - Miju Mathew | 16h | 16h |
| 103 | 1.3.4.3.1.6 | **Coding Frontend** |  | 1d | 2017-05-31 A | 2017-05-31 |  |  | 1d | 33d | 8d |  | UD2 - Yuvaraj | 8h | 8h |
| 104 | 1.3.4.3.1.6.1 | UI Development |  | 1d | 2017-05-31 | 2017-05-31 |  |  |  | 33d |  |  |  |  |  |
| 105 | 1.3.4.3.1.6.2 | Navigation |  | 1d | 2017-05-31 | 2017-05-31 |  |  |  | 33d |  |  |  |  |  |
| 106 | 1.3.4.3.1.6.3 | Business Logic |  | 1d | 2017-05-31 | 2017-05-31 |  |  |  | 33d |  |  |  |  |  |
| 107 | 1.3.4.3.1.7 | Ux UI Review |  | 1d | 2017-06-14 | 2017-06-14 |  |  |  | 24d |  | start no earlier than 2017-06-14 | UX - Chethana | 8h |  |
| 108 | 1.3.4.3.1.8 | Sanity Test Cases |  | 1d | 2017-06-09 | 2017-06-09 | 25 |  |  | 27d |  | start no earlier than 2017-06-09 | UQ - Lalit Kumar Jha [10%] | 0.8h |  |
| 109 | 1.3.4.3.1.9 | Sanity Testing |  | 1d | 2017-06-15 | 2017-06-15 | 102, 103 |  |  | 23d |  | start no earlier than 2017-06-15 | RQA - Sharath Shet [50%]; UQ - Lalit Kumar Jha [50%] | 8h |  |
| 110 | 1.3.4.3.1.10 | Code Review |  | 1d | 2017-06-13 | 2017-06-13 | 102, 103 |  |  | 25d |  |  | RT - Debarghya Das [50%] | 4h |  |
| 111 | 1.3.4.3.1.11 | Demo / acceptance test |  | 1d | 2017-06-19 | 2017-06-19 |  |  |  | 21d |  | start no earlier than 2017-06-19 | UO - Rob Plummer | 8h |  |

Notes:
- 82: Text2: User Story, Design Notes (no design notes for stubbed out User Stories)
- 83: Text2: Full interactive prototype delivered
- 86: Text1: Acceptance criteria satisfied thru unit testing
- 87: Text1: Acceptance criteria satisfied thru unit testing
- 96: Text2: TBD
- 98: Text1: User Story, Design Notes (no design notes for stubbed out User Stories) / Text2: User Story, Design Notes (no design notes for stubbed out User Stories)
- 99: Text1: Full interactive prototype delivered / Text2: Full interactive prototype delivered

| ID | WBS | Task | Type | Duration | Start | Finish | Predecessors | Complete | Remaining | Total slack | Free slack | Constraint | Resources | Work | Actual work |
| --- | --- | --- | --- | --- | --- | --- | --- | --- | --- | --- | --- | --- | --- | --- | --- |
| 112 | 1.3.4.4 | **(Investig:Case Workload) Sorting** |  | 17d | 2017-05-31 A | 2017-06-22 |  |  | 17d | 18d |  |  |  | 88.4h |  |
| 113 | 1.3.4.4.1 | **Development** |  | 17d | 2017-05-31 A | 2017-06-22 |  |  | 17d | 18d |  |  |  | 88.4h |  |
| 114 | 1.3.4.4.1.1 | User Story Defined | milestone | 0d | 2017-06-09 A | 2017-06-09 A |  | 100% |  |  |  | start no earlier than 2017-06-09 | UR - Dhanu |  |  |
| 115 | 1.3.4.4.1.2 | Prototype Wireframe | milestone | 0d | 2017-06-09 A | 2017-06-09 A |  | 100% |  |  |  | start no earlier than 2017-06-09 | UX - Chethana |  |  |
| 116 | 1.3.4.4.1.3 | User story review with developer |  | 0.12d | 2017-06-09 | 2017-06-09 |  |  |  | 27.88d |  | start no earlier than 2017-06-09 | UR - Dhanu | 1h |  |
| 117 | 1.3.4.4.1.4 | Wireframe walkthru with Developer |  | 0.12d | 2017-06-09 | 2017-06-09 |  |  |  | 27.88d |  | start no earlier than 2017-06-09 | UX - Chethana | 1h |  |
| 118 | 1.3.4.4.1.5 | Coding Backend |  | 5d | 2017-06-14 | 2017-06-20 |  |  |  | 18d | 0d | start no earlier than 2017-06-14 | RD5 - Swarnashree | 40h |  |
| 119 | 1.3.4.4.1.6 | **Coding Frontend** |  | 1d | 2017-05-31 | 2017-05-31 |  |  |  | 32d | 14d |  | RD1 - Ravindra | 8h |  |
| 120 | 1.3.4.4.1.6.1 | UI Development |  | 1d | 2017-05-31 | 2017-05-31 |  |  |  | 32d |  |  |  |  |  |
| 121 | 1.3.4.4.1.6.2 | Navigation |  | 1d | 2017-05-31 | 2017-05-31 |  |  |  | 32d |  |  |  |  |  |
| 122 | 1.3.4.4.1.6.3 | Business Logic |  | 1d | 2017-05-31 | 2017-05-31 |  |  |  | 32d |  |  |  |  |  |
| 123 | 1.3.4.4.1.7 | UX/UI Review |  | 1d | 2017-06-21 | 2017-06-21 |  |  |  | 19d |  | start no earlier than 2017-06-21 | UX - Chethana | 8h |  |
| 124 | 1.3.4.4.1.8 | Sanity Test Cases |  | 3d | 2017-06-12 | 2017-06-14 |  |  |  | 24d |  | start no earlier than 2017-06-12 | UQ - Lalit Kumar Jha [10%] | 2.4h |  |
| 125 | 1.3.4.4.1.9 | Sanity Testing |  | 2d | 2017-06-21 | 2017-06-22 | 118, 119 |  |  | 18d |  |  | UQ - Lalit Kumar Jha [50%]; RQA - Sharath Shet [50%] | 16h |  |
| 126 | 1.3.4.4.1.10 | Code Review |  | 1d | 2017-06-21 | 2017-06-21 | 118, 119 |  |  | 18d | 0d |  | RT - Debarghya Das [50%] | 4h |  |
| 127 | 1.3.4.4.1.11 | Demo / Acceptance test |  | 1d | 2017-06-22 | 2017-06-22 | 126 |  |  | 18d |  |  | UO Rob Plummer | 8h |  |
| 128 | 1.3.4.5 | **(Investig:Investigation Details) Investigation Tabs** |  | 15d | 2017-05-31 A | 2017-06-20 |  | 2% | 14.63d | 20d |  |  |  | 50.8h | 2h |
| 129 | 1.3.4.5.1 | **Development** |  | 15d | 2017-05-31 A | 2017-06-20 |  | 2% | 14.63d | 20d |  |  |  | 50.8h | 2h |
| 130 | 1.3.4.5.1.1 | User Story Defined | milestone | 0d | 2017-06-09 A | 2017-06-09 A |  | 100% |  |  |  | finish no earlier than 2017-06-09 | UR - Dhanu |  |  |
| 131 | 1.3.4.5.1.2 | Prototype Wireframe | milestone | 0d | 2017-06-09 A | 2017-06-09 A |  | 100% |  |  |  | finish no earlier than 2017-06-09 | UX - Chethana |  |  |
| 132 | 1.3.4.5.1.3 | User story review with developer |  | 0.12d | 2017-06-12 A | 2017-06-12 A | 130, 131 | 100% |  |  |  | start no earlier than 2017-06-09 | UR - Dhanu | 1h | 1h |
| 133 | 1.3.4.5.1.4 | Wireframe walkthru with Developer |  | 0.12d | 2017-06-09 A | 2017-06-09 A |  | 100% |  |  |  | start no earlier than 2017-06-09 | UX - Chethana | 1h | 1h |
| 134 | 1.3.4.5.1.5 | Coding Backend |  | 1d | 2017-06-15 | 2017-06-15 |  |  |  | 21d | 0d | start no earlier than 2017-06-15 | RD7 - Kishore Kumar | 8h |  |
| 135 | 1.3.4.5.1.6 | **Coding Frontend** |  | 1d | 2017-05-31 | 2017-05-31 |  |  |  | 31d | 11d |  | UD1 - Ankit Kumar | 8h |  |
| 136 | 1.3.4.5.1.6.1 | UI Development |  | 1d | 2017-05-31 | 2017-05-31 |  |  |  | 31d |  |  |  |  |  |
| 137 | 1.3.4.5.1.6.2 | Navigation |  | 1d | 2017-05-31 | 2017-05-31 |  |  |  | 31d |  |  |  |  |  |
| 138 | 1.3.4.5.1.6.3 | Business Logic |  | 1d | 2017-05-31 | 2017-05-31 |  |  |  | 31d |  |  |  |  |  |
| 139 | 1.3.4.5.1.7 | UX/UI Review |  | 1d | 2017-06-15 | 2017-06-15 |  |  |  | 23d |  | start no earlier than 2017-06-15 | UX - Chethana | 8h |  |
| 140 | 1.3.4.5.1.8 | Sanity Test Cases |  | 1d | 2017-05-31 | 2017-05-31 |  |  |  | 33d | 0d |  | UQ - Lalit Kumar Jha [10%] | 0.8h |  |
| 141 | 1.3.4.5.1.9 | Sanity Testing |  | 2d | 2017-06-16 | 2017-06-19 | 134, 135 |  |  | 21d |  | start no earlier than 2017-06-16 | RQA - Sharath Shet [50%]; UQ - Lalit Kumar Jha [50%] | 12h |  |
| 142 | 1.3.4.5.1.10 | Code Review |  | 1d | 2017-06-16 | 2017-06-16 | 134, 135 |  |  | 22d |  |  | RT - Debarghya Das [50%] | 4h |  |
| 143 | 1.3.4.5.1.11 | Demo / acceptance test |  | 1d | 2017-06-20 | 2017-06-20 |  |  |  | 20d |  | start no earlier than 2017-06-20 | UO Rob Plummer | 8h |  |

Notes:
- 112: Text2: TBD
- 114: Text2: User Story, Design Notes (no design notes for stubbed out User Stories)
- 115: Text2: Full interactive prototype delivered
- 128: Text2: TBD
- 130: Text1: User Story, Design Notes (no design notes for stubbed out User Stories) / Text2: User Story, Design Notes (no design notes for stubbed out User Stories)
- 131: Text1: Full interactive prototype delivered / Text2: Full interactive prototype delivered

| ID | WBS | Task | Type | Duration | Start | Finish | Predecessors | Complete | Remaining | Total slack | Free slack | Constraint | Resources | Work | Actual work |
| --- | --- | --- | --- | --- | --- | --- | --- | --- | --- | --- | --- | --- | --- | --- | --- |
| 144 | 1.3.4.6 | **(Investig:Investigation Details) Investigation Tasks** |  | 15d | 2017-05-31 A | 2017-06-20 |  | 3% | 14.59d | 20d |  |  |  | 46.8h | 2h |
| 145 | 1.3.4.6.1 | **Development** |  | 15d | 2017-05-31 A | 2017-06-20 |  | 3% | 14.59d | 20d |  |  |  | 46.8h | 2h |
| 146 | 1.3.4.6.1.1 | User Story Defined | milestone | 0d | 2017-06-12 A | 2017-06-12 A |  | 100% |  |  |  | finish no earlier than 2017-06-12 | UR - Dhanu |  |  |
| 147 | 1.3.4.6.1.2 | Prototype Wireframe | milestone | 0d | 2017-06-12 A | 2017-06-12 A |  | 100% |  |  |  | finish no earlier than 2017-06-12 | UX - Chethana |  |  |
| 148 | 1.3.4.6.1.3 | User story review with developer |  | 0.12d | 2017-06-09 A | 2017-06-09 A |  | 100% |  |  |  | start no earlier than 2017-06-09 | UR - Dhanu | 1h | 1h |
| 149 | 1.3.4.6.1.4 | Wireframe walkthru with Developer |  | 0.12d | 2017-06-09 A | 2017-06-09 A |  | 100% |  |  |  | start no earlier than 2017-06-09 | UX - Chethana | 1h | 1h |
| 150 | 1.3.4.6.1.5 | Coding Backend |  | 1d | 2017-06-19 | 2017-06-19 |  |  |  | 19d | 6d | finish no earlier than 2017-06-19 | RD6 - Kamalkanth | 8h |  |
| 151 | 1.3.4.6.1.6 | **Coding Frontend** |  | 1d | 2017-05-31 | 2017-05-31 |  |  |  | 31d | 24d |  | RD3 - Karthik P | 8h |  |
| 152 | 1.3.4.6.1.6.1 | UI Development |  | 1d | 2017-05-31 | 2017-05-31 |  |  |  | 31d |  |  |  |  |  |
| 153 | 1.3.4.6.1.6.2 | Navigation |  | 1d | 2017-05-31 | 2017-05-31 |  |  |  | 31d |  |  |  |  |  |
| 154 | 1.3.4.6.1.6.3 | Business Logic |  | 1d | 2017-05-31 | 2017-05-31 |  |  |  | 31d |  |  |  |  |  |
| 155 | 1.3.4.6.1.7 | UX/UI Review |  | 1d | 2017-06-19 | 2017-06-19 |  |  |  | 21d |  | start no earlier than 2017-06-19 | UX - Chethana | 8h |  |
| 156 | 1.3.4.6.1.8 | Sanity Test Cases |  | 1d | 2017-05-31 | 2017-05-31 |  |  |  | 33d | 0d |  | UQ - Lalit Kumar Jha [10%] | 0.8h |  |
| 157 | 1.3.4.6.1.9 | Sanity Testing |  | 1d | 2017-06-19 | 2017-06-19 |  |  |  | 21d |  | finish no earlier than 2017-06-19 | RQA - Sharath Shet [50%]; UQ - Lalit Kumar Jha [50%] | 8h |  |
| 158 | 1.3.4.6.1.10 | Code Review |  | 1d | 2017-06-19 | 2017-06-19 |  |  |  | 21d |  | start no earlier than 2017-06-19 | RT - Debarghya Das [50%] | 4h |  |
| 159 | 1.3.4.6.1.11 | Demo / acceptance test |  | 1d | 2017-06-20 | 2017-06-20 |  |  |  | 20d |  | start no earlier than 2017-06-20 | UO Rob Plummer | 8h |  |
| 160 | 1.3.4.7 | **(Investig:Investigation Details) Overview Investigation** |  | 15d | 2017-05-31 A | 2017-06-20 |  | 35% | 9.8d | 20d |  |  |  | 70.8h | 34h |
| 161 | 1.3.4.7.1 | **Development** |  | 15d | 2017-05-31 A | 2017-06-20 |  | 35% | 9.8d | 20d |  |  |  | 70.8h | 34h |
| 162 | 1.3.4.7.1.1 | User Story Defined | milestone | 0d | 2017-06-09 A | 2017-06-09 A |  | 100% |  |  |  | finish no earlier than 2017-06-09 | UR - Dhanu |  |  |
| 163 | 1.3.4.7.1.2 | Prototype Wireframe | milestone | 0d | 2017-06-09 A | 2017-06-09 A |  | 100% |  |  |  | finish no earlier than 2017-06-09 | UX - Chethana |  |  |
| 164 | 1.3.4.7.1.3 | User story review with developer |  | 0.12d | 2017-06-09 A | 2017-06-09 A |  | 100% |  |  |  | start no earlier than 2017-06-09 | UR - Dhanu | 1h | 1h |
| 165 | 1.3.4.7.1.4 | Wireframe walkthru with Developer |  | 0.12d | 2017-06-09 A | 2017-06-09 A |  | 100% |  |  |  | start no earlier than 2017-06-09 | UX - Chethana | 1h | 1h |
| 166 | 1.3.4.7.1.5 | Coding Backend |  | 4d | 2017-06-13 A | 2017-06-16 A |  | 100% |  |  |  | start no earlier than 2017-06-13 | UD3 - Miju Mathew | 32h | 32h |
| 167 | 1.3.4.7.1.6 | **Coding Frontend** |  | 1d | 2017-05-31 | 2017-05-31 |  |  |  | 32d | 12d |  | RD3 - Karthik P | 8h |  |
| 168 | 1.3.4.7.1.6.1 | UI Development |  | 1d | 2017-05-31 | 2017-05-31 |  |  |  | 32d |  |  |  |  |  |
| 169 | 1.3.4.7.1.6.2 | Navigation |  | 1d | 2017-05-31 | 2017-05-31 |  |  |  | 32d |  |  |  |  |  |
| 170 | 1.3.4.7.1.6.3 | Business Logic |  | 1d | 2017-05-31 | 2017-05-31 |  |  |  | 32d |  |  |  |  |  |
| 171 | 1.3.4.7.1.7 | Ux UI Review |  | 1d | 2017-06-19 | 2017-06-19 |  |  |  | 21d |  | start no earlier than 2017-06-19 | UX - Chethana | 8h |  |
| 172 | 1.3.4.7.1.8 | Sanity Test Cases |  | 1d | 2017-06-01 | 2017-06-01 | 156, 140 |  |  | 33d |  |  | UQ - Lalit Kumar Jha [10%] | 0.8h |  |
| 173 | 1.3.4.7.1.9 | Sanity Testing |  | 1d | 2017-06-19 | 2017-06-19 | 166, 167 |  |  | 21d |  |  | UQ - Lalit Kumar Jha [50%]; RQA - Sharath Shet [50%] | 8h |  |
| 174 | 1.3.4.7.1.10 | Code Review |  | 1d | 2017-06-19 | 2017-06-19 | 166, 167 |  |  | 20d | 0d |  | RT - Debarghya Das [50%] | 4h |  |
| 175 | 1.3.4.7.1.11 | Demo / Acceptance test |  | 1d | 2017-06-20 | 2017-06-20 | 174 |  |  | 20d |  |  | UO Rob Plummer | 8h |  |

Notes:
- 144: Text2: TBD
- 146: Text1: User Story, Design Notes (no design notes for stubbed out User Stories) / Text2: User Story, Design Notes (no design notes for stubbed out User Stories)
- 147: Text1: Full interactive prototype delivered / Text2: Full interactive prototype delivered
- 150: Text1: Need Clarification on what is needed - Rob and Dhanu to clarifiy totals
- 160: Text2: TBD
- 162: Text2: User Story, Design Notes (no design notes for stubbed out User Stories)
- 163: Text2: Full interactive prototype delivered

| ID | WBS | Task | Type | Duration | Start | Finish | Predecessors | Complete | Remaining | Total slack | Free slack | Constraint | Resources | Work | Actual work |
| --- | --- | --- | --- | --- | --- | --- | --- | --- | --- | --- | --- | --- | --- | --- | --- |
| 176 | 1.3.4.8 | **(Investig:Engagement Tools) Engagement Tools** |  | 17d | 2017-05-31 A | 2017-06-22 |  | 3% | 16.48d | 18d |  |  |  | 38.8h | 10h |
| 177 | 1.3.4.8.1 | **Development** |  | 17d | 2017-05-31 A | 2017-06-22 |  | 3% | 16.48d | 18d |  |  |  | 38.8h | 10h |
| 178 | 1.3.4.8.1.1 | User Story Defined (Only UI Navigation) | milestone | 0d | 2017-06-09 A | 2017-06-09 A |  | 100% |  |  |  | finish no earlier than 2017-06-16 | UR - Dhanu |  |  |
| 179 | 1.3.4.8.1.2 | Prototype Wireframe | milestone | 0d | 2017-06-09 A | 2017-06-09 A |  | 100% |  |  |  | finish no earlier than 2017-06-16 | UX - Chethana |  |  |
| 180 | 1.3.4.8.1.3 | User story review with developer |  | 0.12d | 2017-06-09 A | 2017-06-09 A |  | 100% |  |  |  | finish no earlier than 2017-06-09 | UR - Dhanu | 1h | 1h |
| 181 | 1.3.4.8.1.4 | Wireframe walkthru with Developer |  | 0.12d | 2017-06-09 A | 2017-06-09 A |  | 100% |  |  |  | finish no earlier than 2017-06-09 | UX - Chethana | 1h | 1h |
| 182 | 1.3.4.8.1.5 | **Coding Frontend** |  | 1d | 2017-05-31 A | 2017-05-31 |  |  | 1d | 34d |  |  | RD2 - Kiran Rohit | 8h | 8h |
| 183 | 1.3.4.8.1.5.1 | UI Development |  | 1d | 2017-05-31 | 2017-05-31 |  |  |  | 34d |  |  |  |  |  |
| 184 | 1.3.4.8.1.5.2 | Navigation |  | 1d | 2017-05-31 | 2017-05-31 |  |  |  | 34d |  |  |  |  |  |
| 185 | 1.3.4.8.1.5.3 | Business Logic |  | 1d | 2017-05-31 | 2017-05-31 |  |  |  | 34d |  |  |  |  |  |
| 186 | 1.3.4.8.1.6 | Ux UI Review |  | 1d | 2017-06-19 | 2017-06-19 |  |  |  | 21d |  | start no earlier than 2017-06-19 | UX - Chethana | 8h |  |
| 187 | 1.3.4.8.1.7 | Sanity Test Cases |  | 1d | 2017-06-15 | 2017-06-15 |  |  |  | 23d |  | finish no earlier than 2017-06-15 | UQ - Lalit Kumar Jha [10%] | 0.8h |  |
| 188 | 1.3.4.8.1.8 | Sanity Testing |  | 1d | 2017-06-22 | 2017-06-22 |  |  |  | 18d |  | start no earlier than 2017-06-22 | RQA - Sharath Shet [50%]; UQ - Lalit Kumar Jha [50%] | 8h |  |
| 189 | 1.3.4.8.1.9 | Code Review |  | 1d | 2017-06-22 | 2017-06-22 |  |  |  | 18d |  | start no earlier than 2017-06-22 | RT - Debarghya Das [50%] | 4h |  |
| 190 | 1.3.4.8.1.10 | Demo / acceptance test |  | 1d | 2017-06-22 | 2017-06-22 |  |  |  | 18d |  | start no earlier than 2017-06-22 | UO Rob Plummer | 8h |  |
| 191 | 1.3.5 | **Sprint 1 - Acceptance** |  | 3d | 2017-06-23 | 2017-06-27 |  |  |  | 15d |  |  |  | 8h |  |
| 192 | 1.3.5.1 | Code Merge - Sprint 1 |  | 1d | 2017-06-23 | 2017-06-23 |  |  |  | 15d | 0d | start no earlier than 2017-06-23 |  |  |  |
| 193 | 1.3.5.2 | Integration Testing |  | 1d | 2017-06-26 | 2017-06-26 | 192 |  |  | 15d | 0d |  |  |  |  |
| 194 | 1.3.5.3 | Acceptance Testing |  | 1d | 2017-06-27 | 2017-06-27 | 193 |  |  | 15d |  |  | UO - Rob Plummer | 8h |  |
| 195 | 1.3.5.4 | Rework and Closure of all Identified defects |  | 3d | 2017-06-23 | 2017-06-27 |  |  |  | 15d |  | start no earlier than 2017-06-23 |  |  |  |
| 196 | 1.3.6 | Demo - Sprint 1 |  | 1d | 2017-06-28 | 2017-06-28 |  |  |  | 14d |  | start no earlier than 2017-06-28 |  |  |  |
| 197 | 1.4 | **Sprint 2** |  | 28d | 2017-05-31 A | 2017-07-07 |  | 12% | 24.61d | 7d |  |  |  | 1290.4h | 218.64h |
| 198 | 1.4.1 | **Planning and Definition** |  | 1d | 2017-06-15 | 2017-06-15 |  |  |  | -10d | 0d |  |  | 16h |  |
| 199 | 1.4.1.1 | Updated Project Plan V3.0 |  | 1d | 2017-06-15 | 2017-06-15 |  |  |  | -10d | 0d | start no earlier than 2017-06-15 | RP - Vineeth R S | 8h |  |
| 200 | 1.4.1.2 | Updated HLD V3.0 |  | 1d | 2017-06-15 | 2017-06-15 |  |  |  | 23d |  | start no earlier than 2017-06-15 | RA - Guruprasad K J | 8h |  |

Notes:
- 176: Text2: Stub
- 178: Text2: User Story, Design Notes (no design notes for stubbed out User Stories)
- 179: Text2: Full interactive prototype delivered

| ID | WBS | Task | Type | Duration | Start | Finish | Predecessors | Total slack | Free slack | Constraint | Resources | Work |
| --- | --- | --- | --- | --- | --- | --- | --- | --- | --- | --- | --- | --- |
| 201 | 1.4.2 | **Proof of Concept - Phase 2** |  | 24d | 2017-05-31 | 2017-07-03 |  | 11d |  |  |  | 360h |
| 202 | 1.4.2.1 | **Flag parts of the picture** |  | 14d | 2017-06-08 | 2017-06-27 |  | 15d |  |  |  | 96h |
| 203 | 1.4.2.1.1 | Scope agreement / Requirements affirmation |  | 1d | 2017-06-08 | 2017-06-08 |  | 19d | 0d | finish no earlier than 2017-06-08 | UA - Raju | 8h |
| 204 | 1.4.2.1.2 | Screen Image for RFP |  | 3d | 2017-06-09 | 2017-06-13 | 203 | 25d |  | start no earlier than 2017-06-09 | UX - Shiva | 24h |
| 205 | 1.4.2.1.3 | Technical Solution Overview Template |  | 1d | 2017-06-09 | 2017-06-09 | 203 | 19d | 4d | start no earlier than 2017-06-09 |  |  |
| 206 | 1.4.2.1.4 | Development, Testing, Demo |  | 7d | 2017-06-16 | 2017-06-26 | 205 | 15d | 0d | start no earlier than 2017-06-16 | RA - Ramkumar | 56h |
| 207 | 1.4.2.1.5 | Validation by Raju or designate |  | 1d | 2017-06-27 | 2017-06-27 | 206 | 15d |  | start no earlier than 2017-06-26 | UA - Raju | 8h |
| 208 | 1.4.2.2 | **Audio tagging** |  | 11d | 2017-06-08 | 2017-06-22 |  | 18d |  |  |  | 104h |
| 209 | 1.4.2.2.1 | Identify technology, approach and design |  | 1d | 2017-06-08 | 2017-06-08 |  | 18d | 0d | finish no earlier than 2017-06-08 | UL - Alok Kumar Pandey | 8h |
| 210 | 1.4.2.2.2 | Screen Image for RFP |  | 3d | 2017-06-09 | 2017-06-13 | 209 | 25d |  | start no earlier than 2017-06-09 | UX - Shiva | 24h |
| 211 | 1.4.2.2.3 | Scope agreement / Requirements affirmation |  | 1d | 2017-06-09 | 2017-06-09 | 209 | 18d | 0d | finish no earlier than 2017-06-08 | UA - Raju | 8h |
| 212 | 1.4.2.2.4 | Technical Solution Overview Template |  | 1d | 2017-06-12 | 2017-06-12 | 211 | 18d | 0d | start no earlier than 2017-06-09 |  |  |
| 213 | 1.4.2.2.5 | Development, Testing, Demo |  | 7d | 2017-06-13 | 2017-06-21 | 212 | 18d | 0d |  | RA - Naveen Math | 56h |
| 214 | 1.4.2.2.6 | Validation by Raju or designate |  | 1d | 2017-06-22 | 2017-06-22 | 213 | 18d |  |  | UA - Raju | 8h |
| 215 | 1.4.2.3 | **Chat inside mobile app** |  | 18d | 2017-06-08 | 2017-07-03 |  | 11d |  |  |  | 160h |
| 216 | 1.4.2.3.1 | Identify technology, approach and design |  | 1d | 2017-06-08 | 2017-06-08 |  | 19d | 0d | finish no earlier than 2017-06-08 | RA - Guruprasad K J | 8h |
| 217 | 1.4.2.3.2 | Screen Image for RFP |  | 3d | 2017-06-09 | 2017-06-13 | 216 | 25d |  | start no earlier than 2017-06-09 | UX - Shiva | 24h |
| 218 | 1.4.2.3.3 | Scope agreement / Requirements affirmation |  | 1d | 2017-06-09 | 2017-06-09 | 216 | 19d | 0d | finish no earlier than 2017-06-08 | UA - Raju | 8h |
| 219 | 1.4.2.3.4 | Technical Solution Overview Template |  | 1d | 2017-06-12 | 2017-06-12 | 218 | 19d | 8d | start no earlier than 2017-06-09 |  |  |
| 220 | 1.4.2.3.5 | Development, Testing, Demo |  | 7d | 2017-06-23 | 2017-07-03 | 38, 219 | 11d |  |  | RA - Sudhaker; RD9 - Shijo | 112h |
| 221 | 1.4.2.3.6 | Validation by Raju or designate |  | 1d | 2017-06-30 | 2017-06-30 |  | 12d |  | start no earlier than 2017-06-30 | UA - Raju | 8h |
| 222 | 1.4.2.4 | **Dictation (Voice to Text)** |  | 10d | 2017-06-08 | 2017-06-22 |  | 18d |  |  |  |  |
| 223 | 1.4.2.4.1 | Scope agreement / Requirements affirmation | milestone | 0d | 2017-06-08 | 2017-06-08 |  | 24d | 0d | finish no earlier than 2017-06-08 | UA - Raju |  |
| 224 | 1.4.2.4.2 | Technical Solution Overview Template |  | 1d | 2017-06-09 | 2017-06-09 | 223 | 24d | 9d | start no earlier than 2017-06-09 |  |  |
| 225 | 1.4.2.4.3 | Development, Testing, Demo | milestone | 0d | 2017-06-22 | 2017-06-22 | 49, 224 | 15d | 0d |  | RA - Guruprasad K J; RD3 - Karthik P |  |
| 226 | 1.4.2.4.4 | Validation by Raju or designate | milestone | 0d | 2017-06-22 | 2017-06-22 | 225 | 18d |  | start no earlier than 2017-06-21 | UA - Raju |  |

Notes:
- 202: Text1: Demo, PoC Technical Solution Overview Template completed
- 203: Text1: Raju confident POC Developer understands / Developer Affirms understanding
- 205: Text1: Reviewed by Raju or Rob
- 208: Text1: Demo, PoC Technical Solution Overview Template completed
- 209: May need to ahve a partner discussion based on outcome / Nothing for RFP
- 211: Text1: Raju confident POC Developer understands / Developer Affirms understanding
- 212: Text1: Reviewed by Raju or Rob
- 215: Text1: Demo, PoC Technical Solution Overview Template completed
- 216: May need to ahve a partner discussion based on outcome / Nothing for RFP
- 218: Text1: Raju confident POC Developer understands / Developer Affirms understanding
- 219: Text1: Reviewed by Raju or Rob
- 222: Text1: Demo, PoC Technical Solution Overview Template completed
- 223: Text1: Raju confident POC Developer understands / Developer Affirms understanding
- 224: Text1: Reviewed by Raju or Rob

| ID | WBS | Task | Type | Duration | Start | Finish | Predecessors | Complete | Remaining | Total slack | Free slack | Constraint | Resources | Work | Actual work |
| --- | --- | --- | --- | --- | --- | --- | --- | --- | --- | --- | --- | --- | --- | --- | --- |
| 227 | 1.4.2.5 | **Reference Data Configuration** |  | 8d | 2017-06-08 | 2017-06-21 |  |  |  | 20d |  |  |  |  |  |
| 228 | 1.4.2.5.1 | Scope agreement / Requirements affirmation | milestone | 0d | 2017-06-08 | 2017-06-08 |  |  |  | 27d | 0d | finish no earlier than 2017-06-08 | UA - Raju |  |  |
| 229 | 1.4.2.5.2 | Technical Solution Overview Template |  | 1d | 2017-06-09 | 2017-06-09 | 228 |  |  | 27d | 0d | start no earlier than 2017-06-09 |  |  |  |
| 230 | 1.4.2.5.3 | Development, Testing, Demo | milestone | 0d | 2017-06-09 | 2017-06-09 | 229 |  |  | 27d | 7d |  | RA - Guruprasad K J; RD3 - Karthik P |  |  |
| 231 | 1.4.2.5.4 | Validation by Raju or designate | milestone | 0d | 2017-06-21 | 2017-06-21 | 230 |  |  | 20d |  | start no earlier than 2017-06-21 | UA - Raju |  |  |
| 232 | 1.4.2.6 | **Field Label Properties Configuration** |  | 1d | 2017-05-31 | 2017-05-31 |  |  |  | 34d |  |  |  |  |  |
| 233 | 1.4.2.6.1 | Scope agreement / Requirements affirmation |  | 1d | 2017-05-31 | 2017-05-31 |  |  |  | 34d |  |  |  |  |  |
| 234 | 1.4.2.6.2 | Technical Solution Overview Template |  | 1d | 2017-05-31 | 2017-05-31 |  |  |  | 34d |  |  |  |  |  |
| 235 | 1.4.2.6.3 | Development, Testing, Demo |  | 1d | 2017-05-31 | 2017-05-31 |  |  |  | 34d |  |  |  |  |  |
| 236 | 1.4.2.6.4 | Validation by Raju or designate |  | 1d | 2017-05-31 | 2017-05-31 |  |  |  | 34d |  |  |  |  |  |
| 237 | 1.4.3 | **Client App Development** |  | 28d | 2017-05-31 A | 2017-07-07 |  | 16% | 23.45d | 7d |  |  |  | 906.4h | 218.64h |
| 238 | 1.4.3.1 | **(Investig:Case Workload) Get Directions to House** |  | 19d | 2017-05-31 A | 2017-06-26 |  | 17% | 15.83d | 16d |  |  |  | 68.8h | 16h |
| 239 | 1.4.3.1.1 | **Development** |  | 19d | 2017-05-31 A | 2017-06-26 |  | 17% | 15.83d | 16d |  |  |  | 68.8h | 16h |
| 240 | 1.4.3.1.1.1 | User Story Defined | milestone | 0d | 2017-06-09 A | 2017-06-09 A |  | 100% |  |  |  | finish no earlier than 2017-06-09 | UR - Dhanu |  |  |
| 241 | 1.4.3.1.1.2 | Prototype Wireframe | milestone | 0d | 2017-06-09 A | 2017-06-09 A |  | 100% |  |  |  | finish no earlier than 2017-06-09 | UX - Chethana |  |  |
| 242 | 1.4.3.1.1.3 | User story review with developer |  | 1d | 2017-06-09 A | 2017-06-09 A |  | 100% |  |  |  | start no earlier than 2017-06-09 | UR - Dhanu | 8h | 8h |
| 243 | 1.4.3.1.1.4 | Wireframe walkthru with Developer |  | 1d | 2017-06-13 A | 2017-06-13 A |  | 100% |  |  |  | start no earlier than 2017-06-13 | UX - Chethana | 8h | 8h |
| 244 | 1.4.3.1.1.5 | Coding Backend |  | 2d | 2017-06-21 | 2017-06-22 |  |  |  | 16d | 0d | start no earlier than 2017-06-21 | RD5 - Swarnashree | 16h |  |
| 245 | 1.4.3.1.1.6 | **Coding Frontend** |  | 1d | 2017-05-31 | 2017-05-31 |  |  |  | 32d | 16d |  | RD12 - Vaishali N Telang | 8h |  |
| 246 | 1.4.3.1.1.6.1 | UI Development |  | 1d | 2017-05-31 | 2017-05-31 |  |  |  | 32d |  |  |  |  |  |
| 247 | 1.4.3.1.1.6.2 | Navigation |  | 1d | 2017-05-31 | 2017-05-31 |  |  |  | 32d |  |  |  |  |  |
| 248 | 1.4.3.1.1.6.3 | Business Logic |  | 1d | 2017-05-31 | 2017-05-31 |  |  |  | 32d |  |  |  |  |  |
| 249 | 1.4.3.1.1.7 | UX/UI Review |  | 1d | 2017-06-16 | 2017-06-16 |  |  |  | 22d |  | start no earlier than 2017-06-16 | UX - Chethana | 8h |  |
| 250 | 1.4.3.1.1.8 | Sanity Test Cases |  | 1d | 2017-06-12 | 2017-06-12 | 25 |  |  | 26d |  | start no earlier than 2017-06-12 | UQ - Lalit Kumar Jha [10%] | 0.8h |  |
| 251 | 1.4.3.1.1.9 | Sanity Testing |  | 1d | 2017-06-23 | 2017-06-23 | 244, 245 |  |  | 17d |  |  | UQ - Lalit Kumar Jha [50%]; RQA - Sharath Shet [50%] | 8h |  |
| 252 | 1.4.3.1.1.10 | Code Review |  | 1d | 2017-06-23 | 2017-06-23 | 244, 245 |  |  | 16d | 0d |  | RT - Debarghya Das [50%] | 4h |  |
| 253 | 1.4.3.1.1.11 | Demo / Acceptance test |  | 1d | 2017-06-26 | 2017-06-26 | 252 |  |  | 16d |  |  | UO - Rob Plummer | 8h |  |

Notes:
- 227: Text1: Demo, PoC Technical Solution Overview Template completed
- 228: Text1: Raju confident POC Developer understands / Developer Affirms understanding
- 229: Text1: Reviewed by Raju or Rob
- 232: Text1: Demo, PoC Technical Solution Overview Template completed
- 238: Maybe able to delete - Get Directions to House is the real case / Text2: TBD
- 240: Text1: User Story, Design Notes (no design notes for stubbed out User Stories) / Text2: User Story, Design Notes (no design notes for stubbed out User Stories)
- 241: Text1: Full interactive prototype delivered / Text2: Full interactive prototype delivered
- 245: Text1: UI and Navigation 90% complete

| ID | WBS | Task | Type | Duration | Start | Finish | Predecessors | Complete | Remaining | Total slack | Free slack | Constraint | Resources | Work | Actual work | Text1 |
| --- | --- | --- | --- | --- | --- | --- | --- | --- | --- | --- | --- | --- | --- | --- | --- | --- |
| 254 | 1.4.3.2 | **(Investig:Investigation Details) Features** |  | 18d | 2017-05-31 A | 2017-06-23 |  |  | 18d | 17d |  |  |  | 68.8h | 2.64h |  |
| 255 | 1.4.3.2.1 | **Development** |  | 18d | 2017-05-31 A | 2017-06-23 |  |  | 18d | 17d |  |  |  | 68.8h | 2.64h |  |
| 256 | 1.4.3.2.1.1 | User Story Defined | milestone | 0d | 2017-06-12 A | 2017-06-12 A |  | 100% |  |  |  | finish no earlier than 2017-06-12 | UR - Dhanu |  |  |  |
| 257 | 1.4.3.2.1.2 | Prototype Wireframe | milestone | 0d | 2017-06-12 A | 2017-06-12 A |  | 100% |  |  |  | finish no earlier than 2017-06-12 | UX - Chethana |  |  |  |
| 258 | 1.4.3.2.1.3 | User story review with developer |  | 1d | 2017-06-15 | 2017-06-15 |  |  |  | 23d |  | start no earlier than 2017-06-15 | UR - Dhanu | 8h |  |  |
| 259 | 1.4.3.2.1.4 | Wireframe walkthru with Developer |  | 1d | 2017-06-15 | 2017-06-15 |  |  |  | 23d |  | start no earlier than 2017-06-15 | UX - Chethana | 8h |  |  |
| 260 | 1.4.3.2.1.5 | Coding Backend |  | 2d | 2017-06-19 | 2017-06-20 |  |  |  | 18d | 0d | start no earlier than 2017-06-19 | RD6 - Kamalkanth | 16h |  |  |
| 261 | 1.4.3.2.1.6 | **Coding Frontend** |  | 1d | 2017-05-31 A | 2017-05-31 |  |  | 1d | 34d |  |  | RD3 - Karthik P | 8h | 2.64h |  |
| 262 | 1.4.3.2.1.6.1 | UI Development |  | 1d | 2017-05-31 | 2017-05-31 |  |  |  | 34d |  |  |  |  |  |  |
| 263 | 1.4.3.2.1.6.2 | Navigation |  | 1d | 2017-05-31 | 2017-05-31 |  |  |  | 34d |  |  |  |  |  |  |
| 264 | 1.4.3.2.1.6.3 | Business Logic |  | 1d | 2017-05-31 | 2017-05-31 |  |  |  | 34d |  |  |  |  |  |  |
| 265 | 1.4.3.2.1.7 | Ux UI Review |  | 1d | 2017-06-20 | 2017-06-20 |  |  |  | 20d |  | start no earlier than 2017-06-20 | UX - Chethana | 8h |  |  |
| 266 | 1.4.3.2.1.8 | Sanity Test Cases |  | 1d | 2017-05-31 | 2017-05-31 |  |  |  | 34d |  |  | UQ - Lalit Kumar Jha [10%] | 0.8h |  |  |
| 267 | 1.4.3.2.1.9 | Sanity Testing |  | 2d | 2017-06-21 | 2017-06-22 | 260 |  |  | 18d |  |  | UQ - Lalit Kumar Jha [50%]; RQA - Sharath Shet [50%] | 12h |  |  |
| 268 | 1.4.3.2.1.10 | Code Review |  | 1d | 2017-06-21 | 2017-06-21 | 260 |  |  | 19d |  |  |  |  |  |  |
| 269 | 1.4.3.2.1.11 | Demo / Acceptance test |  | 1d | 2017-06-23 | 2017-06-23 |  |  |  | 17d |  | start no earlier than 2017-06-23 | UO Rob Plummer | 8h |  |  |
| 270 | 1.4.3.3 | **(Investig:View and Manage Participants) View Participants List** |  | 18d | 2017-05-31 A | 2017-06-23 |  | 18% | 14.73d | -5d | 0d |  |  | 60.8h | 16h |  |
| 271 | 1.4.3.3.1 | **Development** |  | 18d | 2017-05-31 A | 2017-06-23 |  | 18% | 14.73d | -5d | 0d |  |  | 60.8h | 16h |  |
| 272 | 1.4.3.3.1.1 | User Story Defined | milestone | 0d | 2017-06-15 A | 2017-06-15 A |  | 100% |  |  |  | finish no earlier than 2017-06-12 | UR - Dhanu |  |  |  |
| 273 | 1.4.3.3.1.2 | Prototype Wireframe | milestone | 0d | 2017-06-15 A | 2017-06-15 A |  | 100% |  |  |  | finish no earlier than 2017-06-12 | UX - Chethana |  |  |  |
| 274 | 1.4.3.3.1.3 | User story review with developer |  | 1d | 2017-06-16 A | 2017-06-16 A | 275 | 100% |  |  |  |  | UR - Dhanu | 8h | 8h |  |
| 275 | 1.4.3.3.1.4 | Wireframe walkthru with Developer |  | 1d | 2017-06-15 A | 2017-06-15 A |  | 100% |  |  |  | start no earlier than 2017-06-15 | UX - Chethana | 8h | 8h |  |
| 276 | 1.4.3.3.1.5 | Coding Backend |  | 1d | 2017-06-16 | 2017-06-16 | 199 |  |  | -10d | 0d |  | RD7 - Kishore Kumar | 8h |  |  |
| 277 | 1.4.3.3.1.6 | **Coding Frontend** |  | 1d | 2017-05-31 | 2017-05-31 |  |  |  | 2d |  |  | RD9 - Shijo | 8h |  | send for UX review 6-22 (90% complete) |
| 278 | 1.4.3.3.1.6.1 | UI Development |  | 1d | 2017-05-31 | 2017-05-31 |  |  |  | 2d |  |  |  |  |  |  |
| 279 | 1.4.3.3.1.6.2 | Navigation |  | 1d | 2017-05-31 | 2017-05-31 |  |  |  | 2d |  |  |  |  |  |  |
| 280 | 1.4.3.3.1.6.3 | Business Logic |  | 1d | 2017-05-31 | 2017-05-31 |  |  |  | 2d |  |  |  |  |  |  |
| 281 | 1.4.3.3.1.7 | Ux UI Review |  | 1d | 2017-06-20 | 2017-06-20 |  |  |  | -11d | 0d | start no earlier than 2017-06-20 | UX - Chethana | 8h |  |  |
| 282 | 1.4.3.3.1.8 | Sanity Test Cases |  | 1d | 2017-05-31 | 2017-05-31 |  |  |  | 3d |  |  | UQ - Lalit Kumar Jha [10%] | 0.8h |  |  |
| 283 | 1.4.3.3.1.9 | Sanity Testing |  | 1d | 2017-06-21 | 2017-06-21 | 276, 277 |  |  | -12d | 0d | start no earlier than 2017-06-21 | UQ - Lalit Kumar Jha [50%]; RQA - Sharath Shet [50%] | 8h |  |  |
| 284 | 1.4.3.3.1.10 | Code Review |  | 1d | 2017-06-19 | 2017-06-19 | 276, 277 |  |  | -10d | 0d |  | RT - Debarghya Das [50%] | 4h |  |  |
| 285 | 1.4.3.3.1.11 | Demo / Acceptance test |  | 1d | 2017-06-23 | 2017-06-23 |  |  |  | -14d | 0d | start no earlier than 2017-06-23 | UO Rob Plummer | 8h |  |  |

Notes:
- 254: Text2: TBD
- 256: Text2: User Story, Design Notes (no design notes for stubbed out User Stories)
- 257: Text2: Full interactive prototype delivered
- 270: Text2: TBD
- 272: Text2: User Story, Design Notes (no design notes for stubbed out User Stories)
- 273: Text2: Full interactive prototype delivered

| ID | WBS | Task | Type | Duration | Start | Finish | Predecessors | Complete | Remaining | Total slack | Free slack | Constraint | Resources | Work | Actual work | Text1 |
| --- | --- | --- | --- | --- | --- | --- | --- | --- | --- | --- | --- | --- | --- | --- | --- | --- |
| 286 | 1.4.3.4 | **(Investig:View and Manage Participants) View Participants Details** |  | 13d | 2017-06-16 A | 2017-07-04 | 302 | 17% | 10.83d | -3d | 0d |  |  | 68.8h | 16h |  |
| 287 | 1.4.3.4.1 | **Development** |  | 13d | 2017-06-16 A | 2017-07-04 |  | 17% | 10.83d | -3d | 0d |  |  | 68.8h | 16h |  |
| 288 | 1.4.3.4.1.1 | User Story Defined | milestone | 0d | 2017-06-16 A | 2017-06-16 A |  | 100% |  |  |  | finish no earlier than 2017-06-16 | UR - Dhanu |  |  |  |
| 289 | 1.4.3.4.1.2 | Prototype Wireframe | milestone | 0d | 2017-06-16 A | 2017-06-16 A |  | 100% |  |  |  | finish no earlier than 2017-06-16 | UX - Chethana |  |  |  |
| 290 | 1.4.3.4.1.3 | User story review with developer |  | 1d | 2017-06-29 A | 2017-06-29 A |  | 100% |  |  |  | start no earlier than 2017-06-19 | UR - Dhanu | 8h | 8h |  |
| 291 | 1.4.3.4.1.4 | Wireframe walkthru with Developer |  | 1d | 2017-06-29 A | 2017-06-29 A |  | 100% |  |  |  | start no earlier than 2017-06-19 | UX - Chethana | 8h | 8h |  |
| 292 | 1.4.3.4.1.5 | Coding Backend |  | 2d | 2017-06-29 | 2017-06-30 |  |  |  | -14d | 0d | start no earlier than 2017-06-20 | RD7 - Kishore Kumar | 16h |  |  |
| 293 | 1.4.3.4.1.6 | **Coding Frontend** |  | 1d | 2017-06-29 | 2017-06-29 |  |  |  | -13d | 0d |  | RD9 - Shijo | 8h |  | ready for UI review 6-23 |
| 294 | 1.4.3.4.1.6.1 | UI Development |  | 1d | 2017-06-29 | 2017-06-29 |  |  |  | -13d | 0d |  |  |  |  |  |
| 295 | 1.4.3.4.1.6.2 | Navigation |  | 1d | 2017-06-29 | 2017-06-29 |  |  |  | -13d | 0d |  |  |  |  |  |
| 296 | 1.4.3.4.1.6.3 | Business Logic |  | 1d | 2017-06-29 | 2017-06-29 |  |  |  | -13d | 0d |  |  |  |  |  |
| 297 | 1.4.3.4.1.7 | Ux UI Review |  | 1d | 2017-06-29 | 2017-06-29 |  |  |  | -11d | 0d | start no earlier than 2017-06-21 | UX - Chethana | 8h |  |  |
| 298 | 1.4.3.4.1.8 | Sanity Test Cases |  | 1d | 2017-06-29 | 2017-06-29 |  |  |  | -11d | 0d | start no earlier than 2017-06-16 | UQ - Lalit Kumar Jha [10%] | 0.8h |  |  |
| 299 | 1.4.3.4.1.9 | Sanity Testing |  | 1d | 2017-07-03 | 2017-07-03 | 292, 293 |  |  | -14d | 0d | start no earlier than 2017-06-21 | UQ - Lalit Kumar Jha [50%]; RQA - Sharath Shet [50%] | 8h |  |  |
| 300 | 1.4.3.4.1.10 | Code Review |  | 1d | 2017-07-03 | 2017-07-03 | 292, 293 |  |  | -13d | 0d |  | RT - Debarghya Das [50%] | 4h |  |  |
| 301 | 1.4.3.4.1.11 | Demo / acceptance test |  | 1d | 2017-07-04 | 2017-07-04 | 299 |  |  | -14d | 0d |  | UO Rob Plummer | 8h |  |  |
| 302 | 1.4.3.5 | **(Investig:View and Manage Participants) Add Participant** |  | 10d | 2017-06-15 A | 2017-06-28 | 270 | 17% | 8.33d | -2d | 0d |  |  | 64.8h | 16h |  |
| 303 | 1.4.3.5.1 | **Development** |  | 10d | 2017-06-15 A | 2017-06-28 |  | 17% | 8.33d | -2d | 0d |  |  | 64.8h | 16h |  |
| 304 | 1.4.3.5.1.1 | User Story Defined | milestone | 0d | 2017-06-15 A | 2017-06-15 A |  | 100% |  |  |  | finish no earlier than 2017-06-15 | UR - Dhanu |  |  |  |
| 305 | 1.4.3.5.1.2 | Prototype Wireframe | milestone | 0d | 2017-06-15 A | 2017-06-15 A |  | 100% |  |  |  | finish no earlier than 2017-06-15 | UX - Chethana |  |  |  |
| 306 | 1.4.3.5.1.3 | User story review with developer |  | 1d | 2017-06-26 A | 2017-06-26 A |  | 100% |  |  |  | start no earlier than 2017-06-15 | UR - Dhanu | 8h | 8h |  |
| 307 | 1.4.3.5.1.4 | Wireframe walkthru with Developer |  | 1d | 2017-06-26 A | 2017-06-26 A |  | 100% |  |  |  | start no earlier than 2017-06-15 | UX - Chethana | 8h | 8h |  |
| 308 | 1.4.3.5.1.5 | Coding Backend |  | 1d | 2017-06-26 | 2017-06-26 | 199 |  |  | -14d | 0d | start no earlier than 2017-06-14 | RD7 - Kishore Kumar | 8h |  |  |
| 309 | 1.4.3.5.1.6 | **Coding Frontend** |  | 1d | 2017-06-26 | 2017-06-26 | 199 |  |  | -14d | 0d |  | RD9 - Shijo | 8h |  | 50% ui completed; UI review 6-26 |
| 310 | 1.4.3.5.1.6.1 | UI Development |  | 1d | 2017-06-26 | 2017-06-26 |  |  |  | -14d | 0d |  |  |  |  |  |
| 311 | 1.4.3.5.1.6.2 | Navigation |  | 1d | 2017-06-26 | 2017-06-26 |  |  |  | -14d | 0d |  |  |  |  |  |
| 312 | 1.4.3.5.1.6.3 | Business Logic |  | 1d | 2017-06-26 | 2017-06-26 |  |  |  | -14d | 0d |  |  |  |  |  |
| 313 | 1.4.3.5.1.7 | Ux UI Review |  | 1d | 2017-06-26 | 2017-06-26 |  |  |  | -12d | 0d | start no earlier than 2017-06-22 | UX - Chethana | 8h |  |  |
| 314 | 1.4.3.5.1.8 | Sanity Test Cases |  | 1d | 2017-06-26 | 2017-06-26 |  |  |  | -12d | 0d | start no earlier than 2017-06-15 | UQ - Lalit Kumar Jha [10%] | 0.8h |  |  |
| 315 | 1.4.3.5.1.9 | Sanity Testing |  | 2d | 2017-06-27 | 2017-06-28 | 308, 309 |  |  | -14d | 0d |  | UQ - Lalit Kumar Jha [50%]; RQA - Sharath Shet [50%] | 12h |  |  |
| 316 | 1.4.3.5.1.10 | Code Review |  | 1d | 2017-06-27 | 2017-06-27 | 308, 309 |  |  | -13d | 0d |  | RT - Debarghya Das [50%] | 4h |  |  |
| 317 | 1.4.3.5.1.11 | Demo / acceptance test |  | 1d | 2017-06-26 | 2017-06-26 |  |  |  | -12d | 0d | start no earlier than 2017-06-23 | UO Rob Plummer | 8h |  |  |

Notes:
- 286: Text2: TBD
- 288: Text2: User Story, Design Notes (no design notes for stubbed out User Stories)
- 289: Text2: Full interactive prototype delivered
- 302: Text2: TBD
- 304: Text2: User Story, Design Notes (no design notes for stubbed out User Stories)
- 305: Text2: Full interactive prototype delivered

| ID | WBS | Task | Type | Duration | Start | Finish | Predecessors | Complete | Remaining | Total slack | Free slack | Constraint | Resources | Work | Actual work | Text1 |
| --- | --- | --- | --- | --- | --- | --- | --- | --- | --- | --- | --- | --- | --- | --- | --- | --- |
| 318 | 1.4.3.6 | **(Investig:View and Manage Participants) Add Safety Hazard** |  | 9d | 2017-06-15 A | 2017-06-27 |  | 18% | 7.36d | 7.38d | 0d |  |  | 60.8h | 16h |  |
| 319 | 1.4.3.6.1 | **Development** |  | 9d | 2017-06-15 A | 2017-06-27 |  | 18% | 7.36d | 7.38d |  |  |  | 60.8h | 16h |  |
| 320 | 1.4.3.6.1.1 | User Story Defined | milestone | 0d | 2017-06-15 A | 2017-06-15 A |  | 100% |  |  |  | finish no earlier than 2017-06-15 | UR - Dhanu |  |  |  |
| 321 | 1.4.3.6.1.2 | Prototype Wireframe | milestone | 0d | 2017-06-15 A | 2017-06-15 A |  | 100% |  |  |  | finish no earlier than 2017-06-15 | UX - Chethana |  |  |  |
| 322 | 1.4.3.6.1.3 | User story review with developer |  | 1d | 2017-06-15 A | 2017-06-15 A |  | 100% |  |  |  | start no earlier than 2017-06-15 | UR - Dhanu | 8h | 8h |  |
| 323 | 1.4.3.6.1.4 | Wireframe walkthru with Developer |  | 1d | 2017-06-15 A | 2017-06-15 A |  | 100% |  |  |  | start no earlier than 2017-06-15 | UX - Chethana | 8h | 8h |  |
| 324 | 1.4.3.6.1.5 | Coding Backend |  | 1d | 2017-06-22 | 2017-06-22 | 199 |  |  | 8.38d | 0d | start no earlier than 2017-06-22 | RD5 - Swarnashree | 8h |  |  |
| 325 | 1.4.3.6.1.6 | **Coding Frontend** |  | 1d | 2017-06-16 | 2017-06-16 | 199 |  |  | 12.38d | 4d |  | RD15 - Akshay Kumar | 8h |  |  |
| 326 | 1.4.3.6.1.6.1 | UI Development |  | 1d | 2017-06-16 | 2017-06-16 |  |  |  | 12.38d |  |  |  |  |  |  |
| 327 | 1.4.3.6.1.6.2 | Navigation |  | 1d | 2017-06-16 | 2017-06-16 |  |  |  | 12.38d |  |  |  |  |  |  |
| 328 | 1.4.3.6.1.6.3 | Business Logic |  | 1d | 2017-06-16 | 2017-06-16 |  |  |  | 12.38d |  |  |  |  |  |  |
| 329 | 1.4.3.6.1.7 | Ux UI Review |  | 1d | 2017-06-23 | 2017-06-23 |  |  |  | 9.38d |  | start no earlier than 2017-06-23 | UX - Chethana | 8h |  |  |
| 330 | 1.4.3.6.1.8 | Sanity Test Cases |  | 1d | 2017-06-27 | 2017-06-27 | 314 |  |  | 7.38d |  | start no earlier than 2017-06-14 | UQ - Lalit Kumar Jha [10%] | 0.8h |  |  |
| 331 | 1.4.3.6.1.9 | Sanity Testing |  | 1d | 2017-06-23 | 2017-06-23 | 324, 325 |  |  | 9.38d |  | start no earlier than 2017-06-23 | UQ - Lalit Kumar Jha [50%]; RQA - Sharath Shet [50%] | 8h |  |  |
| 332 | 1.4.3.6.1.10 | Code Review |  | 1d | 2017-06-23 | 2017-06-23 | 324, 325 |  |  | 8.38d | 0d |  | RT - Debarghya Das [50%] | 4h |  |  |
| 333 | 1.4.3.6.1.11 | Demo / acceptance test |  | 1d | 2017-06-26 | 2017-06-26 | 332 |  |  | 8.38d |  |  | UO Rob Plummer | 8h |  |  |
| 334 | 1.4.3.7 | **(Investig:View and Manage Participants) Add Demographic** |  | 11d | 2017-06-15 A | 2017-06-29 | 318 | 31% | 7.62d | 13d |  |  |  | 76.8h | 32h |  |
| 335 | 1.4.3.7.1 | **Development** |  | 11d | 2017-06-15 A | 2017-06-29 |  | 31% | 7.62d | 13d |  |  |  | 76.8h | 32h |  |
| 336 | 1.4.3.7.1.1 | User Story Defined |  | 1d | 2017-06-15 A | 2017-06-15 A |  | 100% |  |  |  | finish no earlier than 2017-06-15 | UR - Dhanu | 8h | 8h |  |
| 337 | 1.4.3.7.1.2 | Prototype Wireframe |  | 1d | 2017-06-15 A | 2017-06-15 A |  | 100% |  |  |  | finish no earlier than 2017-06-15 | UX - Chethana | 8h | 8h |  |
| 338 | 1.4.3.7.1.3 | User story review with developer |  | 1d | 2017-06-28 A | 2017-06-28 A |  | 100% |  |  |  | start no earlier than 2017-06-15 | UR - Dhanu | 8h | 8h |  |
| 339 | 1.4.3.7.1.4 | Wireframe walkthru with Developer |  | 1d | 2017-06-28 A | 2017-06-28 A |  | 100% |  |  |  | start no earlier than 2017-06-15 | UX - Chethana | 8h | 8h |  |
| 340 | 1.4.3.7.1.5 | Coding Backend |  | 1d | 2017-06-28 | 2017-06-28 | 150, 134 |  |  | 13d | 0d | start no earlier than 2017-06-23 | RD5 - Swarnashree | 8h |  |  |
| 341 | 1.4.3.7.1.6 | **Coding Frontend** |  | 1d | 2017-06-28 | 2017-06-28 | 167 |  |  | 13d | 0d |  | RD15 - Akshay Kumar | 8h |  | 50% ui completed; UI review 6-23 |
| 342 | 1.4.3.7.1.6.1 | UI Development |  | 1d | 2017-06-28 | 2017-06-28 |  |  |  | 13d |  |  |  |  |  |  |
| 343 | 1.4.3.7.1.6.2 | Navigation |  | 1d | 2017-06-28 | 2017-06-28 |  |  |  | 13d |  |  |  |  |  |  |
| 344 | 1.4.3.7.1.6.3 | Business Logic |  | 1d | 2017-06-28 | 2017-06-28 |  |  |  | 13d |  |  |  |  |  |  |
| 345 | 1.4.3.7.1.7 | Ux UI Review |  | 1d | 2017-06-28 | 2017-06-28 |  |  |  | 14d |  | start no earlier than 2017-06-26 | UX - Chethana | 8h |  |  |
| 346 | 1.4.3.7.1.8 | Sanity Test Cases |  | 1d | 2017-06-28 | 2017-06-28 |  |  |  | 12d | 4d | start no earlier than 2017-06-15 | UQ - Lalit Kumar Jha [10%] | 0.8h |  |  |
| 347 | 1.4.3.7.1.9 | Sanity Testing |  | 1d | 2017-06-29 | 2017-06-29 | 340, 341 |  |  | 13d |  |  | UQ - Lalit Kumar Jha [50%]; RQA - Sharath Shet [50%] | 8h |  |  |
| 348 | 1.4.3.7.1.10 | Code Review |  | 1d | 2017-06-29 | 2017-06-29 | 340, 341 |  |  | 13d |  |  | RT - Debarghya Das [50%] | 4h |  |  |
| 349 | 1.4.3.7.1.11 | Demo / acceptance test |  | 1d | 2017-06-28 | 2017-06-28 |  |  |  | 14d |  | start no earlier than 2017-06-28 | UO Rob Plummer | 8h |  |  |

Notes:
- 318: Text2: TBD
- 320: Text2: User Story, Design Notes (no design notes for stubbed out User Stories)
- 321: Text2: Full interactive prototype delivered
- 334: Text2: TBD
- 336: Text2: User Story, Design Notes (no design notes for stubbed out User Stories)
- 337: Text2: Full interactive prototype delivered

| ID | WBS | Task | Type | Duration | Start | Finish | Predecessors | Complete | Remaining | Total slack | Free slack | Constraint | Resources | Work | Actual work | Text1 |
| --- | --- | --- | --- | --- | --- | --- | --- | --- | --- | --- | --- | --- | --- | --- | --- | --- |
| 350 | 1.4.3.8 | **(Investig:View and Manage Participants) Add Address** |  | 17d | 2017-06-15 A | 2017-07-07 | 286 | 17% | 14.17d | 7d |  |  |  | 64.8h | 16h |  |
| 351 | 1.4.3.8.1 | **Development** |  | 17d | 2017-06-15 A | 2017-07-07 |  | 17% | 14.17d | 7d |  |  |  | 64.8h | 16h |  |
| 352 | 1.4.3.8.1.1 | User Story Defined | milestone | 0d | 2017-06-15 A | 2017-06-15 A |  | 100% |  |  |  | finish no earlier than 2017-06-15 | UR - Dhanu |  |  |  |
| 353 | 1.4.3.8.1.2 | Prototype Wireframe | milestone | 0d | 2017-06-15 A | 2017-06-15 A |  | 100% |  |  |  | finish no earlier than 2017-06-15 | UX - Chethana |  |  |  |
| 354 | 1.4.3.8.1.3 | User story review with developer |  | 1d | 2017-07-05 A | 2017-07-05 A |  | 100% |  |  |  | start no earlier than 2017-06-15 | UR - Dhanu | 8h | 8h |  |
| 355 | 1.4.3.8.1.4 | Wireframe walkthru with Developer |  | 1d | 2017-07-05 A | 2017-07-05 A |  | 100% |  |  |  | start no earlier than 2017-06-15 | UX - Chethana | 8h | 8h |  |
| 356 | 1.4.3.8.1.5 | Coding Backend |  | 1d | 2017-07-05 | 2017-07-05 | 308 |  |  | 7d | 0d | start no earlier than 2017-06-26 | RD7 - Kishore Kumar | 8h |  |  |
| 357 | 1.4.3.8.1.6 | **Coding Frontend** |  | 1d | 2017-07-05 | 2017-07-05 | 151, 135 |  |  | 7d | 0d |  | RD9 - Shijo | 8h |  | not started |
| 358 | 1.4.3.8.1.6.1 | UI Development |  | 1d | 2017-07-05 | 2017-07-05 |  |  |  | 7d |  |  |  |  |  |  |
| 359 | 1.4.3.8.1.6.2 | Navigation |  | 1d | 2017-07-05 | 2017-07-05 |  |  |  | 7d |  |  |  |  |  |  |
| 360 | 1.4.3.8.1.6.3 | Business Logic |  | 1d | 2017-07-05 | 2017-07-05 |  |  |  | 7d |  |  |  |  |  |  |
| 361 | 1.4.3.8.1.7 | Ux UI Review |  | 1d | 2017-07-05 | 2017-07-05 |  |  |  | 9d |  | start no earlier than 2017-06-26 | UX - Chethana | 8h |  |  |
| 362 | 1.4.3.8.1.8 | Sanity Test Cases |  | 1d | 2017-07-05 | 2017-07-05 | 346 |  |  | 8d | 0d |  | UQ - Lalit Kumar Jha [10%] | 0.8h |  |  |
| 363 | 1.4.3.8.1.9 | Sanity Testing |  | 2d | 2017-07-06 | 2017-07-07 | 356, 357 |  |  | 7d |  |  | RQA - Sharath Shet [50%]; UQ - Lalit Kumar Jha [50%] | 12h |  |  |
| 364 | 1.4.3.8.1.10 | Code Review |  | 1d | 2017-07-06 | 2017-07-06 | 356, 357 |  |  | 7d | 0d |  | RT - Debarghya Das [50%] | 4h |  |  |
| 365 | 1.4.3.8.1.11 | Demo / acceptance test |  | 1d | 2017-07-07 | 2017-07-07 | 364 |  |  | 7d |  |  | UO Rob Plummer | 8h |  |  |
| 366 | 1.4.3.9 | **(Investig:View and Manage Participants) Add Contact** |  | 17d | 2017-06-15 A | 2017-07-07 | 286 | 18% | 13.91d | 7d |  |  |  | 60.8h | 16h |  |
| 367 | 1.4.3.9.1 | **Development** |  | 17d | 2017-06-15 A | 2017-07-07 |  | 18% | 13.91d | 7d |  |  |  | 60.8h | 16h |  |
| 368 | 1.4.3.9.1.1 | User Story Defined | milestone | 0d | 2017-06-15 A | 2017-06-15 A |  | 100% |  |  |  | finish no earlier than 2017-06-15 | UR - Dhanu |  |  |  |
| 369 | 1.4.3.9.1.2 | Prototype Wireframe | milestone | 0d | 2017-06-15 A | 2017-06-15 A |  | 100% |  |  |  | finish no earlier than 2017-06-15 | UX - Chethana |  |  |  |
| 370 | 1.4.3.9.1.3 | User story review with developer |  | 1d | 2017-07-05 A | 2017-07-05 A |  | 100% |  |  |  | start no earlier than 2017-06-15 | UR - Dhanu | 8h | 8h |  |
| 371 | 1.4.3.9.1.4 | Wireframe walkthru with Developer |  | 1d | 2017-07-05 A | 2017-07-05 A |  | 100% |  |  |  | start no earlier than 2017-06-15 | UX - Chethana | 8h | 8h |  |
| 372 | 1.4.3.9.1.5 | Coding Backend |  | 1d | 2017-07-05 | 2017-07-05 |  |  |  | 7d | 0d | start no earlier than 2017-06-27 | RD7 - Kishore Kumar | 8h |  |  |
| 373 | 1.4.3.9.1.6 | **Coding Frontend** |  | 1d | 2017-07-05 | 2017-07-05 | 225 |  |  | 7d | 0d |  | RD9 - Shijo | 8h |  | not started |
| 374 | 1.4.3.9.1.6.1 | UI Development |  | 1d | 2017-07-05 | 2017-07-05 |  |  |  | 7d |  |  |  |  |  |  |
| 375 | 1.4.3.9.1.6.2 | Navigation |  | 1d | 2017-07-05 | 2017-07-05 |  |  |  | 7d |  |  |  |  |  |  |
| 376 | 1.4.3.9.1.6.3 | Business Logic |  | 1d | 2017-07-05 | 2017-07-05 |  |  |  | 7d |  |  |  |  |  |  |
| 377 | 1.4.3.9.1.7 | Ux UI Review |  | 1d | 2017-07-05 | 2017-07-05 |  |  |  | 9d |  | start no earlier than 2017-06-28 | UX - Chethana | 8h |  |  |
| 378 | 1.4.3.9.1.8 | Sanity Test Cases |  | 1d | 2017-07-06 | 2017-07-06 | 362 |  |  | 8d |  |  | UQ - Lalit Kumar Jha [10%] | 0.8h |  |  |
| 379 | 1.4.3.9.1.9 | Sanity Testing |  | 1d | 2017-07-06 | 2017-07-06 | 372, 373 |  |  | 8d |  |  | UQ - Lalit Kumar Jha [50%]; RQA - Sharath Shet [50%] | 8h |  |  |
| 380 | 1.4.3.9.1.10 | Code Review |  | 1d | 2017-07-06 | 2017-07-06 | 372, 373 |  |  | 7d | 0d |  | RT - Debarghya Das [50%] | 4h |  |  |
| 381 | 1.4.3.9.1.11 | Demo / acceptance test |  | 1d | 2017-07-07 | 2017-07-07 | 380 |  |  | 7d |  |  | UO Rob Plummer | 8h |  |  |

Notes:
- 350: Text2: TBD
- 352: Text2: User Story, Design Notes (no design notes for stubbed out User Stories)
- 353: Text2: Full interactive prototype delivered
- 366: Text2: TBD
- 368: Text2: User Story, Design Notes (no design notes for stubbed out User Stories)
- 369: Text2: Full interactive prototype delivered

| ID | WBS | Task | Type | Duration | Start | Finish | Predecessors | Complete | Remaining | Total slack | Free slack | Constraint | Resources | Work | Actual work | Text1 |
| --- | --- | --- | --- | --- | --- | --- | --- | --- | --- | --- | --- | --- | --- | --- | --- | --- |
| 382 | 1.4.3.10 | **(Investig:CaseWorker Resources)CaseWorker Resources** |  | 14d | 2017-05-31 A | 2017-06-19 |  | 18% | 11.45d | 21d |  |  |  | 52.8h | 16h |  |
| 383 | 1.4.3.10.1 | **Development** |  | 14d | 2017-05-31 A | 2017-06-19 |  | 18% | 11.45d | 21d |  |  |  | 52.8h | 16h |  |
| 384 | 1.4.3.10.1.1 | User Story Defined | milestone | 0d | 2017-06-13 A | 2017-06-13 A |  | 100% |  |  |  | finish no earlier than 2017-06-13 | UR - Dhanu |  |  |  |
| 385 | 1.4.3.10.1.2 | Prototype Wireframe | milestone | 0d | 2017-06-13 A | 2017-06-13 A |  | 100% |  |  |  | finish no earlier than 2017-06-13 | UX - Chethana |  |  |  |
| 386 | 1.4.3.10.1.3 | User story review with developer |  | 1d | 2017-06-13 A | 2017-06-13 A |  | 100% |  |  |  | finish no earlier than 2017-06-13 | UR - Dhanu | 8h | 8h |  |
| 387 | 1.4.3.10.1.4 | Wireframe walkthru with Developer |  | 1d | 2017-06-13 A | 2017-06-13 A |  | 100% |  |  |  | finish no earlier than 2017-06-13 | UX - Chethana | 8h | 8h |  |
| 388 | 1.4.3.10.1.5 | Coding Backend |  | 1d | 2017-06-13 | 2017-06-13 | 384 |  |  | 24d | 0d |  |  |  |  |  |
| 389 | 1.4.3.10.1.6 | **Coding Frontend** |  | 1d | 2017-05-31 | 2017-05-31 |  |  |  | 33d | 9d |  | UD2 - Yuvaraj | 8h |  | UI 100%; ready for UI review 6-22 |
| 390 | 1.4.3.10.1.6.1 | UI Development |  | 1d | 2017-05-31 | 2017-05-31 |  |  |  | 33d |  |  |  |  |  |  |
| 391 | 1.4.3.10.1.6.2 | Navigation |  | 1d | 2017-05-31 | 2017-05-31 |  |  |  | 33d |  |  |  |  |  |  |
| 392 | 1.4.3.10.1.6.3 | Business Logic |  | 1d | 2017-05-31 | 2017-05-31 |  |  |  | 33d |  |  |  |  |  |  |
| 393 | 1.4.3.10.1.7 | Ux UI Review |  | 1d | 2017-06-19 | 2017-06-19 |  |  |  | 21d |  | start no earlier than 2017-06-19 | UX - Chethana | 8h |  |  |
| 394 | 1.4.3.10.1.8 | Sanity Test Cases |  | 1d | 2017-06-13 | 2017-06-13 |  |  |  | 24d | 0d | start no earlier than 2017-06-13 | UQ - Lalit Kumar Jha [10%] | 0.8h |  |  |
| 395 | 1.4.3.10.1.9 | Sanity Testing |  | 1d | 2017-06-14 | 2017-06-14 | 388, 389 |  |  | 24d |  | start no earlier than 2017-06-13 | RQA - Sharath Shet [50%]; UQ - Lalit Kumar Jha [50%] | 8h |  |  |
| 396 | 1.4.3.10.1.10 | Code Review |  | 1d | 2017-06-14 | 2017-06-14 | 388, 389 |  |  | 24d |  |  | RT - Debarghya Das [50%] | 4h |  |  |
| 397 | 1.4.3.10.1.11 | Demo / acceptance test |  | 1d | 2017-06-14 | 2017-06-14 | 394 |  |  | 24d |  |  | UO Rob Plummer | 8h |  |  |
| 398 | 1.4.3.11 | **(Investig:Family Resources) Family Resources** |  | 23d | 2017-05-31 A | 2017-06-30 |  | 17% | 19.17d | 12d |  |  |  | 64.8h | 16h |  |
| 399 | 1.4.3.11.1 | **Development** |  | 23d | 2017-05-31 A | 2017-06-30 |  | 17% | 19.17d | 12d |  |  |  | 64.8h | 16h |  |
| 400 | 1.4.3.11.1.1 | User Story Defined | milestone | 0d | 2017-06-19 A | 2017-06-19 A |  | 100% |  |  |  | finish no earlier than 2017-06-19 | UR - Dhanu |  |  |  |
| 401 | 1.4.3.11.1.2 | Prototype Wireframe | milestone | 0d | 2017-06-19 A | 2017-06-19 A |  | 100% |  |  |  | finish no earlier than 2017-06-19 | UX - Chethana |  |  |  |
| 402 | 1.4.3.11.1.3 | User story review with developer |  | 1d | 2017-06-14 A | 2017-06-14 A |  | 100% |  |  |  | start no earlier than 2017-06-14 | UR - Dhanu | 8h | 8h |  |
| 403 | 1.4.3.11.1.4 | Wireframe walkthru with Developer |  | 1d | 2017-06-14 A | 2017-06-14 A |  | 100% |  |  |  | start no earlier than 2017-06-14 | UX - Chethana | 8h | 8h |  |
| 404 | 1.4.3.11.1.5 | Coding Backend |  | 1d | 2017-06-20 | 2017-06-20 |  |  |  | 18d | 0d | start no earlier than 2017-06-20 | RD4 - Mahmooda | 8h |  |  |
| 405 | 1.4.3.11.1.6 | **Coding Frontend** |  | 1d | 2017-05-31 | 2017-05-31 |  |  |  | 32d | 14d |  | RD2 - Kiran Rohit | 8h |  | UI complete 6-22; submit for review 6-22 |
| 406 | 1.4.3.11.1.6.1 | UI Development |  | 1d | 2017-05-31 | 2017-05-31 |  |  |  | 32d |  |  |  |  |  |  |
| 407 | 1.4.3.11.1.6.2 | Navigation |  | 1d | 2017-05-31 | 2017-05-31 |  |  |  | 32d |  |  |  |  |  |  |
| 408 | 1.4.3.11.1.6.3 | Business Logic |  | 1d | 2017-05-31 | 2017-05-31 |  |  |  | 32d |  |  |  |  |  |  |
| 409 | 1.4.3.11.1.7 | Ux UI Review |  | 1d | 2017-06-23 | 2017-06-23 |  |  |  | 17d |  | start no earlier than 2017-06-23 | UX - Chethana | 8h |  |  |
| 410 | 1.4.3.11.1.8 | Sanity Test Cases |  | 1d | 2017-05-31 | 2017-05-31 |  |  |  | 34d |  |  | UQ - Lalit Kumar Jha [10%] | 0.8h |  |  |
| 411 | 1.4.3.11.1.9 | Sanity Testing |  | 2d | 2017-06-21 | 2017-06-22 | 404, 405 |  |  | 18d |  |  | UQ - Lalit Kumar Jha [50%]; RQA - Sharath Shet [50%] | 12h |  |  |
| 412 | 1.4.3.11.1.10 | Code Review |  | 1d | 2017-06-21 | 2017-06-21 | 404, 405 |  |  | 19d |  |  | RT - Debarghya Das [50%] | 4h |  |  |
| 413 | 1.4.3.11.1.11 | Demo / acceptance test |  | 1d | 2017-06-30 | 2017-06-30 |  |  |  | 12d |  | start no earlier than 2017-06-30 | UO Rob Plummer | 8h |  |  |

Notes:
- 382: Text2: Stub
- 384: Text2: User Story, Design Notes (no design notes for stubbed out User Stories)
- 385: Text2: Full interactive prototype delivered
- 398: Text2: Stub
- 400: Text2: User Story, Design Notes (no design notes for stubbed out User Stories)
- 401: Text2: Full interactive prototype delivered

| ID | WBS | Task | Type | Duration | Start | Finish | Predecessors | Complete | Remaining | Total slack | Free slack | Constraint | Resources | Work | Actual work | Text1 |
| --- | --- | --- | --- | --- | --- | --- | --- | --- | --- | --- | --- | --- | --- | --- | --- | --- |
| 414 | 1.4.3.12 | **(Investig:Social Work Contacts) On-boarding Summary** |  | 15d | 2017-05-31 A | 2017-06-20 |  | 17% | 12.5d | 20d |  |  |  | 68h | 16h |  |
| 415 | 1.4.3.12.1 | **Development** |  | 15d | 2017-05-31 A | 2017-06-20 |  | 17% | 12.5d | 20d |  |  |  | 68h | 16h |  |
| 416 | 1.4.3.12.1.1 | User Story Defined | milestone | 0d | 2017-06-12 A | 2017-06-12 A |  | 100% |  |  |  | finish no earlier than 2017-06-12 | UR - Dhanu |  |  |  |
| 417 | 1.4.3.12.1.2 | Prototype Wireframe | milestone | 0d | 2017-06-12 A | 2017-06-12 A |  | 100% |  |  |  | finish no earlier than 2017-06-12 | UX - Chethana |  |  |  |
| 418 | 1.4.3.12.1.3 | User story review with developer |  | 1d | 2017-06-12 A | 2017-06-12 A |  | 100% |  |  |  | start no earlier than 2017-06-12 | UR - Dhanu | 8h | 8h |  |
| 419 | 1.4.3.12.1.4 | Wireframe walkthru with Developer |  | 1d | 2017-06-12 A | 2017-06-12 A |  | 100% |  |  |  | start no earlier than 2017-06-12 | UX - Chethana | 8h | 8h |  |
| 420 | 1.4.3.12.1.5 | Coding Backend |  | 2d | 2017-06-13 | 2017-06-14 |  |  |  | 23d | 0d | start no earlier than 2017-06-13 | RD4 - Mahmooda | 16h |  |  |
| 421 | 1.4.3.12.1.6 | **Coding Frontend** |  | 1d | 2017-05-31 | 2017-05-31 |  |  |  | 33d | 10d |  | RD10 - Basil | 8h |  | UI complete 6-22; submit for review 6-22 |
| 422 | 1.4.3.12.1.6.1 | UI Development |  | 1d | 2017-05-31 | 2017-05-31 |  |  |  | 33d |  |  |  |  |  |  |
| 423 | 1.4.3.12.1.6.2 | Navigation |  | 1d | 2017-05-31 | 2017-05-31 |  |  |  | 33d |  |  |  |  |  |  |
| 424 | 1.4.3.12.1.6.3 | Business Logic |  | 1d | 2017-05-31 | 2017-05-31 |  |  |  | 33d |  |  |  |  |  |  |
| 425 | 1.4.3.12.1.7 | Ux UI Review |  | 1d | 2017-06-15 | 2017-06-15 |  |  |  | 23d |  | start no earlier than 2017-06-15 | UX - Chethana | 8h |  |  |
| 426 | 1.4.3.12.1.8 | Sanity Test Cases |  | 1d | 2017-06-16 | 2017-06-16 |  |  |  | 22d |  | start no earlier than 2017-06-16 |  |  |  |  |
| 427 | 1.4.3.12.1.9 | Sanity Testing |  | 1d | 2017-06-16 | 2017-06-16 | 420, 421 |  |  | 22d |  | start no earlier than 2017-06-16 | UQ - Lalit Kumar Jha | 8h |  |  |
| 428 | 1.4.3.12.1.10 | Code Review |  | 1d | 2017-06-15 | 2017-06-15 | 420, 421 |  |  | 23d |  |  | RT - Debarghya Das [50%] | 4h |  |  |
| 429 | 1.4.3.12.1.11 | Demo / acceptance test |  | 1d | 2017-06-20 | 2017-06-20 |  |  |  | 20d |  | start no earlier than 2017-06-20 | UO Rob Plummer | 8h |  |  |
| 430 | 1.4.3.13 | **(Investig:Common) Panic Button** |  | 27d | 2017-05-31 A | 2017-07-06 |  | 9% | 24.55d | 8d |  |  |  | 52.8h | 8h |  |
| 431 | 1.4.3.13.1 | **Development** |  | 27d | 2017-05-31 A | 2017-07-06 |  | 9% | 24.55d | 8d |  |  |  | 52.8h | 8h |  |
| 432 | 1.4.3.13.1.1 | User Story Defined | milestone | 0d | 2017-06-16 A | 2017-06-16 A |  | 100% |  |  |  | finish no earlier than 2017-06-16 | UR - Dhanu |  |  |  |
| 433 | 1.4.3.13.1.2 | Prototype Wireframe | milestone | 0d | 2017-06-16 A | 2017-06-16 A |  | 100% |  |  |  | finish no earlier than 2017-06-16 | UX - Chethana |  |  |  |
| 434 | 1.4.3.13.1.3 | User story review with developer |  | 1d | 2017-06-16 A | 2017-06-16 A |  | 100% |  |  |  | start no earlier than 2017-06-16 | UR - Dhanu | 8h | 8h |  |
| 435 | 1.4.3.13.1.4 | Wireframe walkthru with Developer |  | 1d | 2017-06-16 | 2017-06-16 |  |  |  | 22d |  | start no earlier than 2017-06-16 | UX - Chethana | 8h |  |  |
| 436 | 1.4.3.13.1.5 | Coding Backend |  | 1d | 2017-05-31 | 2017-05-31 |  |  |  | 32d | 0d |  |  |  |  |  |
| 437 | 1.4.3.13.1.6 | **Coding Frontend** |  | 1d | 2017-05-31 | 2017-05-31 |  |  |  | 32d | 0d |  | RD1 - Ravindra | 8h |  | UI complete 6-23; submit for review 6-23 |
| 438 | 1.4.3.13.1.6.1 | UI Development |  | 1d | 2017-05-31 | 2017-05-31 |  |  |  | 32d |  |  |  |  |  |  |
| 439 | 1.4.3.13.1.6.2 | Navigation |  | 1d | 2017-05-31 | 2017-05-31 |  |  |  | 32d |  |  |  |  |  |  |
| 440 | 1.4.3.13.1.6.3 | Business Logic |  | 1d | 2017-05-31 | 2017-05-31 |  |  |  | 32d |  |  |  |  |  |  |
| 441 | 1.4.3.13.1.7 | Ux UI Review |  | 1d | 2017-07-04 | 2017-07-04 |  |  |  | 10d |  | start no earlier than 2017-07-04 | UX - Chethana | 8h |  |  |
| 442 | 1.4.3.13.1.8 | Sanity Test Cases |  | 1d | 2017-05-31 | 2017-05-31 |  |  |  | 34d |  |  | UQ - Lalit Kumar Jha [10%] | 0.8h |  |  |
| 443 | 1.4.3.13.1.9 | Sanity Testing |  | 1d | 2017-07-05 | 2017-07-05 | 436, 437 |  |  | 8d | 0d | start no earlier than 2017-07-05 | RQA - Sharath Shet [50%]; UQ - Lalit Kumar Jha [50%] | 8h |  |  |
| 444 | 1.4.3.13.1.10 | Code Review |  | 1d | 2017-06-01 | 2017-06-01 | 436, 437 |  |  | 33d |  |  | RT - Debarghya Das [50%] | 4h |  |  |
| 445 | 1.4.3.13.1.11 | Demo / acceptance test |  | 1d | 2017-07-06 | 2017-07-06 | 443 |  |  | 8d |  |  | UO Rob Plummer | 8h |  |  |

Notes:
- 414: Text2: TBD
- 416: Text2: User Story, Design Notes (no design notes for stubbed out User Stories)
- 417: Text2: Full interactive prototype delivered
- 430: Text2: TBD
- 432: Text2: User Story, Design Notes (no design notes for stubbed out User Stories)
- 433: Text2: Full interactive prototype delivered

| ID | WBS | Task | Type | Duration | Start | Finish | Predecessors | Complete | Remaining | Total slack | Free slack | Constraint | Resources | Work | Actual work | Text1 |
| --- | --- | --- | --- | --- | --- | --- | --- | --- | --- | --- | --- | --- | --- | --- | --- | --- |
| 446 | 1.4.3.14 | **(Investig:Safety Assessment) On boarding summary** |  | 18d | 2017-05-31 A | 2017-06-23 |  | 15% | 15.23d | 17d |  |  |  | 72.8h | 16h |  |
| 447 | 1.4.3.14.1 | **Development** |  | 18d | 2017-05-31 A | 2017-06-23 |  | 15% | 15.23d | 17d |  |  |  | 72.8h | 16h |  |
| 448 | 1.4.3.14.1.1 | User Story Defined | milestone | 0d | 2017-06-16 A | 2017-06-16 A |  | 100% |  |  |  | finish no earlier than 2017-06-16 | UR - Dhanu |  |  |  |
| 449 | 1.4.3.14.1.2 | Prototype Wireframe | milestone | 0d | 2017-06-16 A | 2017-06-16 A |  | 100% |  |  |  | finish no earlier than 2017-06-16 | UX - Chethana |  |  |  |
| 450 | 1.4.3.14.1.3 | User story review with developer |  | 1d | 2017-06-16 A | 2017-06-16 A |  | 100% |  |  |  | start no earlier than 2017-06-16 | UR - Dhanu | 8h | 8h |  |
| 451 | 1.4.3.14.1.4 | Wireframe walkthru with Developer |  | 1d | 2017-06-16 A | 2017-06-16 A |  | 100% |  |  |  | start no earlier than 2017-06-16 | UX - Chethana | 8h | 8h |  |
| 452 | 1.4.3.14.1.5 | Coding Backend |  | 2d | 2017-06-19 | 2017-06-20 |  |  |  | 18d | 0d | start no earlier than 2017-06-19 | UD3 - Miju Mathew | 16h |  |  |
| 453 | 1.4.3.14.1.6 | **Coding Frontend** |  | 1d | 2017-05-31 | 2017-05-31 |  |  |  | 32d | 14d |  | UD1 - Ankit Kumar | 8h |  | ui complete 50%; ui review 6-23 |
| 454 | 1.4.3.14.1.6.1 | UI Development |  | 1d | 2017-05-31 | 2017-05-31 |  |  |  | 32d |  |  |  |  |  |  |
| 455 | 1.4.3.14.1.6.2 | Navigation |  | 1d | 2017-05-31 | 2017-05-31 |  |  |  | 32d |  |  |  |  |  |  |
| 456 | 1.4.3.14.1.6.3 | Business Logic |  | 1d | 2017-05-31 | 2017-05-31 |  |  |  | 32d |  |  |  |  |  |  |
| 457 | 1.4.3.14.1.7 | Ux UI Review |  | 1d | 2017-06-19 | 2017-06-19 |  |  |  | 21d |  | start no earlier than 2017-06-19 | UX - Chethana | 8h |  |  |
| 458 | 1.4.3.14.1.8 | Sanity Test Cases |  | 1d | 2017-06-16 | 2017-06-16 |  |  |  | 22d |  | start no earlier than 2017-06-16 | UQ - Lalit Kumar Jha [10%] | 0.8h |  |  |
| 459 | 1.4.3.14.1.9 | Sanity Testing |  | 2d | 2017-06-21 | 2017-06-22 | 452, 453 |  |  | 18d |  |  | UQ - Lalit Kumar Jha [50%]; RQA - Sharath Shet [50%] | 12h |  |  |
| 460 | 1.4.3.14.1.10 | Code Review |  | 1d | 2017-06-21 | 2017-06-21 | 452, 453 |  |  | 19d |  |  | RT - Debarghya Das [50%] | 4h |  |  |
| 461 | 1.4.3.14.1.11 | Demo / acceptance test |  | 1d | 2017-06-23 | 2017-06-23 |  |  |  | 17d |  | start no earlier than 2017-06-23 | UO Rob Plummer | 8h |  |  |
| 462 | 1.4.4 | **Sprint 2 - Acceptance** |  | 5d | 2017-06-30 | 2017-07-06 |  |  |  | 8d |  |  |  | 8h |  |  |
| 463 | 1.4.4.1 | Code Merge - Sprint 2 |  | 1d | 2017-06-30 | 2017-06-30 |  |  |  | 10d | 0d | start no earlier than 2017-06-30 |  |  |  |  |
| 464 | 1.4.4.2 | Integration Testing |  | 1d | 2017-07-03 | 2017-07-03 | 463 |  |  | 10d | 0d |  |  |  |  |  |
| 465 | 1.4.4.3 | Regression Testing of Sprint 1 - Unisys |  | 1d | 2017-07-04 | 2017-07-04 | 464 |  |  | 10d |  |  |  |  |  |  |
| 466 | 1.4.4.4 | Acceptance Testing |  | 1d | 2017-07-04 | 2017-07-04 |  |  |  | 10d |  | start no earlier than 2017-07-04 | UO - Rob Plummer | 8h |  |  |
| 467 | 1.4.4.5 | Rework and Closure of all Identified defects |  | 3d | 2017-07-04 | 2017-07-06 |  |  |  | 8d |  | start no earlier than 2017-07-04 |  |  |  |  |
| 468 | 1.4.5 | Demo - Sprint 2 |  | 1d | 2017-07-07 | 2017-07-07 |  |  |  | 7d |  | start no earlier than 2017-07-07 |  |  |  |  |
| 469 | 1.5 | **Sprint 3** |  | 30d | 2017-05-31 A | 2017-07-11 |  |  | 29.89d | 5d |  |  |  | 1550.4h | 8h |  |
| 470 | 1.5.1 | **Planning and Definition** |  | 2d | 2017-06-23 | 2017-06-26 |  |  |  | 9d |  |  |  | 16h |  |  |
| 471 | 1.5.1.1 | Updated Project Plan V 3.0 |  | 1d | 2017-06-26 | 2017-06-26 |  |  |  | 8d | 0d | start no earlier than 2017-06-26 | RP - Vineeth R S | 8h |  |  |
| 472 | 1.5.1.2 | Updated HLD V 3.0 |  | 1d | 2017-06-23 | 2017-06-23 | 225 |  |  | 17d |  |  | RA - Guruprasad K J | 8h |  |  |

Notes:
- 446: Text2: TBD
- 448: Text2: User Story, Design Notes (no design notes for stubbed out User Stories)
- 449: Text2: Full interactive prototype delivered

| ID | WBS | Task | Duration | Start | Finish | Predecessors | Total slack | Free slack | Constraint | Resources | Work |
| --- | --- | --- | --- | --- | --- | --- | --- | --- | --- | --- | --- |
| 473 | 1.5.2 | **Proof of Concept - Phase 2(Third Party Dependency)** | 22d | 2017-06-08 | 2017-07-07 |  | 7d |  |  |  | 384h |
| 474 | 1.5.2.1 | **Forms Library** | 21d | 2017-06-08 | 2017-07-06 |  | 8d |  |  |  | 104h |
| 475 | 1.5.2.1.1 | Identify technology, approach and design | 1d | 2017-06-08 | 2017-06-08 |  | 18d | 0d | finish no earlier than 2017-06-08 | UA - Raju | 8h |
| 476 | 1.5.2.1.2 | Screen Image for RFP | 3d | 2017-06-09 | 2017-06-13 | 475 | 25d |  | start no earlier than 2017-06-09 | UX - Shiva | 24h |
| 477 | 1.5.2.1.3 | Scope agreement / Requirements affirmation | 1d | 2017-06-09 | 2017-06-09 | 475 | 18d | 0d | finish no earlier than 2017-06-08 | UA - Raju | 8h |
| 478 | 1.5.2.1.4 | Technical Solution Overview Template | 1d | 2017-06-12 | 2017-06-12 | 477 | 18d | 10d | start no earlier than 2017-06-09 |  |  |
| 479 | 1.5.2.1.5 | Development, Testing, Demo | 7d | 2017-06-27 | 2017-07-05 | 471, 478 | 8d | 0d |  | UL - Alok Kumar Pandey | 56h |
| 480 | 1.5.2.1.6 | Validation by Raju or designate | 1d | 2017-07-06 | 2017-07-06 | 479 | 8d |  | start no earlier than 2017-06-28 | UA - Raju | 8h |
| 481 | 1.5.2.2 | **Digital Signature** | 10d | 2017-06-26 | 2017-07-07 |  | 7d |  |  |  | 72h |
| 482 | 1.5.2.2.1 | Scope agreement / Requirements affirmation | 1d | 2017-06-26 | 2017-06-26 |  | 7d | 0d | finish no earlier than 2017-06-26 | UA - Raju | 8h |
| 483 | 1.5.2.2.2 | Technical Solution Overview Template | 1d | 2017-06-27 | 2017-06-27 | 482 | 7d | 0d | start no earlier than 2017-06-09 |  |  |
| 484 | 1.5.2.2.3 | Development, Testing, Demo | 7d | 2017-06-28 | 2017-07-06 | 471, 483 | 7d | 0d |  | RA - Ramkumar | 56h |
| 485 | 1.5.2.2.4 | Validation by Raju or designate | 1d | 2017-07-07 | 2017-07-07 | 484 | 7d |  |  | UA - Raju | 8h |
| 486 | 1.5.2.3 | **Panic Button Engagement** | 21d | 2017-06-08 | 2017-07-06 |  | 8d |  |  |  | 104h |
| 487 | 1.5.2.3.1 | Documentation for 3rd party tool | 1d | 2017-06-09 | 2017-06-09 |  | 24d | 0d | start no earlier than 2017-06-09 | UA - Raju | 8h |
| 488 | 1.5.2.3.2 | Scope agreement / Requirements affirmation | 1d | 2017-06-08 | 2017-06-08 |  | 19d | 0d | finish no earlier than 2017-06-08 | UA - Raju | 8h |
| 489 | 1.5.2.3.3 | Technical Solution Overview Template | 1d | 2017-06-09 | 2017-06-09 | 488 | 19d | 11d | start no earlier than 2017-06-09 |  |  |
| 490 | 1.5.2.3.4 | Development, Testing, Demo | 7d | 2017-06-27 | 2017-07-05 | 471, 489 | 8d | 0d |  | RA - Naveen Math | 56h |
| 491 | 1.5.2.3.5 | Screen Image for RFP | 3d | 2017-06-12 | 2017-06-14 | 487 | 24d |  | start no earlier than 2017-06-09 | UX - Shiva | 24h |
| 492 | 1.5.2.3.6 | Validation by Raju or designate | 1d | 2017-07-06 | 2017-07-06 | 490 | 8d |  | start no earlier than 2017-06-09 | UX - Shiva | 8h |
| 493 | 1.5.2.4 | **Access Managemnt** | 21d | 2017-06-09 | 2017-07-07 |  | 7d |  |  |  | 104h |
| 494 | 1.5.2.4.1 | Documentation for Stealth Identity | 1d | 2017-06-09 | 2017-06-09 |  | 24d | 0d | start no earlier than 2017-06-09 | UA - Raju | 8h |
| 495 | 1.5.2.4.2 | Screen Image for RFP | 3d | 2017-06-12 | 2017-06-14 | 494 | 24d |  | start no earlier than 2017-06-09 | U-SI | 24h |
| 496 | 1.5.2.4.3 | Scope agreement / Requirements affirmation | 0.5d | 2017-06-12 | 2017-06-12 |  | 18d | 10d | finish no earlier than 2017-06-12 | UA - Raju; RA - Guruprasad K J | 8h |
| 497 | 1.5.2.4.4 | Development, Testing, Demo | 7d | 2017-06-27 | 2017-07-05 | 471, 496 | 8d | 1d |  | RA - Guruprasad K J | 56h |
| 498 | 1.5.2.4.5 | Validation by Raju or designate | 1d | 2017-07-07 | 2017-07-07 | 497 | 7d |  | start no earlier than 2017-07-07 | UA - Raju | 8h |

Notes:
- 474: Text1: Demo, PoC Technical Solution Overview Template completed
- 475: May need to ahve a partner discussion based on outcome / Nothing for RFP
- 477: Text1: Raju confident POC Developer understands / Developer Affirms understanding
- 478: Text1: Reviewed by Raju or Rob
- 481: Text1: Demo, PoC Technical Solution Overview Template completed
- 482: Text1: Raju confident POC Developer understands / Developer Affirms understanding
- 483: Text1: Reviewed by Raju or Rob
- 486: Text1: Demo, PoC Technical Solution Overview Template completed
- 488: Text1: Raju confident POC Developer understands / Developer Affirms understanding
- 489: Text1: Reviewed by Raju or Rob
- 493: Text1: Demo, PoC Technical Solution Overview Template completed
- 496: Text1: Raju confident POC Developer understands / Developer Affirms understanding

| ID | WBS | Task | Type | Duration | Start | Finish | Predecessors | Complete | Remaining | Total slack | Free slack | Constraint | Resources | Work | Actual work |
| --- | --- | --- | --- | --- | --- | --- | --- | --- | --- | --- | --- | --- | --- | --- | --- |
| 499 | 1.5.3 | **Client App Development** |  | 28d | 2017-05-31 A | 2017-07-07 |  |  | 27.87d | 7d |  |  |  | 1142.4h | 8h |
| 500 | 1.5.3.1 | **(Investig:Social Work Contacts) List** |  | 15d | 2017-05-31 A | 2017-06-20 |  |  | 15d | 20d |  |  |  | 70.4h |  |
| 501 | 1.5.3.1.1 | **Development** |  | 15d | 2017-05-31 A | 2017-06-20 |  |  | 15d | 20d |  |  |  | 70.4h |  |
| 502 | 1.5.3.1.1.1 | User Story Defined | milestone | 0d | 2017-06-09 A | 2017-06-09 A |  | 100% |  |  |  | finish no earlier than 2017-06-09 | UR - Dhanu |  |  |
| 503 | 1.5.3.1.1.2 | Prototype Wireframe | milestone | 0d | 2017-06-09 A | 2017-06-09 A |  | 100% |  |  |  | finish no earlier than 2017-06-09 | UX - Chethana |  |  |
| 504 | 1.5.3.1.1.3 | User story review with developer |  | 1d | 2017-06-12 | 2017-06-12 |  |  |  | 26d |  | start no earlier than 2017-06-12 | UR - Dhanu | 8h |  |
| 505 | 1.5.3.1.1.4 | Wireframe walkthru with Developer |  | 1d | 2017-06-12 | 2017-06-12 |  |  |  | 26d |  | start no earlier than 2017-06-12 | UX - Chethana | 8h |  |
| 506 | 1.5.3.1.1.5 | Coding Backend |  | 2d | 2017-06-15 | 2017-06-16 |  |  |  | 21d | 0d | start no earlier than 2017-06-15 | RD4 - Mahmooda | 16h |  |
| 507 | 1.5.3.1.1.6 | **Coding Frontend** |  | 1d | 2017-05-31 | 2017-05-31 |  |  |  | 33d | 12d |  | RD10 - Basil | 8h |  |
| 508 | 1.5.3.1.1.6.1 | UI Development |  | 1d | 2017-05-31 | 2017-05-31 |  |  |  | 33d |  |  |  |  |  |
| 509 | 1.5.3.1.1.6.2 | Navigation |  | 1d | 2017-05-31 | 2017-05-31 |  |  |  | 33d |  |  |  |  |  |
| 510 | 1.5.3.1.1.6.3 | Business Logic |  | 1d | 2017-05-31 | 2017-05-31 |  |  |  | 33d |  |  |  |  |  |
| 511 | 1.5.3.1.1.7 | UX/UI Review |  | 1d | 2017-06-15 | 2017-06-15 |  |  |  | 23d |  | start no earlier than 2017-06-15 | UX - Chethana | 8h |  |
| 512 | 1.5.3.1.1.8 | Sanity Test Cases |  | 3d | 2017-06-12 | 2017-06-14 |  |  |  | 24d |  | start no earlier than 2017-06-12 | UQ - Lalit Kumar Jha [10%] | 2.4h |  |
| 513 | 1.5.3.1.1.9 | Sanity Testing |  | 1d | 2017-06-19 | 2017-06-19 | 506, 507 |  |  | 21d |  | start no earlier than 2017-06-16 | UQ - Lalit Kumar Jha [50%]; RQA - Sharath Shet [50%] | 8h |  |
| 514 | 1.5.3.1.1.10 | Code Review |  | 1d | 2017-06-19 | 2017-06-19 | 506, 507 |  |  | 21d |  |  | RA - Naveen Math [50%] | 4h |  |
| 515 | 1.5.3.1.1.11 | Demo / acceptance test |  | 1d | 2017-06-20 | 2017-06-20 |  |  |  | 20d |  | start no earlier than 2017-06-20 | UO Rob Plummer | 8h |  |
| 516 | 1.5.3.2 | **(Investig:Social Work Contacts) Add-activity Details** |  | 16d | 2017-05-31 A | 2017-06-21 |  |  | 16d | 19d |  |  |  | 68h |  |
| 517 | 1.5.3.2.1 | **Development** |  | 16d | 2017-05-31 A | 2017-06-21 |  |  | 16d | 19d |  |  |  | 68h |  |
| 518 | 1.5.3.2.1.1 | User Story Defined | milestone | 0d | 2017-06-12 A | 2017-06-12 A |  | 100% |  |  |  | finish no earlier than 2017-06-12 | UR - Dhanu |  |  |
| 519 | 1.5.3.2.1.2 | Prototype Wireframe | milestone | 0d | 2017-06-12 A | 2017-06-12 A |  | 100% |  |  |  | finish no earlier than 2017-06-12 | UX - Chethana |  |  |
| 520 | 1.5.3.2.1.3 | User story review with developer |  | 1d | 2017-06-15 | 2017-06-15 |  |  |  | 23d |  | start no earlier than 2017-06-15 | UR - Dhanu | 8h |  |
| 521 | 1.5.3.2.1.4 | Wireframe walkthru with Developer |  | 1d | 2017-06-15 | 2017-06-15 |  |  |  | 23d |  | start no earlier than 2017-06-15 | UX - Chethana | 8h |  |
| 522 | 1.5.3.2.1.5 | Coding Backend |  | 2d | 2017-05-31 | 2017-06-01 |  |  |  | 31d | 0d |  | RD4 - Mahmooda | 16h |  |

Notes:
- 500: Text2: TBD
- 502: Text1: User Story, Design Notes (no design notes for stubbed out User Stories) / Text2: User Story, Design Notes (no design notes for stubbed out User Stories)
- 503: Text1: Full interactive prototype delivered / Text2: Full interactive prototype delivered
- 516: Text2: TBD
- 518: Text2: User Story, Design Notes (no design notes for stubbed out User Stories)
- 519: Text2: Full interactive prototype delivered

| ID | WBS | Task | Type | Duration | Start | Finish | Predecessors | Complete | Remaining | Total slack | Free slack | Constraint | Resources | Work |
| --- | --- | --- | --- | --- | --- | --- | --- | --- | --- | --- | --- | --- | --- | --- |
| 523 | 1.5.3.2.1.6 | **Coding Frontend** |  | 1d | 2017-05-31 | 2017-05-31 |  |  |  | 32d | 1d |  | RD10 - Basil | 8h |
| 524 | 1.5.3.2.1.6.1 | UI Development |  | 1d | 2017-05-31 | 2017-05-31 |  |  |  | 32d |  |  |  |  |
| 525 | 1.5.3.2.1.6.2 | Navigation |  | 1d | 2017-05-31 | 2017-05-31 |  |  |  | 32d |  |  |  |  |
| 526 | 1.5.3.2.1.6.3 | Business Logic |  | 1d | 2017-05-31 | 2017-05-31 |  |  |  | 32d |  |  |  |  |
| 527 | 1.5.3.2.1.7 | Ux UI Review |  | 1d | 2017-06-20 | 2017-06-20 |  |  |  | 20d |  | start no earlier than 2017-06-20 | UX - Chethana | 8h |
| 528 | 1.5.3.2.1.8 | Sanity Test Cases |  | 1d | 2017-05-31 | 2017-05-31 |  |  |  | 34d |  |  |  |  |
| 529 | 1.5.3.2.1.9 | Sanity Testing |  | 1d | 2017-06-21 | 2017-06-21 | 522, 523 |  |  | 19d |  | start no earlier than 2017-06-21 | UQ - Lalit Kumar Jha | 8h |
| 530 | 1.5.3.2.1.10 | Code Review |  | 1d | 2017-06-02 | 2017-06-02 | 522, 523 |  |  | 31d | 0d |  | RT - Debarghya Das [50%] | 4h |
| 531 | 1.5.3.2.1.11 | Demo / acceptance test |  | 1d | 2017-06-05 | 2017-06-05 | 530 |  |  | 31d |  |  | UO Rob Plummer | 8h |
| 532 | 1.5.3.3 | **(Investig:Social Work Contacts) Select Participants** |  | 18d | 2017-05-31 A | 2017-06-23 |  |  | 18d | 17d |  |  |  | 48h |
| 533 | 1.5.3.3.1 | **Development** |  | 18d | 2017-05-31 A | 2017-06-23 |  |  | 18d | 17d |  |  |  | 48h |
| 534 | 1.5.3.3.1.1 | User Story Defined | milestone | 0d | 2017-06-14 A | 2017-06-14 A |  | 100% |  |  |  | start no earlier than 2017-06-14 | UR - Dhanu |  |
| 535 | 1.5.3.3.1.2 | Prototype Wireframe | milestone | 0d | 2017-06-14 A | 2017-06-14 A |  | 100% |  |  |  | start no earlier than 2017-06-14 | UX - Chethana |  |
| 536 | 1.5.3.3.1.3 | User story review with developer |  | 1d | 2017-06-14 | 2017-06-14 |  |  |  | 24d |  | start no earlier than 2017-06-14 | UR - Dhanu | 8h |
| 537 | 1.5.3.3.1.4 | Wireframe walkthru with Developer |  | 1d | 2017-06-14 | 2017-06-14 |  |  |  | 24d |  | start no earlier than 2017-06-14 | UX - Chethana | 8h |
| 538 | 1.5.3.3.1.5 | Coding Backend |  | 1d | 2017-06-21 | 2017-06-21 |  |  |  | 17d | 0d | start no earlier than 2017-06-21 | RD4 - Mahmooda | 8h |
| 539 | 1.5.3.3.1.6 | **Coding Frontend** |  | 1d | 2017-05-31 | 2017-05-31 |  |  |  | 32d | 15d |  | RD10 - Basil | 8h |
| 540 | 1.5.3.3.1.6.1 | UI Development |  | 1d | 2017-05-31 | 2017-05-31 |  |  |  | 32d |  |  |  |  |
| 541 | 1.5.3.3.1.6.2 | Navigation |  | 1d | 2017-05-31 | 2017-05-31 |  |  |  | 32d |  |  |  |  |
| 542 | 1.5.3.3.1.6.3 | Business Logic |  | 1d | 2017-05-31 | 2017-05-31 |  |  |  | 32d |  |  |  |  |
| 543 | 1.5.3.3.1.7 | Ux UI Review |  | 1d | 2017-06-15 | 2017-06-15 | 544 |  |  | 23d |  |  | UX - Chethana | 8h |
| 544 | 1.5.3.3.1.8 | Sanity Test Cases |  | 1d | 2017-06-14 | 2017-06-14 |  |  |  | 23d | 0d | start no earlier than 2017-06-14 |  |  |
| 545 | 1.5.3.3.1.9 | Sanity Testing |  | 1d | 2017-06-22 | 2017-06-22 | 538, 539 |  |  | 18d |  |  |  |  |
| 546 | 1.5.3.3.1.10 | Code Review |  | 1d | 2017-06-22 | 2017-06-22 | 538, 539 |  |  | 17d | 0d |  |  |  |
| 547 | 1.5.3.3.1.11 | Demo / acceptance test |  | 1d | 2017-06-23 | 2017-06-23 | 546 |  |  | 17d |  |  | UO Rob Plummer | 8h |

Notes:
- 532: Text2: TBD
- 534: Text2: User Story, Design Notes (no design notes for stubbed out User Stories)
- 535: Text2: Full interactive prototype delivered

| ID | WBS | Task | Type | Duration | Start | Finish | Predecessors | Complete | Remaining | Total slack | Free slack | Constraint | Resources | Work |
| --- | --- | --- | --- | --- | --- | --- | --- | --- | --- | --- | --- | --- | --- | --- |
| 548 | 1.5.3.4 | **(Investig:Social Work Contacts) Contact Summary** |  | 19d | 2017-05-31 A | 2017-06-26 |  |  | 19d | 16d |  |  |  | 68.8h |
| 549 | 1.5.3.4.1 | **Development** |  | 19d | 2017-05-31 A | 2017-06-26 |  |  | 19d | 16d |  |  |  | 68.8h |
| 550 | 1.5.3.4.1.1 | User Story Defined | milestone | 0d | 2017-06-19 A | 2017-06-19 A |  | 100% |  |  |  | start no earlier than 2017-06-19 | UR - Dhanu |  |
| 551 | 1.5.3.4.1.2 | Prototype Wireframe | milestone | 0d | 2017-06-19 A | 2017-06-19 A |  | 100% |  |  |  | start no earlier than 2017-06-19 | UX - Chethana |  |
| 552 | 1.5.3.4.1.3 | User story review with developer |  | 1d | 2017-06-19 | 2017-06-19 |  |  |  | 21d |  | start no earlier than 2017-06-19 | UR - Dhanu | 8h |
| 553 | 1.5.3.4.1.4 | Wireframe walkthru with Developer |  | 1d | 2017-06-19 | 2017-06-19 |  |  |  | 21d |  | start no earlier than 2017-06-19 | UX - Chethana | 8h |
| 554 | 1.5.3.4.1.5 | Coding Backend |  | 2d | 2017-06-22 | 2017-06-23 |  |  |  | 16d | 0d | start no earlier than 2017-06-22 | RD4 - Mahmooda | 16h |
| 555 | 1.5.3.4.1.6 | **Coding Frontend** |  | 1d | 2017-05-31 | 2017-05-31 |  |  |  | 33d | 17d |  | RD10 - Basil | 8h |
| 556 | 1.5.3.4.1.6.1 | UI Development |  | 1d | 2017-05-31 | 2017-05-31 |  |  |  | 33d |  |  |  |  |
| 557 | 1.5.3.4.1.6.2 | Navigation |  | 1d | 2017-05-31 | 2017-05-31 |  |  |  | 33d |  |  |  |  |
| 558 | 1.5.3.4.1.6.3 | Business Logic |  | 1d | 2017-05-31 | 2017-05-31 |  |  |  | 33d |  |  |  |  |
| 559 | 1.5.3.4.1.7 | Ux UI Review |  | 1d | 2017-06-26 | 2017-06-26 |  |  |  | 16d |  | start no earlier than 2017-06-26 | UX - Chethana | 8h |
| 560 | 1.5.3.4.1.8 | Sanity Test Cases |  | 1d | 2017-06-19 | 2017-06-19 |  |  |  | 21d |  | start no earlier than 2017-06-19 | UQ - Lalit Kumar Jha [10%] | 0.8h |
| 561 | 1.5.3.4.1.9 | Sanity Testing |  | 1d | 2017-06-26 | 2017-06-26 | 554, 555 |  |  | 16d |  | start no earlier than 2017-06-23 | RQA - Sharath Shet [50%]; UQ - Lalit Kumar Jha [50%] | 8h |
| 562 | 1.5.3.4.1.10 | Code Review |  | 1d | 2017-06-26 | 2017-06-26 | 554, 555 |  |  | 16d |  |  | RT - Debarghya Das [50%] | 4h |
| 563 | 1.5.3.4.1.11 | Demo / acceptance test |  | 1d | 2017-06-26 | 2017-06-26 |  |  |  | 16d |  | start no earlier than 2017-06-26 | UO Rob Plummer | 8h |
| 564 | 1.5.3.5 | **(Investig:Social Work Contacts) Photos - Capture and Attach** |  | 25d | 2017-05-31 A | 2017-07-04 |  |  | 25d | 10d |  |  |  | 68.8h |
| 565 | 1.5.3.5.1 | **Development** |  | 25d | 2017-05-31 A | 2017-07-04 |  |  | 25d | 10d |  |  |  | 68.8h |
| 566 | 1.5.3.5.1.1 | User Story Defined | milestone | 0d | 2017-06-19 A | 2017-06-19 A |  | 100% |  |  |  | finish no earlier than 2017-06-19 | UR - Dhanu |  |
| 567 | 1.5.3.5.1.2 | Prototype Wireframe | milestone | 0d | 2017-06-19 A | 2017-06-19 A |  | 100% |  |  |  | finish no earlier than 2017-06-19 | UX - Chethana |  |
| 568 | 1.5.3.5.1.3 | User story review with developer |  | 1d | 2017-06-19 | 2017-06-19 |  |  |  | 21d |  | start no earlier than 2017-06-19 | UR - Dhanu | 8h |
| 569 | 1.5.3.5.1.4 | Wireframe walkthru with Developer |  | 1d | 2017-06-19 | 2017-06-19 |  |  |  | 21d |  | start no earlier than 2017-06-19 | UX - Chethana | 8h |
| 570 | 1.5.3.5.1.5 | Coding Backend |  | 2d | 2017-06-30 | 2017-07-03 |  |  |  | 10d | 0d | start no earlier than 2017-06-30 | RD4 - Mahmooda | 16h |
| 571 | 1.5.3.5.1.6 | **Coding Frontend** |  | 1d | 2017-05-31 | 2017-05-31 |  |  |  | 33d | 23d |  | RD10 - Basil | 8h |
| 572 | 1.5.3.5.1.6.1 | UI Development |  | 1d | 2017-05-31 | 2017-05-31 |  |  |  | 33d |  |  |  |  |
| 573 | 1.5.3.5.1.6.2 | Navigation |  | 1d | 2017-05-31 | 2017-05-31 |  |  |  | 33d |  |  |  |  |
| 574 | 1.5.3.5.1.6.3 | Business Logic |  | 1d | 2017-05-31 | 2017-05-31 |  |  |  | 33d |  |  |  |  |
| 575 | 1.5.3.5.1.7 | Ux UI Review |  | 1d | 2017-07-03 | 2017-07-03 | 576 |  |  | 10d | 0d | start no earlier than 2017-07-03 | UX - Chethana | 8h |
| 576 | 1.5.3.5.1.8 | Sanity Test Cases |  | 1d | 2017-06-19 | 2017-06-19 |  |  |  | 19d | 9d | start no earlier than 2017-06-19 | UQ - Lalit Kumar Jha [10%] | 0.8h |
| 577 | 1.5.3.5.1.9 | Sanity Testing |  | 1d | 2017-07-04 | 2017-07-04 | 570, 571 |  |  | 10d |  | start no earlier than 2017-07-03 | RQA - Sharath Shet [50%]; UQ - Lalit Kumar Jha [50%] | 8h |
| 578 | 1.5.3.5.1.10 | Code Review |  | 1d | 2017-07-04 | 2017-07-04 | 570, 571 |  |  | 10d |  | start no earlier than 2017-07-03 | RT - Debarghya Das [50%] | 4h |
| 579 | 1.5.3.5.1.11 | Demo / acceptance test |  | 1d | 2017-07-04 | 2017-07-04 | 575 |  |  | 10d |  |  | UO Rob Plummer | 8h |

Notes:
- 548: Text2: TBD
- 550: Text2: User Story, Design Notes (no design notes for stubbed out User Stories)
- 551: Text2: Full interactive prototype delivered
- 564: Text2: TBD
- 566: Text2: User Story, Design Notes (no design notes for stubbed out User Stories)
- 567: Text2: Full interactive prototype delivered

| ID | WBS | Task | Type | Duration | Start | Finish | Predecessors | Complete | Remaining | Total slack | Free slack | Constraint | Resources | Work | Actual work | Text1 |
| --- | --- | --- | --- | --- | --- | --- | --- | --- | --- | --- | --- | --- | --- | --- | --- | --- |
| 580 | 1.5.3.6 | **(Investig:Social Work Contacts) View** |  | 23d | 2017-05-31 A | 2017-06-30 |  |  | 23d | 12d |  |  |  | 68.8h |  |  |
| 581 | 1.5.3.6.1 | **Development** |  | 23d | 2017-05-31 A | 2017-06-30 |  |  | 23d | 12d |  |  |  | 68.8h |  |  |
| 582 | 1.5.3.6.1.1 | User Story Defined | milestone | 0d | 2017-06-19 A | 2017-06-19 A |  | 100% |  |  |  | finish no earlier than 2017-06-19 | UR - Dhanu |  |  |  |
| 583 | 1.5.3.6.1.2 | Prototype Wireframe | milestone | 0d | 2017-06-19 A | 2017-06-19 A |  | 100% |  |  |  | finish no earlier than 2017-06-19 | UX - Chethana |  |  |  |
| 584 | 1.5.3.6.1.3 | User story review with developer |  | 1d | 2017-06-19 | 2017-06-19 |  |  |  | 21d |  | finish no earlier than 2017-06-19 | UR - Dhanu | 8h |  |  |
| 585 | 1.5.3.6.1.4 | Wireframe walkthru with Developer |  | 1d | 2017-06-19 | 2017-06-19 |  |  |  | 21d |  | finish no earlier than 2017-06-19 | UX - Chethana | 8h |  |  |
| 586 | 1.5.3.6.1.5 | Coding Backend |  | 2d | 2017-06-28 | 2017-06-29 |  |  |  | 12d | 0d | start no earlier than 2017-06-28 | RD4 - Mahmooda | 16h |  |  |
| 587 | 1.5.3.6.1.6 | **Coding Frontend** |  | 1d | 2017-05-31 | 2017-05-31 |  |  |  | 33d | 21d |  | RD10 - Basil | 8h |  |  |
| 588 | 1.5.3.6.1.6.1 | UI Development |  | 1d | 2017-05-31 | 2017-05-31 |  |  |  | 33d |  |  |  |  |  |  |
| 589 | 1.5.3.6.1.6.2 | Navigation |  | 1d | 2017-05-31 | 2017-05-31 |  |  |  | 33d |  |  |  |  |  |  |
| 590 | 1.5.3.6.1.6.3 | Business Logic |  | 1d | 2017-05-31 | 2017-05-31 |  |  |  | 33d |  |  |  |  |  |  |
| 591 | 1.5.3.6.1.7 | Ux UI Review |  | 1d | 2017-06-29 | 2017-06-29 |  |  |  | 12d | 0d | start no earlier than 2017-06-29 | UX - Chethana | 8h |  |  |
| 592 | 1.5.3.6.1.8 | Sanity Test Cases |  | 1d | 2017-06-19 | 2017-06-19 |  |  |  | 21d |  | start no earlier than 2017-06-19 | UQ - Lalit Kumar Jha [10%] | 0.8h |  |  |
| 593 | 1.5.3.6.1.9 | Sanity Testing |  | 1d | 2017-06-30 | 2017-06-30 | 586, 587 |  |  | 12d |  |  | RQA - Sharath Shet [50%]; UQ - Lalit Kumar Jha [50%] | 8h |  |  |
| 594 | 1.5.3.6.1.10 | Code Review |  | 1d | 2017-06-30 | 2017-06-30 | 586, 587 |  |  | 12d |  |  | RT - Debarghya Das [50%] | 4h |  |  |
| 595 | 1.5.3.6.1.11 | Demo / acceptance test |  | 1d | 2017-06-30 | 2017-06-30 | 591 |  |  | 12d |  |  | UO Rob Plummer | 8h |  |  |
| 596 | 1.5.3.7 | **(Investig:Social Work Contacts) Auto Save** |  | 28d | 2017-05-31 A | 2017-07-07 |  | 8% | 25.67d | 7d |  |  |  | 68.8h | 8h |  |
| 597 | 1.5.3.7.1 | **Development** |  | 28d | 2017-05-31 A | 2017-07-07 |  | 8% | 25.67d | 7d |  |  |  | 68.8h | 8h |  |
| 598 | 1.5.3.7.1.1 | User Story Defined | milestone | 0d | 2017-06-19 | 2017-06-19 |  |  |  | 21d |  | finish no earlier than 2017-06-19 | UR - Dhanu |  |  |  |
| 599 | 1.5.3.7.1.2 | Prototype Wireframe | milestone | 0d | 2017-06-19 A | 2017-06-19 A |  | 100% |  |  |  | finish no earlier than 2017-06-19 | UX - Chethana |  |  | Not required |
| 600 | 1.5.3.7.1.3 | User story review with developer |  | 1d | 2017-06-19 | 2017-06-19 |  |  |  | 21d |  | finish no earlier than 2017-06-19 | UR - Dhanu | 8h |  |  |
| 601 | 1.5.3.7.1.4 | Wireframe walkthru with Developer |  | 1d | 2017-06-19 A | 2017-06-19 A |  | 100% |  |  |  | finish no earlier than 2017-06-19 | UX - Chethana | 8h | 8h | Not required |
| 602 | 1.5.3.7.1.5 | Coding Backend |  | 2d | 2017-07-03 | 2017-07-04 |  |  |  | 9d | 0d | start no earlier than 2017-07-03 | RD4 - Mahmooda | 16h |  |  |
| 603 | 1.5.3.7.1.6 | **Coding Frontend** |  | 1d | 2017-05-31 | 2017-05-31 |  |  |  | 33d | 24d |  | RD10 - Basil | 8h |  |  |
| 604 | 1.5.3.7.1.6.1 | UI Development |  | 1d | 2017-05-31 | 2017-05-31 |  |  |  | 33d |  |  |  |  |  |  |
| 605 | 1.5.3.7.1.6.2 | Navigation |  | 1d | 2017-05-31 | 2017-05-31 |  |  |  | 33d |  |  |  |  |  |  |
| 606 | 1.5.3.7.1.6.3 | Business Logic |  | 1d | 2017-05-31 | 2017-05-31 |  |  |  | 33d |  |  |  |  |  |  |
| 607 | 1.5.3.7.1.7 | Ux UI Review |  | 1d | 2017-07-06 | 2017-07-06 |  |  |  | 7d | 0d | start no earlier than 2017-07-06 | UX - Chethana | 8h |  |  |
| 608 | 1.5.3.7.1.8 | Sanity Test Cases |  | 1d | 2017-06-19 | 2017-06-19 |  |  |  | 21d |  | start no earlier than 2017-06-19 | UQ - Lalit Kumar Jha [10%] | 0.8h |  |  |
| 609 | 1.5.3.7.1.9 | Sanity Testing |  | 1d | 2017-07-05 | 2017-07-05 | 602, 603 |  |  | 9d |  | start no earlier than 2017-07-03 | RQA - Sharath Shet [50%]; UQ - Lalit Kumar Jha [50%] | 8h |  |  |
| 610 | 1.5.3.7.1.10 | Code Review |  | 1d | 2017-07-05 | 2017-07-05 | 602, 603 |  |  | 9d |  |  | RT - Debarghya Das [50%] | 4h |  |  |
| 611 | 1.5.3.7.1.11 | Demo / acceptance test |  | 1d | 2017-07-07 | 2017-07-07 | 607 |  |  | 7d |  |  | UO Rob Plummer | 8h |  |  |

Notes:
- 580: Text2: TBD
- 582: Text2: User Story, Design Notes (no design notes for stubbed out User Stories)
- 583: Text2: Full interactive prototype delivered
- 596: Text2: TBD
- 598: Text2: User Story, Design Notes (no design notes for stubbed out User Stories)
- 599: Text2: Full interactive prototype delivered

| ID | WBS | Task | Type | Duration | Start | Finish | Predecessors | Complete | Remaining | Total slack | Free slack | Constraint | Resources | Work |
| --- | --- | --- | --- | --- | --- | --- | --- | --- | --- | --- | --- | --- | --- | --- |
| 612 | 1.5.3.8 | **(Investig:Safety Assessment) List** |  | 19d | 2017-05-31 A | 2017-06-26 |  |  | 19d | 16d |  |  |  | 64.8h |
| 613 | 1.5.3.8.1 | **Development** |  | 19d | 2017-05-31 A | 2017-06-26 |  |  | 19d | 16d |  |  |  | 64.8h |
| 614 | 1.5.3.8.1.1 | User Story Defined | milestone | 0d | 2017-06-16 A | 2017-06-16 A |  | 100% |  |  |  | finish no earlier than 2017-06-16 | UR - Dhanu |  |
| 615 | 1.5.3.8.1.2 | Prototype Wireframe | milestone | 0d | 2017-06-16 A | 2017-06-16 A |  | 100% |  |  |  | finish no earlier than 2017-06-16 | UX - Chethana |  |
| 616 | 1.5.3.8.1.3 | User story review with developer |  | 1d | 2017-06-16 | 2017-06-16 |  |  |  | 22d |  | start no earlier than 2017-06-16 | UR - Dhanu | 8h |
| 617 | 1.5.3.8.1.4 | Wireframe walkthru with Developer |  | 1d | 2017-06-16 | 2017-06-16 |  |  |  | 22d |  | start no earlier than 2017-06-16 | UX - Chethana | 8h |
| 618 | 1.5.3.8.1.5 | Coding Backend |  | 1d | 2017-06-21 | 2017-06-21 |  |  |  | 17d | 0d | start no earlier than 2017-06-21 | UD3 - Miju Mathew | 8h |
| 619 | 1.5.3.8.1.6 | **Coding Frontend** |  | 1d | 2017-05-31 | 2017-05-31 |  |  |  | 32d | 15d |  | UD1 - Ankit Kumar | 8h |
| 620 | 1.5.3.8.1.6.1 | UI Development |  | 1d | 2017-05-31 | 2017-05-31 |  |  |  | 32d |  |  |  |  |
| 621 | 1.5.3.8.1.6.2 | Navigation |  | 1d | 2017-05-31 | 2017-05-31 |  |  |  | 32d |  |  |  |  |
| 622 | 1.5.3.8.1.6.3 | Business Logic |  | 1d | 2017-05-31 | 2017-05-31 |  |  |  | 32d |  |  |  |  |
| 623 | 1.5.3.8.1.7 | Ux UI Review |  | 1d | 2017-06-21 | 2017-06-21 |  |  |  | 19d |  | start no earlier than 2017-06-21 | UX - Chethana | 8h |
| 624 | 1.5.3.8.1.8 | Sanity Test Cases |  | 1d | 2017-06-16 | 2017-06-16 |  |  |  | 22d |  | start no earlier than 2017-06-16 | UQ - Lalit Kumar Jha [10%] | 0.8h |
| 625 | 1.5.3.8.1.9 | Sanity Testing |  | 2d | 2017-06-22 | 2017-06-23 | 618, 619 |  |  | 17d |  |  | UQ - Lalit Kumar Jha [50%]; RQA - Sharath Shet [50%] | 12h |
| 626 | 1.5.3.8.1.10 | Code Review |  | 1d | 2017-06-22 | 2017-06-22 | 618, 619 |  |  | 18d |  |  | RT - Debarghya Das [50%] | 4h |
| 627 | 1.5.3.8.1.11 | Demo / acceptance test |  | 1d | 2017-06-26 | 2017-06-26 |  |  |  | 16d |  | start no earlier than 2017-06-26 | UO Rob Plummer | 8h |
| 628 | 1.5.3.9 | **(Investig:Safety Assessment) Create Safety Assessment** |  | 19d | 2017-05-31 A | 2017-06-26 |  |  | 19d | 16d |  |  |  | 60.8h |
| 629 | 1.5.3.9.1 | **Development** |  | 19d | 2017-05-31 A | 2017-06-26 |  |  | 19d | 16d |  |  |  | 60.8h |
| 630 | 1.5.3.9.1.1 | User Story Defined | milestone | 0d | 2017-06-16 A | 2017-06-16 A |  | 100% |  |  |  | finish no earlier than 2017-06-16 | UR - Dhanu |  |
| 631 | 1.5.3.9.1.2 | Prototype Wireframe | milestone | 0d | 2017-06-16 A | 2017-06-16 A |  | 100% |  |  |  | finish no earlier than 2017-06-16 | UX - Chethana |  |
| 632 | 1.5.3.9.1.3 | User story review with developer |  | 1d | 2017-06-16 | 2017-06-16 |  |  |  | 22d |  | start no earlier than 2017-06-16 | UR - Dhanu | 8h |
| 633 | 1.5.3.9.1.4 | Wireframe walkthru with Developer |  | 1d | 2017-06-16 | 2017-06-16 |  |  |  | 22d |  | start no earlier than 2017-06-16 | UX - Chethana | 8h |
| 634 | 1.5.3.9.1.5 | Coding Backend |  | 1d | 2017-06-22 | 2017-06-22 |  |  |  | 16d | 0d | start no earlier than 2017-06-22 | UD3 - Miju Mathew | 8h |
| 635 | 1.5.3.9.1.6 | **Coding Frontend** |  | 1d | 2017-05-31 | 2017-05-31 |  |  |  | 32d | 16d |  | UD1 - Ankit Kumar | 8h |
| 636 | 1.5.3.9.1.6.1 | UI Development |  | 1d | 2017-05-31 | 2017-05-31 |  |  |  | 32d |  |  |  |  |
| 637 | 1.5.3.9.1.6.2 | Navigation |  | 1d | 2017-05-31 | 2017-05-31 |  |  |  | 32d |  |  |  |  |
| 638 | 1.5.3.9.1.6.3 | Business Logic |  | 1d | 2017-05-31 | 2017-05-31 |  |  |  | 32d |  |  |  |  |
| 639 | 1.5.3.9.1.7 | Ux UI Review |  | 1d | 2017-06-22 | 2017-06-22 |  |  |  | 18d |  | start no earlier than 2017-06-22 | UX - Chethana | 8h |
| 640 | 1.5.3.9.1.8 | Sanity Test Cases |  | 1d | 2017-06-16 | 2017-06-16 |  |  |  | 22d |  | start no earlier than 2017-06-16 | UQ - Lalit Kumar Jha [10%] | 0.8h |
| 641 | 1.5.3.9.1.9 | Sanity Testing |  | 1d | 2017-06-23 | 2017-06-23 | 634, 635 |  |  | 17d |  |  | UQ - Lalit Kumar Jha [50%]; RQA - Sharath Shet [50%] | 8h |
| 642 | 1.5.3.9.1.10 | Code Review |  | 1d | 2017-06-23 | 2017-06-23 | 634, 635 |  |  | 16d | 0d |  | RT - Debarghya Das [50%] | 4h |
| 643 | 1.5.3.9.1.11 | Demo / acceptance test |  | 1d | 2017-06-26 | 2017-06-26 | 642 |  |  | 16d |  |  | UO Rob Plummer | 8h |

Notes:
- 612: Text2: TBD
- 614: Text2: User Story, Design Notes (no design notes for stubbed out User Stories)
- 615: Text2: Full interactive prototype delivered
- 628: Text2: TBD
- 630: Text2: User Story, Design Notes (no design notes for stubbed out User Stories)
- 631: Text2: Full interactive prototype delivered

| ID | WBS | Task | Type | Duration | Start | Finish | Predecessors | Complete | Remaining | Total slack | Free slack | Constraint | Resources | Work |
| --- | --- | --- | --- | --- | --- | --- | --- | --- | --- | --- | --- | --- | --- | --- |
| 644 | 1.5.3.10 | **(Investig:Safety Assessment) Select Participants - Caregiver** |  | 20d | 2017-05-31 A | 2017-06-27 |  |  | 20d | 15d |  |  |  | 60.8h |
| 645 | 1.5.3.10.1 | **Development** |  | 20d | 2017-05-31 A | 2017-06-27 |  |  | 20d | 15d |  |  |  | 60.8h |
| 646 | 1.5.3.10.1.1 | User Story Defined | milestone | 0d | 2017-06-16 A | 2017-06-16 A |  | 100% |  |  |  | finish no earlier than 2017-06-16 | UR - Dhanu |  |
| 647 | 1.5.3.10.1.2 | Prototype Wireframe | milestone | 0d | 2017-06-16 A | 2017-06-16 A |  | 100% |  |  |  | finish no earlier than 2017-06-16 | UX - Chethana |  |
| 648 | 1.5.3.10.1.3 | User story review with developer |  | 1d | 2017-06-16 | 2017-06-16 |  |  |  | 22d |  | start no earlier than 2017-06-16 | UR - Dhanu | 8h |
| 649 | 1.5.3.10.1.4 | Wireframe walkthru with Developer |  | 1d | 2017-06-16 | 2017-06-16 |  |  |  | 22d |  | start no earlier than 2017-06-16 | UX - Chethana | 8h |
| 650 | 1.5.3.10.1.5 | Coding Backend |  | 1d | 2017-06-23 | 2017-06-23 |  |  |  | 15d | 0d | start no earlier than 2017-06-23 | UD3 - Miju Mathew | 8h |
| 651 | 1.5.3.10.1.6 | **Coding Frontend** |  | 1d | 2017-05-31 | 2017-05-31 |  |  |  | 32d | 17d |  | UD1 - Ankit Kumar | 8h |
| 652 | 1.5.3.10.1.6.1 | UI Development |  | 1d | 2017-05-31 | 2017-05-31 |  |  |  | 32d |  |  |  |  |
| 653 | 1.5.3.10.1.6.2 | Navigation |  | 1d | 2017-05-31 | 2017-05-31 |  |  |  | 32d |  |  |  |  |
| 654 | 1.5.3.10.1.6.3 | Business Logic |  | 1d | 2017-05-31 | 2017-05-31 |  |  |  | 32d |  |  |  |  |
| 655 | 1.5.3.10.1.7 | Ux UI Review |  | 1d | 2017-06-23 | 2017-06-23 |  |  |  | 17d |  | start no earlier than 2017-06-23 | UX - Chethana | 8h |
| 656 | 1.5.3.10.1.8 | Sanity Test Cases |  | 1d | 2017-06-16 | 2017-06-16 |  |  |  | 22d |  | start no earlier than 2017-06-16 | UQ - Lalit Kumar Jha [10%] | 0.8h |
| 657 | 1.5.3.10.1.9 | Sanity Testing |  | 1d | 2017-06-26 | 2017-06-26 | 650, 651 |  |  | 16d |  |  | UQ - Lalit Kumar Jha [50%]; RQA - Sharath Shet [50%] | 8h |
| 658 | 1.5.3.10.1.10 | Code Review |  | 1d | 2017-06-26 | 2017-06-26 | 650, 651 |  |  | 15d | 0d |  | RT - Debarghya Das [50%] | 4h |
| 659 | 1.5.3.10.1.11 | Demo / acceptance test |  | 1d | 2017-06-27 | 2017-06-27 | 658 |  |  | 15d |  |  | UO Rob Plummer | 8h |
| 660 | 1.5.3.11 | **(Investig:Safety Assessment) Select Participants - Children** |  | 20d | 2017-05-31 A | 2017-06-27 |  |  | 20d | 15d |  |  |  | 60.8h |
| 661 | 1.5.3.11.1 | **Development** |  | 20d | 2017-05-31 A | 2017-06-27 |  |  | 20d | 15d |  |  |  | 60.8h |
| 662 | 1.5.3.11.1.1 | User Story Defined | milestone | 0d | 2017-06-16 A | 2017-06-16 A |  | 100% |  |  |  | finish no earlier than 2017-06-16 | UR - Dhanu |  |
| 663 | 1.5.3.11.1.2 | Prototype Wireframe | milestone | 0d | 2017-06-16 A | 2017-06-16 A |  | 100% |  |  |  | finish no earlier than 2017-06-16 | UX - Chethana |  |
| 664 | 1.5.3.11.1.3 | User story review with developer |  | 1d | 2017-06-16 | 2017-06-16 |  |  |  | 22d |  | start no earlier than 2017-06-16 | UR - Dhanu | 8h |
| 665 | 1.5.3.11.1.4 | Wireframe walkthru with Developer |  | 1d | 2017-06-16 | 2017-06-16 |  |  |  | 22d |  | start no earlier than 2017-06-16 | UX - Chethana | 8h |
| 666 | 1.5.3.11.1.5 | Coding Backend |  | 1d | 2017-06-23 | 2017-06-23 |  |  |  | 15d | 0d | start no earlier than 2017-06-23 | UD3 - Miju Mathew | 8h |
| 667 | 1.5.3.11.1.6 | **Coding Frontend** |  | 1d | 2017-05-31 | 2017-05-31 |  |  |  | 32d | 17d |  | UD1 - Ankit Kumar | 8h |
| 668 | 1.5.3.11.1.6.1 | UI Development |  | 1d | 2017-05-31 | 2017-05-31 |  |  |  | 32d |  |  |  |  |
| 669 | 1.5.3.11.1.6.2 | Navigation |  | 1d | 2017-05-31 | 2017-05-31 |  |  |  | 32d |  |  |  |  |
| 670 | 1.5.3.11.1.6.3 | Business Logic |  | 1d | 2017-05-31 | 2017-05-31 |  |  |  | 32d |  |  |  |  |
| 671 | 1.5.3.11.1.7 | Ux UI Review |  | 1d | 2017-06-23 | 2017-06-23 |  |  |  | 17d |  | start no earlier than 2017-06-23 | UX - Chethana | 8h |
| 672 | 1.5.3.11.1.8 | Sanity Test Cases |  | 1d | 2017-06-16 | 2017-06-16 |  |  |  | 22d |  | start no earlier than 2017-06-16 | UQ - Lalit Kumar Jha [10%] | 0.8h |
| 673 | 1.5.3.11.1.9 | Sanity Testing |  | 1d | 2017-06-26 | 2017-06-26 | 666, 667 |  |  | 16d |  |  | UQ - Lalit Kumar Jha [50%]; RQA - Sharath Shet [50%] | 8h |
| 674 | 1.5.3.11.1.10 | Code Review |  | 1d | 2017-06-26 | 2017-06-26 | 666, 667 |  |  | 15d | 0d |  | RT - Debarghya Das [50%] | 4h |
| 675 | 1.5.3.11.1.11 | Demo / acceptance test |  | 1d | 2017-06-27 | 2017-06-27 | 674 |  |  | 15d |  |  | UO Rob Plummer | 8h |

Notes:
- 644: Text2: TBD
- 646: Text2: User Story, Design Notes (no design notes for stubbed out User Stories)
- 647: Text2: Full interactive prototype delivered
- 660: Text2: TBD
- 662: Text2: User Story, Design Notes (no design notes for stubbed out User Stories)
- 663: Text2: Full interactive prototype delivered

| ID | WBS | Task | Type | Duration | Start | Finish | Predecessors | Complete | Remaining | Total slack | Free slack | Constraint | Resources | Work |
| --- | --- | --- | --- | --- | --- | --- | --- | --- | --- | --- | --- | --- | --- | --- |
| 676 | 1.5.3.12 | **(Investig:Safety Assessment) Workflow - Basic Details** |  | 23d | 2017-05-31 A | 2017-06-30 |  |  | 23d | 12d |  |  |  | 60.8h |
| 677 | 1.5.3.12.1 | **Development** |  | 23d | 2017-05-31 A | 2017-06-30 |  |  | 23d | 12d |  |  |  | 60.8h |
| 678 | 1.5.3.12.1.1 | User Story Defined | milestone | 0d | 2017-06-16 A | 2017-06-16 A |  | 100% |  |  |  | finish no earlier than 2017-06-16 | UR - Dhanu |  |
| 679 | 1.5.3.12.1.2 | Prototype Wireframe | milestone | 0d | 2017-06-16 A | 2017-06-16 A |  | 100% |  |  |  | finish no earlier than 2017-06-16 | UX - Chethana |  |
| 680 | 1.5.3.12.1.3 | User story review with developer |  | 1d | 2017-06-16 | 2017-06-16 |  |  |  | 22d |  | start no earlier than 2017-06-16 | UR - Dhanu | 8h |
| 681 | 1.5.3.12.1.4 | Wireframe walkthru with Developer |  | 1d | 2017-06-16 | 2017-06-16 |  |  |  | 22d |  | start no earlier than 2017-06-16 | UX - Chethana | 8h |
| 682 | 1.5.3.12.1.5 | Coding Backend |  | 1d | 2017-06-26 | 2017-06-26 |  |  |  | 15d | 0d | start no earlier than 2017-06-26 | UD3 - Miju Mathew | 8h |
| 683 | 1.5.3.12.1.6 | **Coding Frontend** |  | 1d | 2017-05-31 | 2017-05-31 |  |  |  | 33d | 18d |  | UD1 - Ankit Kumar | 8h |
| 684 | 1.5.3.12.1.6.1 | UI Development |  | 1d | 2017-05-31 | 2017-05-31 |  |  |  | 33d |  |  |  |  |
| 685 | 1.5.3.12.1.6.2 | Navigation |  | 1d | 2017-05-31 | 2017-05-31 |  |  |  | 33d |  |  |  |  |
| 686 | 1.5.3.12.1.6.3 | Business Logic |  | 1d | 2017-05-31 | 2017-05-31 |  |  |  | 33d |  |  |  |  |
| 687 | 1.5.3.12.1.7 | Ux UI Review |  | 1d | 2017-06-28 | 2017-06-28 |  |  |  | 14d |  | start no earlier than 2017-06-28 | UX - Chethana | 8h |
| 688 | 1.5.3.12.1.8 | Sanity Test Cases |  | 1d | 2017-06-16 | 2017-06-16 |  |  |  | 22d |  | start no earlier than 2017-06-16 | UQ - Lalit Kumar Jha [10%] | 0.8h |
| 689 | 1.5.3.12.1.9 | Sanity Testing |  | 1d | 2017-06-27 | 2017-06-27 | 682, 683 |  |  | 15d |  |  | UQ - Lalit Kumar Jha [50%]; RQA - Sharath Shet [50%] | 8h |
| 690 | 1.5.3.12.1.10 | Code Review |  | 1d | 2017-06-27 | 2017-06-27 | 682, 683 |  |  | 15d |  |  | RT - Debarghya Das [50%] | 4h |
| 691 | 1.5.3.12.1.11 | Demo / acceptance test |  | 1d | 2017-06-30 | 2017-06-30 |  |  |  | 12d |  | start no earlier than 2017-06-30 | UO Rob Plummer | 8h |
| 692 | 1.5.3.13 | **(Investig:Safety Assessment) Workflow - Child Vulnerability** |  | 24d | 2017-05-31 A | 2017-07-03 |  |  | 24d | 11d |  |  |  | 60.8h |
| 693 | 1.5.3.13.1 | **Development** |  | 24d | 2017-05-31 A | 2017-07-03 |  |  | 24d | 11d |  |  |  | 60.8h |
| 694 | 1.5.3.13.1.1 | User Story Defined | milestone | 0d | 2017-06-16 A | 2017-06-16 A |  | 100% |  |  |  | finish no earlier than 2017-06-16 | UR - Dhanu |  |
| 695 | 1.5.3.13.1.2 | Prototype Wireframe | milestone | 0d | 2017-06-16 A | 2017-06-16 A |  | 100% |  |  |  | finish no earlier than 2017-06-16 | UX - Chethana |  |
| 696 | 1.5.3.13.1.3 | User story review with developer |  | 1d | 2017-06-16 | 2017-06-16 |  |  |  | 22d |  | start no earlier than 2017-06-16 | UR - Dhanu | 8h |
| 697 | 1.5.3.13.1.4 | Wireframe walkthru with Developer |  | 1d | 2017-06-16 | 2017-06-16 |  |  |  | 22d |  | start no earlier than 2017-06-16 | UX - Chethana | 8h |
| 698 | 1.5.3.13.1.5 | Coding Backend |  | 1d | 2017-06-28 | 2017-06-28 |  |  |  | 13d | 0d | start no earlier than 2017-06-28 | UD3 - Miju Mathew | 8h |
| 699 | 1.5.3.13.1.6 | **Coding Frontend** |  | 1d | 2017-05-31 | 2017-05-31 |  |  |  | 33d | 20d |  | UD1 - Ankit Kumar | 8h |
| 700 | 1.5.3.13.1.6.1 | UI Development |  | 1d | 2017-05-31 | 2017-05-31 |  |  |  | 33d |  |  |  |  |
| 701 | 1.5.3.13.1.6.2 | Navigation |  | 1d | 2017-05-31 | 2017-05-31 |  |  |  | 33d |  |  |  |  |
| 702 | 1.5.3.13.1.6.3 | Business Logic |  | 1d | 2017-05-31 | 2017-05-31 |  |  |  | 33d |  |  |  |  |
| 703 | 1.5.3.13.1.7 | Ux UI Review |  | 1d | 2017-06-30 | 2017-06-30 |  |  |  | 12d |  | start no earlier than 2017-06-30 | UX - Chethana | 8h |
| 704 | 1.5.3.13.1.8 | Sanity Test Cases |  | 1d | 2017-06-16 | 2017-06-16 |  |  |  | 22d |  | start no earlier than 2017-06-16 | UQ - Lalit Kumar Jha [10%] | 0.8h |
| 705 | 1.5.3.13.1.9 | Sanity Testing |  | 1d | 2017-06-30 | 2017-06-30 |  |  |  | 12d |  | start no earlier than 2017-06-30 | UQ - Lalit Kumar Jha [50%]; RQA - Sharath Shet [50%] | 8h |
| 706 | 1.5.3.13.1.10 | Code Review |  | 1d | 2017-06-29 | 2017-06-29 | 698, 699 |  |  | 13d |  |  | RT - Debarghya Das [50%] | 4h |
| 707 | 1.5.3.13.1.11 | Demo / acceptance test |  | 1d | 2017-07-03 | 2017-07-03 |  |  |  | 11d |  | start no earlier than 2017-07-03 | UO Rob Plummer | 8h |

Notes:
- 676: Text2: TBD
- 678: Text2: User Story, Design Notes (no design notes for stubbed out User Stories)
- 679: Text2: Full interactive prototype delivered
- 692: Text2: TBD
- 694: Text2: User Story, Design Notes (no design notes for stubbed out User Stories)
- 695: Text2: Full interactive prototype delivered

| ID | WBS | Task | Type | Duration | Start | Finish | Predecessors | Complete | Remaining | Total slack | Free slack | Constraint | Resources | Work |
| --- | --- | --- | --- | --- | --- | --- | --- | --- | --- | --- | --- | --- | --- | --- |
| 708 | 1.5.3.14 | **(Investig:Safety Assessment) Workflow - Danger** |  | 24d | 2017-05-31 A | 2017-07-03 |  |  | 24d | 11d |  |  |  | 68.8h |
| 709 | 1.5.3.14.1 | **Development** |  | 24d | 2017-05-31 A | 2017-07-03 |  |  | 24d | 11d |  |  |  | 68.8h |
| 710 | 1.5.3.14.1.1 | User Story Defined | milestone | 0d | 2017-06-16 A | 2017-06-16 A |  | 100% |  |  |  | finish no earlier than 2017-06-16 | UR - Dhanu |  |
| 711 | 1.5.3.14.1.2 | Prototype Wireframe | milestone | 0d | 2017-06-16 A | 2017-06-16 A |  | 100% |  |  |  | finish no earlier than 2017-06-16 | UX - Chethana |  |
| 712 | 1.5.3.14.1.3 | User story review with developer |  | 1d | 2017-06-16 | 2017-06-16 |  |  |  | 22d |  | start no earlier than 2017-06-16 | UR - Dhanu | 8h |
| 713 | 1.5.3.14.1.4 | Wireframe walkthru with Developer |  | 1d | 2017-06-16 | 2017-06-16 |  |  |  | 22d |  | start no earlier than 2017-06-16 | UX - Chethana | 8h |
| 714 | 1.5.3.14.1.5 | Coding Backend |  | 2d | 2017-06-29 | 2017-06-30 |  |  |  | 11d | 0d | start no earlier than 2017-06-29 | UD3 - Miju Mathew | 16h |
| 715 | 1.5.3.14.1.6 | **Coding Frontend** |  | 1d | 2017-05-31 | 2017-05-31 |  |  |  | 33d | 22d |  | UD1 - Ankit Kumar | 8h |
| 716 | 1.5.3.14.1.6.1 | UI Development |  | 1d | 2017-05-31 | 2017-05-31 |  |  |  | 33d |  |  |  |  |
| 717 | 1.5.3.14.1.6.2 | Navigation |  | 1d | 2017-05-31 | 2017-05-31 |  |  |  | 33d |  |  |  |  |
| 718 | 1.5.3.14.1.6.3 | Business Logic |  | 1d | 2017-05-31 | 2017-05-31 |  |  |  | 33d |  |  |  |  |
| 719 | 1.5.3.14.1.7 | Ux UI Review |  | 1d | 2017-06-30 | 2017-06-30 |  |  |  | 12d |  | finish no earlier than 2017-06-30 | UX - Chethana | 8h |
| 720 | 1.5.3.14.1.8 | Sanity Test Cases |  | 1d | 2017-06-16 | 2017-06-16 |  |  |  | 22d |  | start no earlier than 2017-06-16 | UQ - Lalit Kumar Jha [10%] | 0.8h |
| 721 | 1.5.3.14.1.9 | Sanity Testing |  | 1d | 2017-06-30 | 2017-06-30 |  |  |  | 12d |  | start no earlier than 2017-06-30 | UQ - Lalit Kumar Jha [50%]; RQA - Sharath Shet [50%] | 8h |
| 722 | 1.5.3.14.1.10 | Code Review |  | 1d | 2017-07-03 | 2017-07-03 | 714, 715 |  |  | 11d |  |  | RT - Debarghya Das [50%] | 4h |
| 723 | 1.5.3.14.1.11 | Demo / acceptance test |  | 1d | 2017-07-03 | 2017-07-03 |  |  |  | 11d |  | start no earlier than 2017-07-03 | UO Rob Plummer | 8h |
| 724 | 1.5.3.15 | **(Investig:Safety Assessment) Workflow - Strength / Actions** |  | 26d | 2017-05-31 A | 2017-07-05 |  |  | 26d | 9d |  |  |  | 60.8h |
| 725 | 1.5.3.15.1 | **Development** |  | 26d | 2017-05-31 A | 2017-07-05 |  |  | 26d | 9d |  |  |  | 60.8h |
| 726 | 1.5.3.15.1.1 | User Story Defined | milestone | 0d | 2017-06-16 A | 2017-06-16 A |  | 100% |  |  |  | finish no earlier than 2017-06-16 | UR - Dhanu |  |
| 727 | 1.5.3.15.1.2 | Prototype Wireframe | milestone | 0d | 2017-06-16 A | 2017-06-16 A |  | 100% |  |  |  | finish no earlier than 2017-06-16 | UX - Chethana |  |
| 728 | 1.5.3.15.1.3 | User story review with developer |  | 1d | 2017-06-16 | 2017-06-16 |  |  |  | 22d |  | start no earlier than 2017-06-16 | UR - Dhanu | 8h |
| 729 | 1.5.3.15.1.4 | Wireframe walkthru with Developer |  | 1d | 2017-06-16 | 2017-06-16 |  |  |  | 22d |  | start no earlier than 2017-06-16 | UX - Chethana | 8h |
| 730 | 1.5.3.15.1.5 | Coding Backend |  | 1d | 2017-06-30 | 2017-06-30 |  |  |  | 11d | 0d | start no earlier than 2017-06-30 | UD3 - Miju Mathew | 8h |
| 731 | 1.5.3.15.1.6 | **Coding Frontend** |  | 1d | 2017-05-31 | 2017-05-31 |  |  |  | 33d | 22d |  | UD1 - Ankit Kumar | 8h |
| 732 | 1.5.3.15.1.6.1 | UI Development |  | 1d | 2017-05-31 | 2017-05-31 |  |  |  | 33d |  |  |  |  |
| 733 | 1.5.3.15.1.6.2 | Navigation |  | 1d | 2017-05-31 | 2017-05-31 |  |  |  | 33d |  |  |  |  |
| 734 | 1.5.3.15.1.6.3 | Business Logic |  | 1d | 2017-05-31 | 2017-05-31 |  |  |  | 33d |  |  |  |  |
| 735 | 1.5.3.15.1.7 | Ux UI Review |  | 1d | 2017-07-03 | 2017-07-03 |  |  |  | 11d |  | start no earlier than 2017-07-03 | UX - Chethana | 8h |
| 736 | 1.5.3.15.1.8 | Sanity Test Cases |  | 1d | 2017-06-16 | 2017-06-16 |  |  |  | 22d |  | start no earlier than 2017-06-16 | UQ - Lalit Kumar Jha [10%] | 0.8h |
| 737 | 1.5.3.15.1.9 | Sanity Testing |  | 1d | 2017-07-03 | 2017-07-03 | 730, 731 |  |  | 11d |  | start no earlier than 2017-06-30 | UQ - Lalit Kumar Jha [50%]; RQA - Sharath Shet [50%] | 8h |
| 738 | 1.5.3.15.1.10 | Code Review |  | 1d | 2017-07-03 | 2017-07-03 | 730, 731 |  |  | 11d |  |  | RT - Debarghya Das [50%] | 4h |
| 739 | 1.5.3.15.1.11 | Demo / acceptance test |  | 1d | 2017-07-05 | 2017-07-05 |  |  |  | 9d |  | start no earlier than 2017-07-05 | UO Rob Plummer | 8h |

Notes:
- 708: Text2: TBD
- 710: Text2: User Story, Design Notes (no design notes for stubbed out User Stories)
- 711: Text2: Full interactive prototype delivered
- 724: Text2: TBD
- 726: Text2: User Story, Design Notes (no design notes for stubbed out User Stories)
- 727: Text2: Full interactive prototype delivered

| ID | WBS | Task | Type | Duration | Start | Finish | Predecessors | Complete | Remaining | Total slack | Free slack | Constraint | Resources | Work |
| --- | --- | --- | --- | --- | --- | --- | --- | --- | --- | --- | --- | --- | --- | --- |
| 740 | 1.5.3.16 | **(Investig:Safety Assessment) Workflow - Safety Interventions** |  | 26d | 2017-05-31 A | 2017-07-05 |  |  | 26d | 9d |  |  |  | 60.8h |
| 741 | 1.5.3.16.1 | **Development** |  | 26d | 2017-05-31 A | 2017-07-05 |  |  | 26d | 9d |  |  |  | 60.8h |
| 742 | 1.5.3.16.1.1 | User Story Defined | milestone | 0d | 2017-06-19 A | 2017-06-19 A |  | 100% |  |  |  | start no earlier than 2017-06-19 | UR - Dhanu |  |
| 743 | 1.5.3.16.1.2 | Prototype Wireframe | milestone | 0d | 2017-06-19 A | 2017-06-19 A |  | 100% |  |  |  | start no earlier than 2017-06-19 | UX - Chethana |  |
| 744 | 1.5.3.16.1.3 | User story review with developer |  | 1d | 2017-06-19 | 2017-06-19 |  |  |  | 21d |  | start no earlier than 2017-06-19 | UR - Dhanu | 8h |
| 745 | 1.5.3.16.1.4 | Wireframe walkthru with Developer |  | 1d | 2017-06-19 | 2017-06-19 |  |  |  | 21d |  | start no earlier than 2017-06-19 | UX - Chethana | 8h |
| 746 | 1.5.3.16.1.5 | Coding Backend |  | 1d | 2017-07-03 | 2017-07-03 |  |  |  | 10d | 0d | start no earlier than 2017-07-03 | UD3 - Miju Mathew | 8h |
| 747 | 1.5.3.16.1.6 | **Coding Frontend** |  | 1d | 2017-05-31 | 2017-05-31 |  |  |  | 33d | 23d |  | UD1 - Ankit Kumar | 8h |
| 748 | 1.5.3.16.1.6.1 | UI Development |  | 1d | 2017-05-31 | 2017-05-31 |  |  |  | 33d |  |  |  |  |
| 749 | 1.5.3.16.1.6.2 | Navigation |  | 1d | 2017-05-31 | 2017-05-31 |  |  |  | 33d |  |  |  |  |
| 750 | 1.5.3.16.1.6.3 | Business Logic |  | 1d | 2017-05-31 | 2017-05-31 |  |  |  | 33d |  |  |  |  |
| 751 | 1.5.3.16.1.7 | Ux UI Review |  | 1d | 2017-07-05 | 2017-07-05 |  |  |  | 9d |  | start no earlier than 2017-07-05 | UX - Chethana | 8h |
| 752 | 1.5.3.16.1.8 | Sanity Test Cases |  | 1d | 2017-06-19 | 2017-06-19 |  |  |  | 21d |  | start no earlier than 2017-06-19 | UQ - Lalit Kumar Jha [10%] | 0.8h |
| 753 | 1.5.3.16.1.9 | Sanity Testing |  | 1d | 2017-07-04 | 2017-07-04 | 746, 747 |  |  | 10d |  |  | UQ - Lalit Kumar Jha [50%]; RQA - Sharath Shet [50%] | 8h |
| 754 | 1.5.3.16.1.10 | Code Review |  | 1d | 2017-07-04 | 2017-07-04 | 746, 747 |  |  | 10d |  |  | RT - Debarghya Das [50%] | 4h |
| 755 | 1.5.3.16.1.11 | Demo / acceptance test |  | 1d | 2017-07-05 | 2017-07-05 |  |  |  | 9d |  | start no earlier than 2017-07-05 | UO Rob Plummer | 8h |
| 756 | 1.5.3.17 | **(Investig:Safety Assessment) Workflow - Safety Decision** |  | 27d | 2017-05-31 A | 2017-07-06 |  |  | 27d | 8d |  |  |  | 60.8h |
| 757 | 1.5.3.17.1 | **Development** |  | 27d | 2017-05-31 A | 2017-07-06 |  |  | 27d | 8d |  |  |  | 60.8h |
| 758 | 1.5.3.17.1.1 | User Story Defined | milestone | 0d | 2017-06-19 A | 2017-06-19 A |  | 100% |  |  |  | start no earlier than 2017-06-19 | UR - Dhanu |  |
| 759 | 1.5.3.17.1.2 | Prototype Wireframe | milestone | 0d | 2017-06-19 A | 2017-06-19 A |  | 100% |  |  |  | start no earlier than 2017-06-19 | UX - Chethana |  |
| 760 | 1.5.3.17.1.3 | User story review with developer |  | 1d | 2017-06-19 | 2017-06-19 |  |  |  | 21d |  | start no earlier than 2017-06-19 | UR - Dhanu | 8h |
| 761 | 1.5.3.17.1.4 | Wireframe walkthru with Developer |  | 1d | 2017-06-19 | 2017-06-19 |  |  |  | 21d |  | start no earlier than 2017-06-19 | UX - Chethana | 8h |
| 762 | 1.5.3.17.1.5 | Coding Backend |  | 1d | 2017-07-04 | 2017-07-04 |  |  |  | 9d | 0d | start no earlier than 2017-07-04 | UD3 - Miju Mathew | 8h |
| 763 | 1.5.3.17.1.6 | **Coding Frontend** |  | 1d | 2017-05-31 | 2017-05-31 |  |  |  | 33d | 24d |  | UD1 - Ankit Kumar | 8h |
| 764 | 1.5.3.17.1.6.1 | UI Development |  | 1d | 2017-05-31 | 2017-05-31 |  |  |  | 33d |  |  |  |  |
| 765 | 1.5.3.17.1.6.2 | Navigation |  | 1d | 2017-05-31 | 2017-05-31 |  |  |  | 33d |  |  |  |  |
| 766 | 1.5.3.17.1.6.3 | Business Logic |  | 1d | 2017-05-31 | 2017-05-31 |  |  |  | 33d |  |  |  |  |
| 767 | 1.5.3.17.1.7 | Ux UI Review |  | 1d | 2017-07-05 | 2017-07-05 |  |  |  | 9d |  | start no earlier than 2017-07-05 | UX - Chethana | 8h |
| 768 | 1.5.3.17.1.8 | Sanity Test Cases |  | 1d | 2017-06-19 | 2017-06-19 |  |  |  | 21d |  | start no earlier than 2017-06-19 | UQ - Lalit Kumar Jha [10%] | 0.8h |
| 769 | 1.5.3.17.1.9 | Sanity Testing |  | 1d | 2017-07-05 | 2017-07-05 | 762, 763 |  |  | 9d |  | start no earlier than 2017-07-05 | UQ - Lalit Kumar Jha [50%]; RQA - Sharath Shet [50%] | 8h |
| 770 | 1.5.3.17.1.10 | Code Review |  | 1d | 2017-07-05 | 2017-07-05 | 762, 763 |  |  | 9d |  |  | RT - Debarghya Das [50%] | 4h |
| 771 | 1.5.3.17.1.11 | Demo / acceptance test |  | 1d | 2017-07-06 | 2017-07-06 |  |  |  | 8d |  | start no earlier than 2017-07-06 | UO Rob Plummer | 8h |

Notes:
- 740: Text2: TBD
- 742: Text2: User Story, Design Notes (no design notes for stubbed out User Stories)
- 743: Text2: Full interactive prototype delivered
- 756: Text2: TBD
- 758: Text2: User Story, Design Notes (no design notes for stubbed out User Stories)
- 759: Text2: Full interactive prototype delivered

| ID | WBS | Task | Type | Duration | Start | Finish | Predecessors | Complete | Remaining | Total slack | Free slack | Constraint | Resources | Work | Actual work |
| --- | --- | --- | --- | --- | --- | --- | --- | --- | --- | --- | --- | --- | --- | --- | --- |
| 772 | 1.5.3.18 | **(Investig:Safety Assessment) View Safety Assessment** |  | 28d | 2017-05-31 A | 2017-07-07 |  |  | 28d | 7d |  |  |  | 60.8h |  |
| 773 | 1.5.3.18.1 | **Development** |  | 28d | 2017-05-31 A | 2017-07-07 |  |  | 28d | 7d |  |  |  | 60.8h |  |
| 774 | 1.5.3.18.1.1 | User Story Defined | milestone | 0d | 2017-06-19 A | 2017-06-19 A |  | 100% |  |  |  | start no earlier than 2017-06-19 | UR - Dhanu |  |  |
| 775 | 1.5.3.18.1.2 | Prototype Wireframe | milestone | 0d | 2017-06-19 A | 2017-06-19 A |  | 100% |  |  |  | start no earlier than 2017-06-19 | UX - Chethana |  |  |
| 776 | 1.5.3.18.1.3 | User story review with developer |  | 1d | 2017-06-19 | 2017-06-19 |  |  |  | 21d |  | start no earlier than 2017-06-19 | UR - Dhanu | 8h |  |
| 777 | 1.5.3.18.1.4 | Wireframe walkthru with Developer |  | 1d | 2017-06-19 | 2017-06-19 |  |  |  | 21d |  | start no earlier than 2017-06-19 | UX - Chethana | 8h |  |
| 778 | 1.5.3.18.1.5 | Coding Backend |  | 1d | 2017-07-05 | 2017-07-05 |  |  |  | 8d | 0d | start no earlier than 2017-07-05 | UD3 - Miju Mathew | 8h |  |
| 779 | 1.5.3.18.1.6 | **Coding Frontend** |  | 1d | 2017-05-31 | 2017-05-31 |  |  |  | 33d | 25d |  | UD1 - Ankit Kumar | 8h |  |
| 780 | 1.5.3.18.1.6.1 | UI Development |  | 1d | 2017-05-31 | 2017-05-31 |  |  |  | 33d |  |  |  |  |  |
| 781 | 1.5.3.18.1.6.2 | Navigation |  | 1d | 2017-05-31 | 2017-05-31 |  |  |  | 33d |  |  |  |  |  |
| 782 | 1.5.3.18.1.6.3 | Business Logic |  | 1d | 2017-05-31 | 2017-05-31 |  |  |  | 33d |  |  |  |  |  |
| 783 | 1.5.3.18.1.7 | Ux UI Review |  | 1d | 2017-07-07 | 2017-07-07 |  |  |  | 7d |  | start no earlier than 2017-07-07 | UX - Chethana | 8h |  |
| 784 | 1.5.3.18.1.8 | Sanity Test Cases |  | 1d | 2017-06-19 | 2017-06-19 |  |  |  | 21d |  | start no earlier than 2017-06-19 | UQ - Lalit Kumar Jha [10%] | 0.8h |  |
| 785 | 1.5.3.18.1.9 | Sanity Testing |  | 1d | 2017-07-06 | 2017-07-06 | 778, 779 |  |  | 8d |  |  | UQ - Lalit Kumar Jha [50%]; RQA - Sharath Shet [50%] | 8h |  |
| 786 | 1.5.3.18.1.10 | Code Review |  | 1d | 2017-07-06 | 2017-07-06 | 778, 779 |  |  | 8d |  |  | RT - Debarghya Das [50%] | 4h |  |
| 787 | 1.5.3.18.1.11 | Demo / acceptance test |  | 1d | 2017-07-07 | 2017-07-07 |  |  |  | 7d |  | start no earlier than 2017-07-07 | UO Rob Plummer | 8h |  |
| 788 | 1.5.4 | **Sprint 3 - Acceptance** |  | 3d | 2017-07-07 | 2017-07-11 |  |  |  | 5d |  |  |  | 8h |  |
| 789 | 1.5.4.1 | Code Merge - Sprint 3 |  | 1d | 2017-07-07 | 2017-07-07 |  |  |  | 6d | 0d | start no earlier than 2017-07-07 |  |  |  |
| 790 | 1.5.4.2 | Integration Testing |  | 1d | 2017-07-10 | 2017-07-10 | 789 |  |  | 6d |  |  |  |  |  |
| 791 | 1.5.4.3 | Regression Testing of Sprint 2 - Unisys |  | 1d | 2017-07-10 | 2017-07-10 |  |  |  | 6d |  | start no earlier than 2017-07-10 |  |  |  |
| 792 | 1.5.4.4 | Acceptance Testing |  | 1d | 2017-07-10 | 2017-07-10 |  |  |  | 6d |  | start no earlier than 2017-07-10 | UO - Rob Plummer | 8h |  |
| 793 | 1.5.4.5 | Rework and Closure of all Identified defects |  | 3d | 2017-07-07 | 2017-07-11 |  |  |  | 5d |  | start no earlier than 2017-07-07 |  |  |  |
| 794 | 1.5.5 | Demo - Sprint 3 |  | 1d | 2017-07-11 | 2017-07-11 |  |  |  | 5d |  | start no earlier than 2017-07-11 |  |  |  |
| 795 | 1.6 | **Sprint 4** |  | 35d | 2017-05-31 A | 2017-07-18 |  |  | 34.91d | 4d |  |  |  | 2140h | 8h |
| 796 | 1.6.1 | **Planning and Definition** |  | 1d | 2017-05-31 | 2017-05-31 |  |  |  | 34d |  |  |  | 16h |  |
| 797 | 1.6.1.1 | Updated Project Plan V 4.0 |  | 1d | 2017-05-31 | 2017-05-31 |  |  |  | 34d |  |  | RP - Vineeth R S | 8h |  |
| 798 | 1.6.1.2 | Updated HLD V 4.0 |  | 1d | 2017-05-31 | 2017-05-31 |  |  |  | 34d |  |  | RA - Guruprasad K J | 8h |  |

Notes:
- 772: Text2: TBD
- 774: Text2: User Story, Design Notes (no design notes for stubbed out User Stories)
- 775: Text2: Full interactive prototype delivered

| ID | WBS | Task | Duration | Start | Finish | Predecessors | Remaining | Total slack | Free slack | Constraint | Resources | Work | Actual work | Text1 |
| --- | --- | --- | --- | --- | --- | --- | --- | --- | --- | --- | --- | --- | --- | --- |
| 799 | 1.6.2 | **Proof of Concept - Phase 2** | 10d | 2017-06-08 | 2017-06-21 |  |  | 19d |  |  |  |  |  |  |
| 800 | 1.6.2.1 | **Workflow Engine - jBPM** | 10d | 2017-06-08 | 2017-06-21 |  |  | 19d |  |  |  |  |  |  |
| 801 | 1.6.2.1.1 | Scope agreement / Requirements affirmation | 1d | 2017-06-08 | 2017-06-08 |  |  | 19d | 0d | finish no earlier than 2017-06-08 |  |  |  |  |
| 802 | 1.6.2.1.2 | Technical Solution Overview Template | 1d | 2017-06-09 | 2017-06-09 | 801 |  | 19d | 0d | start no earlier than 2017-06-09 |  |  |  | Reviewed by Raju or Rob |
| 803 | 1.6.2.1.3 | Development, Testing, Demo | 7d | 2017-06-12 | 2017-06-20 | 802 |  | 19d | 0d |  |  |  |  |  |
| 804 | 1.6.2.1.4 | Validation by Raju or designate | 1d | 2017-06-21 | 2017-06-21 | 803 |  | 19d |  | start no earlier than 2017-06-09 |  |  |  |  |
| 805 | 1.6.3 | **Client App Development** | 29d | 2017-05-31 A | 2017-07-10 |  | 28.92d | 6d |  |  |  | 2116h | 8h |  |
| 806 | 1.6.3.1 | **(Investig:CaseWorker Resources) Forms Library** | 9d | 2017-06-14 | 2017-06-26 |  |  | 16d |  |  |  | 68.8h |  |  |
| 807 | 1.6.3.1.1 | **Development** | 9d | 2017-06-14 | 2017-06-26 |  |  | 16d |  |  |  | 68.8h |  |  |
| 808 | 1.6.3.1.1.1 | User Story Defined | 1d | 2017-06-19 | 2017-06-19 |  |  | 21d |  | finish no earlier than 2017-06-19 | UR - Dhanu | 8h |  |  |
| 809 | 1.6.3.1.1.2 | Prototype Wireframe | 1d | 2017-06-19 | 2017-06-19 |  |  | 21d |  | finish no earlier than 2017-06-19 | UX - Chethana | 8h |  |  |
| 810 | 1.6.3.1.1.3 | User story review with developer | 1d | 2017-06-19 | 2017-06-19 |  |  | 21d |  | start no earlier than 2017-06-19 | UR - Dhanu | 8h |  |  |
| 811 | 1.6.3.1.1.4 | Wireframe walkthru with Developer | 1d | 2017-06-19 | 2017-06-19 |  |  | 21d |  | start no earlier than 2017-06-19 | UX - Chethana | 8h |  |  |
| 812 | 1.6.3.1.1.5 | Coding Backend | 1d | 2017-06-16 | 2017-06-16 | 199 |  | 21d | 0d |  |  |  |  |  |
| 813 | 1.6.3.1.1.6 | **Coding Frontend** | 1d | 2017-06-16 | 2017-06-16 | 199 |  | 21d | 0d |  | UD2 - Yuvaraj | 8h |  |  |
| 814 | 1.6.3.1.1.6.1 | UI Development | 1d | 2017-06-16 | 2017-06-16 |  |  | 21d |  |  |  |  |  |  |
| 815 | 1.6.3.1.1.6.2 | Navigation | 1d | 2017-06-16 | 2017-06-16 |  |  | 21d |  |  |  |  |  |  |
| 816 | 1.6.3.1.1.6.3 | Business Logic | 1d | 2017-06-16 | 2017-06-16 |  |  | 21d |  |  |  |  |  |  |
| 817 | 1.6.3.1.1.7 | Ux UI Review | 1d | 2017-06-23 | 2017-06-23 |  |  | 17d |  | start no earlier than 2017-06-23 | UX - Chethana | 8h |  |  |
| 818 | 1.6.3.1.1.8 | Sanity Test Cases | 1d | 2017-06-14 | 2017-06-14 |  |  | 23d | 7d | start no earlier than 2017-06-14 | UQ - Lalit Kumar Jha [10%] | 0.8h |  |  |
| 819 | 1.6.3.1.1.9 | Sanity Testing | 1d | 2017-06-19 | 2017-06-19 | 812, 813 |  | 21d |  |  | UQ - Lalit Kumar Jha [50%]; RQA - Sharath Shet [50%] | 8h |  |  |
| 820 | 1.6.3.1.1.10 | Code Review | 1d | 2017-06-19 | 2017-06-19 | 812, 813 |  | 21d |  |  | RT - Debarghya Das [50%] | 4h |  |  |
| 821 | 1.6.3.1.1.11 | Demo / acceptance test | 1d | 2017-06-26 | 2017-06-26 | 818 |  | 16d |  | start no earlier than 2017-06-26 | UO Rob Plummer | 8h |  |  |
| 822 | 1.6.3.2 | **(Investig:CaseWorker Resources) Calendar** | 11d | 2017-06-14 | 2017-06-28 |  |  | 14d |  |  |  | 72.8h |  |  |
| 823 | 1.6.3.2.1 | **Development** | 11d | 2017-06-14 | 2017-06-28 |  |  | 14d |  |  |  | 72.8h |  |  |
| 824 | 1.6.3.2.1.1 | User Story Defined | 1d | 2017-06-19 | 2017-06-19 |  |  | 21d |  | finish no earlier than 2017-06-19 | UR - Dhanu | 8h |  |  |
| 825 | 1.6.3.2.1.2 | Prototype Wireframe | 1d | 2017-06-19 | 2017-06-19 |  |  | 21d |  | finish no earlier than 2017-06-19 | UX - Chethana | 8h |  |  |
| 826 | 1.6.3.2.1.3 | User story review with developer | 1d | 2017-06-19 | 2017-06-19 |  |  | 21d |  | start no earlier than 2017-06-19 | UR - Dhanu | 8h |  |  |
| 827 | 1.6.3.2.1.4 | Wireframe walkthru with Developer | 1d | 2017-06-19 | 2017-06-19 |  |  | 21d |  | start no earlier than 2017-06-19 | UX - Chethana | 8h |  |  |
| 828 | 1.6.3.2.1.5 | Coding Backend | 1d | 2017-06-16 | 2017-06-16 | 199 |  | 20d | 0d |  |  |  |  |  |

Notes:
- 806: Text2: Stub
- 808: Text2: User Story, Design Notes (no design notes for stubbed out User Stories)
- 809: Text2: Full interactive prototype delivered
- 822: Text2: Stub
- 824: Text2: User Story, Design Notes (no design notes for stubbed out User Stories)
- 825: Text2: Full interactive prototype delivered

| ID | WBS | Task | Type | Duration | Start | Finish | Predecessors | Complete | Remaining | Total slack | Free slack | Constraint | Resources | Work |
| --- | --- | --- | --- | --- | --- | --- | --- | --- | --- | --- | --- | --- | --- | --- |
| 829 | 1.6.3.2.1.6 | **Coding Frontend** |  | 1d | 2017-06-16 | 2017-06-16 | 199 |  |  | 20d | 0d |  | UD2 - Yuvaraj | 8h |
| 830 | 1.6.3.2.1.6.1 | UI Development |  | 1d | 2017-06-16 | 2017-06-16 |  |  |  | 20d |  |  |  |  |
| 831 | 1.6.3.2.1.6.2 | Navigation |  | 1d | 2017-06-16 | 2017-06-16 |  |  |  | 20d |  |  |  |  |
| 832 | 1.6.3.2.1.6.3 | Business Logic |  | 1d | 2017-06-16 | 2017-06-16 |  |  |  | 20d |  |  |  |  |
| 833 | 1.6.3.2.1.7 | Ux UI Review |  | 1d | 2017-06-27 | 2017-06-27 |  |  |  | 15d |  | start no earlier than 2017-06-27 | UX - Chethana | 8h |
| 834 | 1.6.3.2.1.8 | Sanity Test Cases |  | 1d | 2017-06-14 | 2017-06-14 |  |  |  | 23d | 9d | start no earlier than 2017-06-14 | UQ - Lalit Kumar Jha [10%] | 0.8h |
| 835 | 1.6.3.2.1.9 | Sanity Testing |  | 2d | 2017-06-19 | 2017-06-20 | 828, 829 |  |  | 20d |  |  | RQA - Sharath Shet [50%]; UQ - Lalit Kumar Jha [50%] | 12h |
| 836 | 1.6.3.2.1.10 | Code Review |  | 1d | 2017-06-19 | 2017-06-19 | 828, 829 |  |  | 21d |  |  | RT - Debarghya Das [50%] | 4h |
| 837 | 1.6.3.2.1.11 | Demo / acceptance test |  | 1d | 2017-06-28 | 2017-06-28 | 834 |  |  | 14d |  | start no earlier than 2017-06-28 | UO Rob Plummer | 8h |
| 838 | 1.6.3.3 | **(Investig:View and Manage Participants) Allegation History** |  | 24d | 2017-05-31 A | 2017-07-03 |  |  | 24d | 11d |  |  |  | 76.8h |
| 839 | 1.6.3.3.1 | **Development** |  | 24d | 2017-05-31 A | 2017-07-03 |  |  | 24d | 11d |  |  |  | 76.8h |
| 840 | 1.6.3.3.1.1 | User Story Defined | milestone | 0d | 2017-06-15 A | 2017-06-15 A |  | 100% |  |  |  | start no earlier than 2017-06-15 | UR - Dhanu |  |
| 841 | 1.6.3.3.1.2 | Prototype Wireframe |  | 1d | 2017-06-15 | 2017-06-15 |  |  |  | 23d |  | start no earlier than 2017-06-15 | UX - Chethana | 8h |
| 842 | 1.6.3.3.1.3 | User story review with developer |  | 1d | 2017-06-15 | 2017-06-15 |  |  |  | 23d |  | start no earlier than 2017-06-15 | UR - Dhanu | 8h |
| 843 | 1.6.3.3.1.4 | Wireframe walkthru with Developer |  | 1d | 2017-06-15 | 2017-06-15 |  |  |  | 23d |  | start no earlier than 2017-06-15 | UX - Chethana | 8h |
| 844 | 1.6.3.3.1.5 | Coding Backend |  | 2d | 2017-06-28 | 2017-06-29 |  |  |  | 12d | 0d | start no earlier than 2017-06-28 | RD7 - Kishore Kumar | 16h |
| 845 | 1.6.3.3.1.6 | **Coding Frontend** |  | 1d | 2017-05-31 | 2017-05-31 |  |  |  | 33d | 21d |  | RD9 - Shijo | 8h |
| 846 | 1.6.3.3.1.6.1 | UI Development |  | 1d | 2017-05-31 | 2017-05-31 |  |  |  | 33d |  |  |  |  |
| 847 | 1.6.3.3.1.6.2 | Navigation |  | 1d | 2017-05-31 | 2017-05-31 |  |  |  | 33d |  |  |  |  |
| 848 | 1.6.3.3.1.6.3 | Business Logic |  | 1d | 2017-05-31 | 2017-05-31 |  |  |  | 33d |  |  |  |  |
| 849 | 1.6.3.3.1.7 | Ux UI Review |  | 1d | 2017-06-30 | 2017-06-30 |  |  |  | 12d |  | start no earlier than 2017-06-30 | UX - Chethana | 8h |
| 850 | 1.6.3.3.1.8 | Sanity Test Cases |  | 1d | 2017-06-15 | 2017-06-15 |  |  |  | 23d |  | start no earlier than 2017-06-15 | UQ - Lalit Kumar Jha [10%] | 0.8h |
| 851 | 1.6.3.3.1.9 | Sanity Testing |  | 1d | 2017-06-30 | 2017-06-30 | 844, 845 |  |  | 12d |  |  | UQ - Lalit Kumar Jha [50%]; RQA - Sharath Shet [50%] | 8h |
| 852 | 1.6.3.3.1.10 | Code Review |  | 1d | 2017-06-30 | 2017-06-30 | 844, 845 |  |  | 12d |  |  | RT - Debarghya Das [50%] | 4h |
| 853 | 1.6.3.3.1.11 | Demo / acceptance test |  | 1d | 2017-07-03 | 2017-07-03 |  |  |  | 11d |  | start no earlier than 2017-07-03 | UO Rob Plummer | 8h |

Notes:
- 838: Text2: Stub
- 840: Text2: User Story, Design Notes (no design notes for stubbed out User Stories)
- 841: Text2: Full interactive prototype delivered

| ID | WBS | Task | Type | Duration | Start | Finish | Predecessors | Complete | Remaining | Total slack | Free slack | Constraint | Resources | Work |
| --- | --- | --- | --- | --- | --- | --- | --- | --- | --- | --- | --- | --- | --- | --- |
| 854 | 1.6.3.4 | **(Investig:Allegation/Findings) List of Allegations/Finding** |  | 21d | 2017-05-31 A | 2017-06-28 |  |  | 21d | 14d |  |  |  | 60.8h |
| 855 | 1.6.3.4.1 | **Development** |  | 21d | 2017-05-31 A | 2017-06-28 |  |  | 21d | 14d |  |  |  | 60.8h |
| 856 | 1.6.3.4.1.1 | User Story Defined | milestone | 0d | 2017-06-19 A | 2017-06-19 A |  | 100% |  |  |  | start no earlier than 2017-06-19 | UR - Dhanu |  |
| 857 | 1.6.3.4.1.2 | Prototype Wireframe | milestone | 0d | 2017-06-19 A | 2017-06-19 A |  | 100% |  |  |  | start no earlier than 2017-06-19 | UX - Chethana |  |
| 858 | 1.6.3.4.1.3 | User story review with developer |  | 1d | 2017-06-19 | 2017-06-19 |  |  |  | 21d |  | start no earlier than 2017-06-19 | UR - Dhanu | 8h |
| 859 | 1.6.3.4.1.4 | Wireframe walkthru with Developer |  | 1d | 2017-06-19 | 2017-06-19 |  |  |  | 21d |  | start no earlier than 2017-06-19 | UX - Chethana | 8h |
| 860 | 1.6.3.4.1.5 | Coding Backend |  | 1d | 2017-06-23 | 2017-06-23 |  |  |  | 16d | 0d | start no earlier than 2017-06-23 | RD5 - Swarnashree | 8h |
| 861 | 1.6.3.4.1.6 | **Coding Frontend** |  | 1d | 2017-05-31 | 2017-05-31 |  |  |  | 33d | 17d |  | RD12 - Vaishali N Telang | 8h |
| 862 | 1.6.3.4.1.6.1 | UI Development |  | 1d | 2017-05-31 | 2017-05-31 |  |  |  | 33d |  |  |  |  |
| 863 | 1.6.3.4.1.6.2 | Navigation |  | 1d | 2017-05-31 | 2017-05-31 |  |  |  | 33d |  |  |  |  |
| 864 | 1.6.3.4.1.6.3 | Business Logic |  | 1d | 2017-05-31 | 2017-05-31 |  |  |  | 33d |  |  |  |  |
| 865 | 1.6.3.4.1.7 | Ux UI Review |  | 1d | 2017-06-26 | 2017-06-26 |  |  |  | 16d |  | finish no earlier than 2017-06-26 | UX - Chethana | 8h |
| 866 | 1.6.3.4.1.8 | Sanity Test Cases |  | 1d | 2017-06-19 | 2017-06-19 |  |  |  | 21d |  | finish no earlier than 2017-06-19 | UQ - Lalit Kumar Jha [10%] | 0.8h |
| 867 | 1.6.3.4.1.9 | Sanity Testing |  | 1d | 2017-06-26 | 2017-06-26 | 860, 861 |  |  | 16d |  |  | RQA - Sharath Shet [50%]; UQ - Lalit Kumar Jha [50%] | 8h |
| 868 | 1.6.3.4.1.10 | Code Review |  | 1d | 2017-06-26 | 2017-06-26 | 860, 861 |  |  | 16d |  |  | RT - Debarghya Das [50%] | 4h |
| 869 | 1.6.3.4.1.11 | Demo / acceptance test |  | 1d | 2017-06-28 | 2017-06-28 |  |  |  | 14d |  | start no earlier than 2017-06-28 | UO Rob Plummer | 8h |
| 870 | 1.6.3.5 | **(Investig:Engagement Tools) Three Houses** |  | 20d | 2017-05-31 A | 2017-06-27 |  |  | 20d | 15d |  |  |  | 60.8h |
| 871 | 1.6.3.5.1 | **Development** |  | 20d | 2017-05-31 A | 2017-06-27 |  |  | 20d | 15d |  |  |  | 60.8h |
| 872 | 1.6.3.5.1.1 | User Story Defined (Only UI Navigation) | milestone | 0d | 2017-06-14 A | 2017-06-14 A |  | 100% |  |  |  | finish no earlier than 2017-06-14 | UR - Dhanu |  |
| 873 | 1.6.3.5.1.2 | Prototype Wireframe | milestone | 0d | 2017-06-14 A | 2017-06-14 A |  | 100% |  |  |  | finish no earlier than 2017-06-14 | UX - Chethana |  |
| 874 | 1.6.3.5.1.3 | User story review with developer |  | 1d | 2017-06-14 | 2017-06-14 |  |  |  | 24d |  | start no earlier than 2017-06-14 | UR - Dhanu | 8h |
| 875 | 1.6.3.5.1.4 | Wireframe walkthru with Developer |  | 1d | 2017-06-14 | 2017-06-14 |  |  |  | 24d |  | start no earlier than 2017-06-14 | UX - Chethana | 8h |
| 876 | 1.6.3.5.1.5 | Coding Backend |  | 1d | 2017-06-19 | 2017-06-19 |  |  |  | 19d | 0d | start no earlier than 2017-06-19 | RD4 - Mahmooda | 8h |
| 877 | 1.6.3.5.1.6 | **Coding Frontend** |  | 1d | 2017-05-31 | 2017-05-31 |  |  |  | 32d | 13d |  | RD2 - Kiran Rohit | 8h |
| 878 | 1.6.3.5.1.6.1 | UI Development |  | 1d | 2017-05-31 | 2017-05-31 |  |  |  | 32d |  |  |  |  |
| 879 | 1.6.3.5.1.6.2 | Navigation |  | 1d | 2017-05-31 | 2017-05-31 |  |  |  | 32d |  |  |  |  |
| 880 | 1.6.3.5.1.6.3 | Business Logic |  | 1d | 2017-05-31 | 2017-05-31 |  |  |  | 32d |  |  |  |  |
| 881 | 1.6.3.5.1.7 | Ux UI Review |  | 1d | 2017-06-27 | 2017-06-27 |  |  |  | 15d |  | start no earlier than 2017-06-27 | UX - Chethana | 8h |
| 882 | 1.6.3.5.1.8 | Sanity Test Cases |  | 1d | 2017-06-14 | 2017-06-14 |  |  |  | 24d |  | start no earlier than 2017-06-14 | UQ - Lalit Kumar Jha [10%] | 0.8h |
| 883 | 1.6.3.5.1.9 | Sanity Testing |  | 1d | 2017-06-20 | 2017-06-20 | 876, 877 |  |  | 20d |  |  | RQA - Sharath Shet [50%]; UQ - Lalit Kumar Jha [50%] | 8h |
| 884 | 1.6.3.5.1.10 | Code Review |  | 1d | 2017-06-20 | 2017-06-20 | 876, 877 |  |  | 19d | 0d |  | RT - Debarghya Das [50%] | 4h |
| 885 | 1.6.3.5.1.11 | Demo / acceptance test |  | 1d | 2017-06-21 | 2017-06-21 | 884 |  |  | 19d |  |  | UO Rob Plummer | 8h |

Notes:
- 854: Text2: Stub
- 856: Text2: User Story, Design Notes (no design notes for stubbed out User Stories)
- 857: Text2: Full interactive prototype delivered
- 870: Text2: Stub
- 872: Text2: User Story, Design Notes (no design notes for stubbed out User Stories)
- 873: Text2: Full interactive prototype delivered

| ID | WBS | Task | Type | Duration | Start | Finish | Predecessors | Complete | Remaining | Total slack | Free slack | Constraint | Resources | Work |
| --- | --- | --- | --- | --- | --- | --- | --- | --- | --- | --- | --- | --- | --- | --- |
| 886 | 1.6.3.6 | **(Investig:Risk Assessment) Risk Assessment List Page** |  | 13d | 2017-06-14 A | 2017-06-30 |  |  | 13d | 12d |  |  |  | 68.8h |
| 887 | 1.6.3.6.1 | **Development** |  | 13d | 2017-06-14 A | 2017-06-30 |  |  | 13d | 12d |  |  |  | 68.8h |
| 888 | 1.6.3.6.1.1 | User Story Defined | milestone | 0d | 2017-06-20 A | 2017-06-20 A |  | 100% |  |  |  | start no earlier than 2017-06-20 | UR - Dhanu |  |
| 889 | 1.6.3.6.1.2 | Prototype Wireframe |  | 1d | 2017-06-20 | 2017-06-20 |  |  |  | 20d |  | start no earlier than 2017-06-20 | UX - Chethana | 8h |
| 890 | 1.6.3.6.1.3 | User story review with developer |  | 1d | 2017-06-20 | 2017-06-20 |  |  |  | 20d |  | start no earlier than 2017-06-20 | UR - Dhanu | 8h |
| 891 | 1.6.3.6.1.4 | Wireframe walkthru with Developer |  | 1d | 2017-06-20 | 2017-06-20 |  |  |  | 20d |  | start no earlier than 2017-06-20 | UX - Chethana | 8h |
| 892 | 1.6.3.6.1.5 | Coding Backend |  | 1d | 2017-06-29 | 2017-06-29 | 199 |  |  | 13d |  | start no earlier than 2017-06-29 | RD7 - Kishore Kumar | 8h |
| 893 | 1.6.3.6.1.6 | **Coding Frontend** |  | 1d | 2017-06-16 | 2017-06-16 | 199 |  |  | 22d |  |  | UD2 - Yuvaraj | 8h |
| 894 | 1.6.3.6.1.6.1 | UI Development |  | 1d | 2017-06-16 | 2017-06-16 |  |  |  | 22d |  |  |  |  |
| 895 | 1.6.3.6.1.6.2 | Navigation |  | 1d | 2017-06-16 | 2017-06-16 |  |  |  | 22d |  |  |  |  |
| 896 | 1.6.3.6.1.6.3 | Business Logic |  | 1d | 2017-06-16 | 2017-06-16 |  |  |  | 22d |  |  |  |  |
| 897 | 1.6.3.6.1.7 | Ux UI Review |  | 1d | 2017-06-30 | 2017-06-30 |  |  |  | 12d |  | start no earlier than 2017-06-30 | UX - Chethana | 8h |
| 898 | 1.6.3.6.1.8 | Sanity Test Cases |  | 1d | 2017-06-14 | 2017-06-14 |  |  |  | 24d |  | start no earlier than 2017-06-14 | UQ - Lalit Kumar Jha [10%] | 0.8h |
| 899 | 1.6.3.6.1.9 | Sanity Testing |  | 1d | 2017-06-30 | 2017-06-30 |  |  |  | 12d |  | start no earlier than 2017-06-30 | RQA - Sharath Shet [50%]; UQ - Lalit Kumar Jha [50%] | 8h |
| 900 | 1.6.3.6.1.10 | Code Review |  | 1d | 2017-06-28 | 2017-06-28 |  |  |  | 14d |  | start no earlier than 2017-06-28 | RT - Debarghya Das [50%] | 4h |
| 901 | 1.6.3.6.1.11 | Demo / acceptance test |  | 1d | 2017-06-30 | 2017-06-30 |  |  |  | 12d |  | start no earlier than 2017-06-30 | UO Rob Plummer | 8h |
| 902 | 1.6.3.7 | **(Investig:Disposition) Disposition Screen** |  | 24d | 2017-05-31 | 2017-07-03 |  |  |  | 11d |  |  |  | 80.8h |
| 903 | 1.6.3.7.1 | **Development** |  | 24d | 2017-05-31 | 2017-07-03 |  |  |  | 11d |  |  |  | 80.8h |
| 904 | 1.6.3.7.1.1 | User Story Defined |  | 1d | 2017-06-20 | 2017-06-20 |  |  |  | 20d |  | start no earlier than 2017-06-20 | UR - Dhanu | 8h |
| 905 | 1.6.3.7.1.2 | Prototype Wireframe |  | 1d | 2017-06-20 | 2017-06-20 |  |  |  | 20d |  | start no earlier than 2017-06-20 | UX - Chethana | 8h |
| 906 | 1.6.3.7.1.3 | User story review with developer |  | 1d | 2017-06-20 | 2017-06-20 |  |  |  | 20d |  | start no earlier than 2017-06-20 | UR - Dhanu | 8h |
| 907 | 1.6.3.7.1.4 | Wireframe walkthru with Developer |  | 1d | 2017-06-20 | 2017-06-20 |  |  |  | 20d |  | start no earlier than 2017-06-20 | UX - Chethana | 8h |
| 908 | 1.6.3.7.1.5 | Coding Backend |  | 1d | 2017-06-29 | 2017-06-29 |  |  |  | 11d | 0d | start no earlier than 2017-06-29 | RD5 - Swarnashree | 8h |
| 909 | 1.6.3.7.1.6 | **Coding Frontend** |  | 1d | 2017-05-31 | 2017-05-31 |  |  |  | 32d | 21d |  | RD2 - Kiran Rohit | 8h |
| 910 | 1.6.3.7.1.6.1 | UI Development |  | 1d | 2017-05-31 | 2017-05-31 |  |  |  | 32d |  |  |  |  |
| 911 | 1.6.3.7.1.6.2 | Navigation |  | 1d | 2017-05-31 | 2017-05-31 |  |  |  | 32d |  |  |  |  |
| 912 | 1.6.3.7.1.6.3 | Business Logic |  | 1d | 2017-05-31 | 2017-05-31 |  |  |  | 32d |  |  |  |  |
| 913 | 1.6.3.7.1.7 | Ux UI Review |  | 1d | 2017-06-30 | 2017-06-30 |  |  |  | 12d |  | start no earlier than 2017-06-30 | UX - Chethana | 8h |
| 914 | 1.6.3.7.1.8 | Sanity Test Cases |  | 1d | 2017-06-20 | 2017-06-20 |  |  |  | 20d |  | start no earlier than 2017-06-20 | UQ - Lalit Kumar Jha [10%] | 0.8h |
| 915 | 1.6.3.7.1.9 | Sanity Testing |  | 2d | 2017-06-30 | 2017-07-03 | 908, 909 |  |  | 11d |  |  | UQ - Lalit Kumar Jha [50%]; RQA - Sharath Shet [50%] | 12h |
| 916 | 1.6.3.7.1.10 | Code Review |  | 1d | 2017-06-30 | 2017-06-30 | 908, 909 |  |  | 11d | 0d |  | RT - Debarghya Das [50%] | 4h |
| 917 | 1.6.3.7.1.11 | Demo / acceptance test |  | 1d | 2017-07-03 | 2017-07-03 | 916 |  |  | 11d |  |  | UO Rob Plummer | 8h |

Notes:
- 886: Text2: Stub
- 888: Text2: User Story, Design Notes (no design notes for stubbed out User Stories)
- 889: Text2: Full interactive prototype delivered
- 902: Text2: TBD
- 904: Text2: User Story, Design Notes (no design notes for stubbed out User Stories)
- 905: Text2: Full interactive prototype delivered

| ID | WBS | Task | Type | Duration | Start | Finish | Predecessors | Complete | Remaining | Total slack | Free slack | Constraint | Resources | Work |
| --- | --- | --- | --- | --- | --- | --- | --- | --- | --- | --- | --- | --- | --- | --- |
| 918 | 1.6.3.8 | **(Investig:Disposition) Category** |  | 25d | 2017-05-31 | 2017-07-04 |  |  |  | 10d |  |  |  | 76.8h |
| 919 | 1.6.3.8.1 | **Development** |  | 25d | 2017-05-31 | 2017-07-04 |  |  |  | 10d |  |  |  | 76.8h |
| 920 | 1.6.3.8.1.1 | User Story Defined |  | 1d | 2017-06-20 | 2017-06-20 |  |  |  | 20d |  | start no earlier than 2017-06-20 | UR - Dhanu | 8h |
| 921 | 1.6.3.8.1.2 | Prototype Wireframe |  | 1d | 2017-06-20 | 2017-06-20 |  |  |  | 20d |  | start no earlier than 2017-06-20 | UX - Chethana | 8h |
| 922 | 1.6.3.8.1.3 | User story review with developer |  | 1d | 2017-06-20 | 2017-06-20 |  |  |  | 20d |  | start no earlier than 2017-06-20 | UR - Dhanu | 8h |
| 923 | 1.6.3.8.1.4 | Wireframe walkthru with Developer |  | 1d | 2017-06-20 | 2017-06-20 |  |  |  | 20d |  | start no earlier than 2017-06-20 | UX - Chethana | 8h |
| 924 | 1.6.3.8.1.5 | Coding Backend |  | 1d | 2017-06-30 | 2017-06-30 |  |  |  | 11d | 0d | start no earlier than 2017-06-30 | RD5 - Swarnashree | 8h |
| 925 | 1.6.3.8.1.6 | **Coding Frontend** |  | 1d | 2017-05-31 | 2017-05-31 |  |  |  | 33d | 22d |  | RD2 - Kiran Rohit | 8h |
| 926 | 1.6.3.8.1.6.1 | UI Development |  | 1d | 2017-05-31 | 2017-05-31 |  |  |  | 33d |  |  |  |  |
| 927 | 1.6.3.8.1.6.2 | Navigation |  | 1d | 2017-05-31 | 2017-05-31 |  |  |  | 33d |  |  |  |  |
| 928 | 1.6.3.8.1.6.3 | Business Logic |  | 1d | 2017-05-31 | 2017-05-31 |  |  |  | 33d |  |  |  |  |
| 929 | 1.6.3.8.1.7 | Ux UI Review |  | 1d | 2017-07-03 | 2017-07-03 |  |  |  | 11d |  | start no earlier than 2017-07-03 | UX - Chethana | 8h |
| 930 | 1.6.3.8.1.8 | Sanity Test Cases |  | 1d | 2017-06-20 | 2017-06-20 |  |  |  | 20d |  | start no earlier than 2017-06-20 | UQ - Lalit Kumar Jha [10%] | 0.8h |
| 931 | 1.6.3.8.1.9 | Sanity Testing |  | 1d | 2017-07-03 | 2017-07-03 | 924, 925 |  |  | 11d |  |  | UQ - Lalit Kumar Jha [50%]; RQA - Sharath Shet [50%] | 8h |
| 932 | 1.6.3.8.1.10 | Code Review |  | 1d | 2017-07-03 | 2017-07-03 | 924, 925 |  |  | 11d |  |  | RT - Debarghya Das [50%] | 4h |
| 933 | 1.6.3.8.1.11 | Demo / acceptance test |  | 1d | 2017-07-04 | 2017-07-04 |  |  |  | 10d |  | start no earlier than 2017-07-04 | UO Rob Plummer | 8h |
| 934 | 1.6.3.9 | **(Investig:Disposition) Submit** |  | 26d | 2017-05-31 A | 2017-07-05 |  |  | 26d | 9d |  |  |  | 68.8h |
| 935 | 1.6.3.9.1 | **Development** |  | 26d | 2017-05-31 A | 2017-07-05 |  |  | 26d | 9d |  |  |  | 68.8h |
| 936 | 1.6.3.9.1.1 | User Story Defined |  | 1d | 2017-06-20 | 2017-06-20 |  |  |  | 20d |  | start no earlier than 2017-06-20 | UR - Dhanu | 8h |
| 937 | 1.6.3.9.1.2 | Prototype Wireframe | milestone | 0d | 2017-06-20 A | 2017-06-20 A |  | 100% |  |  |  | start no earlier than 2017-06-20 | UX - Chethana |  |
| 938 | 1.6.3.9.1.3 | User story review with developer |  | 1d | 2017-06-20 | 2017-06-20 |  |  |  | 20d |  | start no earlier than 2017-06-20 | UR - Dhanu | 8h |
| 939 | 1.6.3.9.1.4 | Wireframe walkthru with Developer |  | 1d | 2017-06-20 | 2017-06-20 |  |  |  | 20d |  | start no earlier than 2017-06-20 | UX - Chethana | 8h |
| 940 | 1.6.3.9.1.5 | Coding Backend |  | 1d | 2017-07-03 | 2017-07-03 |  |  |  | 10d | 0d | start no earlier than 2017-07-03 | RD5 - Swarnashree | 8h |
| 941 | 1.6.3.9.1.6 | **Coding Frontend** |  | 1d | 2017-05-31 | 2017-05-31 |  |  |  | 33d | 23d |  | RD2 - Kiran Rohit | 8h |
| 942 | 1.6.3.9.1.6.1 | UI Development |  | 1d | 2017-05-31 | 2017-05-31 |  |  |  | 33d |  |  |  |  |
| 943 | 1.6.3.9.1.6.2 | Navigation |  | 1d | 2017-05-31 | 2017-05-31 |  |  |  | 33d |  |  |  |  |
| 944 | 1.6.3.9.1.6.3 | Business Logic |  | 1d | 2017-05-31 | 2017-05-31 |  |  |  | 33d |  |  |  |  |
| 945 | 1.6.3.9.1.7 | Ux UI Review |  | 1d | 2017-07-04 | 2017-07-04 |  |  |  | 10d |  | start no earlier than 2017-07-04 | UX - Chethana | 8h |
| 946 | 1.6.3.9.1.8 | Sanity Test Cases |  | 1d | 2017-06-20 | 2017-06-20 |  |  |  | 20d |  | start no earlier than 2017-06-20 | UQ - Lalit Kumar Jha [10%] | 0.8h |
| 947 | 1.6.3.9.1.9 | Sanity Testing |  | 1d | 2017-07-04 | 2017-07-04 | 940, 941 |  |  | 10d |  |  | UQ - Lalit Kumar Jha [50%]; RQA - Sharath Shet [50%] | 8h |
| 948 | 1.6.3.9.1.10 | Code Review |  | 1d | 2017-07-04 | 2017-07-04 | 940, 941 |  |  | 10d |  |  | RT - Debarghya Das [50%] | 4h |
| 949 | 1.6.3.9.1.11 | Demo / acceptance test |  | 1d | 2017-07-05 | 2017-07-05 |  |  |  | 9d |  | start no earlier than 2017-07-05 | UO Rob Plummer | 8h |

Notes:
- 918: Text2: Stub
- 920: Text2: User Story, Design Notes (no design notes for stubbed out User Stories)
- 921: Text2: Full interactive prototype delivered
- 934: Text2: Stub
- 936: Text2: User Story, Design Notes (no design notes for stubbed out User Stories)
- 937: Text2: Full interactive prototype delivered

| ID | WBS | Task | Type | Duration | Start | Finish | Predecessors | Complete | Remaining | Total slack | Free slack | Constraint | Resources | Work |
| --- | --- | --- | --- | --- | --- | --- | --- | --- | --- | --- | --- | --- | --- | --- |
| 950 | 1.6.3.10 | **(Investig:Safety Plan) List** |  | 14d | 2017-06-14 A | 2017-07-03 |  |  | 14d | 11d |  |  |  | 68.8h |
| 951 | 1.6.3.10.1 | **Development** |  | 14d | 2017-06-14 A | 2017-07-03 |  |  | 14d | 11d |  |  |  | 68.8h |
| 952 | 1.6.3.10.1.1 | User Story Defined | milestone | 0d | 2017-06-20 A | 2017-06-20 A |  | 100% |  |  |  | start no earlier than 2017-06-20 | UR - Dhanu |  |
| 953 | 1.6.3.10.1.2 | Prototype Wireframe |  | 1d | 2017-06-20 | 2017-06-20 |  |  |  | 20d |  | start no earlier than 2017-06-20 | UX - Chethana | 8h |
| 954 | 1.6.3.10.1.3 | User story review with developer |  | 1d | 2017-06-20 | 2017-06-20 |  |  |  | 20d |  | start no earlier than 2017-06-20 | UR - Dhanu | 8h |
| 955 | 1.6.3.10.1.4 | Wireframe walkthru with Developer |  | 1d | 2017-06-20 | 2017-06-20 |  |  |  | 20d |  | start no earlier than 2017-06-20 | UX - Chethana | 8h |
| 956 | 1.6.3.10.1.5 | Coding Backend |  | 1d | 2017-06-29 | 2017-06-29 | 199 |  |  | 12d | 0d | start no earlier than 2017-06-29 | RD6 - Kamalkanth | 8h |
| 957 | 1.6.3.10.1.6 | **Coding Frontend** |  | 1d | 2017-06-16 | 2017-06-16 | 199 |  |  | 21d | 9d |  | RD11 - Sharan | 8h |
| 958 | 1.6.3.10.1.6.1 | UI Development |  | 1d | 2017-06-16 | 2017-06-16 |  |  |  | 21d |  |  |  |  |
| 959 | 1.6.3.10.1.6.2 | Navigation |  | 1d | 2017-06-16 | 2017-06-16 |  |  |  | 21d |  |  |  |  |
| 960 | 1.6.3.10.1.6.3 | Business Logic |  | 1d | 2017-06-16 | 2017-06-16 |  |  |  | 21d |  |  |  |  |
| 961 | 1.6.3.10.1.7 | Ux UI Review |  | 1d | 2017-06-30 | 2017-06-30 |  |  |  | 12d |  | start no earlier than 2017-06-30 | UX - Chethana | 8h |
| 962 | 1.6.3.10.1.8 | Sanity Test Cases |  | 1d | 2017-06-14 | 2017-06-14 |  |  |  | 23d | 12d | start no earlier than 2017-06-14 | UQ - Lalit Kumar Jha [10%] | 0.8h |
| 963 | 1.6.3.10.1.9 | Sanity Testing |  | 1d | 2017-06-30 | 2017-06-30 | 956, 957 |  |  | 12d |  |  | RQA - Sharath Shet [50%]; UQ - Lalit Kumar Jha [50%] | 8h |
| 964 | 1.6.3.10.1.10 | Code Review |  | 1d | 2017-06-30 | 2017-06-30 | 956, 957 |  |  | 12d |  |  | RT - Debarghya Das [50%] | 4h |
| 965 | 1.6.3.10.1.11 | Demo / acceptance test |  | 1d | 2017-07-03 | 2017-07-03 | 962 |  |  | 11d |  | start no earlier than 2017-07-03 | UO Rob Plummer | 8h |
| 966 | 1.6.3.11 | **(Investig:Investigator-Provider) Provider Search and Result** |  | 27d | 2017-05-31 A | 2017-07-06 |  |  | 27d | 8d |  |  |  | 76.8h |
| 967 | 1.6.3.11.1 | **Development** |  | 27d | 2017-05-31 A | 2017-07-06 |  |  | 27d | 8d |  |  |  | 76.8h |
| 968 | 1.6.3.11.1.1 | User Story Defined | milestone | 0d | 2017-06-20 A | 2017-06-20 A |  | 100% |  |  |  | start no earlier than 2017-06-20 | UR - Dhanu |  |
| 969 | 1.6.3.11.1.2 | Prototype Wireframe | milestone | 0d | 2017-06-20 A | 2017-06-20 A |  | 100% |  |  |  | start no earlier than 2017-06-20 | UX - Chethana |  |
| 970 | 1.6.3.11.1.3 | User story review with developer |  | 1d | 2017-06-20 | 2017-06-20 |  |  |  | 20d |  | start no earlier than 2017-06-20 | UR - Dhanu | 8h |
| 971 | 1.6.3.11.1.4 | Wireframe walkthru with Developer |  | 1d | 2017-06-20 | 2017-06-20 |  |  |  | 20d |  | start no earlier than 2017-06-20 | UX - Chethana | 8h |
| 972 | 1.6.3.11.1.5 | Coding Backend |  | 3d | 2017-06-30 | 2017-07-04 |  |  |  | 9d | 0d | start no earlier than 2017-06-30 | RD7 - Kishore Kumar | 24h |
| 973 | 1.6.3.11.1.6 | **Coding Frontend** |  | 1d | 2017-05-31 | 2017-05-31 |  |  |  | 33d | 24d |  | RD2 - Kiran Rohit | 8h |
| 974 | 1.6.3.11.1.6.1 | UI Development |  | 1d | 2017-05-31 | 2017-05-31 |  |  |  | 33d |  |  |  |  |
| 975 | 1.6.3.11.1.6.2 | Navigation |  | 1d | 2017-05-31 | 2017-05-31 |  |  |  | 33d |  |  |  |  |
| 976 | 1.6.3.11.1.6.3 | Business Logic |  | 1d | 2017-05-31 | 2017-05-31 |  |  |  | 33d |  |  |  |  |
| 977 | 1.6.3.11.1.7 | Ux UI Review |  | 1d | 2017-07-05 | 2017-07-05 |  |  |  | 9d |  | start no earlier than 2017-07-05 | UX - Chethana | 8h |
| 978 | 1.6.3.11.1.8 | Sanity Test Cases |  | 1d | 2017-06-16 | 2017-06-16 |  |  |  | 22d |  | start no earlier than 2017-06-16 | UQ - Lalit Kumar Jha [10%] | 0.8h |
| 979 | 1.6.3.11.1.9 | Sanity Testing |  | 1d | 2017-07-05 | 2017-07-05 | 972, 973 |  |  | 9d |  |  | UQ - Lalit Kumar Jha [50%]; RQA - Sharath Shet [50%] | 8h |
| 980 | 1.6.3.11.1.10 | Code Review |  | 1d | 2017-07-05 | 2017-07-05 | 972, 973 |  |  | 9d |  |  | RT - Debarghya Das [50%] | 4h |
| 981 | 1.6.3.11.1.11 | Demo / acceptance test |  | 1d | 2017-07-06 | 2017-07-06 |  |  |  | 8d |  | start no earlier than 2017-07-06 | UO Rob Plummer | 8h |

Notes:
- 950: Text2: Stub
- 952: Text2: User Story, Design Notes (no design notes for stubbed out User Stories)
- 953: Text2: Full interactive prototype delivered
- 966: Text2: Stub
- 968: Text2: User Story, Design Notes (no design notes for stubbed out User Stories)
- 969: Text2: Full interactive prototype delivered

| ID | WBS | Task | Type | Duration | Start | Finish | Predecessors | Complete | Remaining | Total slack | Free slack | Constraint | Resources | Work |
| --- | --- | --- | --- | --- | --- | --- | --- | --- | --- | --- | --- | --- | --- | --- |
| 982 | 1.6.3.12 | **(Investig:Investigator-Provider) Provider Details** |  | 29d | 2017-05-31 A | 2017-07-10 |  |  | 29d | 6d |  |  |  | 68.8h |
| 983 | 1.6.3.12.1 | **Development** |  | 29d | 2017-05-31 A | 2017-07-10 |  |  | 29d | 6d |  |  |  | 68.8h |
| 984 | 1.6.3.12.1.1 | User Story Defined | milestone | 0d | 2017-06-20 A | 2017-06-20 A |  | 100% |  |  |  | start no earlier than 2017-06-20 | UR - Dhanu |  |
| 985 | 1.6.3.12.1.2 | Prototype Wireframe | milestone | 0d | 2017-06-20 A | 2017-06-20 A |  | 100% |  |  |  | start no earlier than 2017-06-20 | UX - Chethana |  |
| 986 | 1.6.3.12.1.3 | User story review with developer |  | 1d | 2017-06-20 | 2017-06-20 |  |  |  | 20d |  | start no earlier than 2017-06-20 | UR - Dhanu | 8h |
| 987 | 1.6.3.12.1.4 | Wireframe walkthru with Developer |  | 1d | 2017-06-20 | 2017-06-20 |  |  |  | 20d |  | start no earlier than 2017-06-20 | UX - Chethana | 8h |
| 988 | 1.6.3.12.1.5 | Coding Backend |  | 2d | 2017-07-05 | 2017-07-06 |  |  |  | 7d | 0d | start no earlier than 2017-07-05 | RD7 - Kishore Kumar | 16h |
| 989 | 1.6.3.12.1.6 | **Coding Frontend** |  | 1d | 2017-05-31 | 2017-05-31 |  |  |  | 33d | 26d |  | RD2 - Kiran Rohit | 8h |
| 990 | 1.6.3.12.1.6.1 | UI Development |  | 1d | 2017-05-31 | 2017-05-31 |  |  |  | 33d |  |  |  |  |
| 991 | 1.6.3.12.1.6.2 | Navigation |  | 1d | 2017-05-31 | 2017-05-31 |  |  |  | 33d |  |  |  |  |
| 992 | 1.6.3.12.1.6.3 | Business Logic |  | 1d | 2017-05-31 | 2017-05-31 |  |  |  | 33d |  |  |  |  |
| 993 | 1.6.3.12.1.7 | Ux UI Review |  | 1d | 2017-07-07 | 2017-07-07 |  |  |  | 7d |  | start no earlier than 2017-07-07 | UX - Chethana | 8h |
| 994 | 1.6.3.12.1.8 | Sanity Test Cases |  | 1d | 2017-06-16 | 2017-06-16 |  |  |  | 22d |  | start no earlier than 2017-06-16 | UQ - Lalit Kumar Jha [10%] | 0.8h |
| 995 | 1.6.3.12.1.9 | Sanity Testing |  | 1d | 2017-07-07 | 2017-07-07 | 988, 989 |  |  | 7d |  |  | UQ - Lalit Kumar Jha [50%]; RQA - Sharath Shet [50%] | 8h |
| 996 | 1.6.3.12.1.10 | Code Review |  | 1d | 2017-07-07 | 2017-07-07 | 988, 989 |  |  | 7d |  |  | RT - Debarghya Das [50%] | 4h |
| 997 | 1.6.3.12.1.11 | Demo / acceptance test |  | 1d | 2017-07-10 | 2017-07-10 |  |  |  | 6d |  | start no earlier than 2017-07-10 | UO Rob Plummer | 8h |
| 998 | 1.6.3.13 | **(Investig:Push Notification) Push Notification** |  | 29d | 2017-05-31 | 2017-07-10 |  |  |  | 6d |  |  |  | 88.8h |
| 999 | 1.6.3.13.1 | **Development** |  | 29d | 2017-05-31 | 2017-07-10 |  |  |  | 6d |  |  |  | 88.8h |
| 1000 | 1.6.3.13.1.1 | User Story Defined |  | 1d | 2017-06-20 | 2017-06-20 |  |  |  | 20d |  | start no earlier than 2017-06-20 | UR - Dhanu | 8h |
| 1001 | 1.6.3.13.1.2 | Prototype Wireframe |  | 1d | 2017-06-20 | 2017-06-20 |  |  |  | 20d |  | start no earlier than 2017-06-20 | UX - Chethana | 8h |
| 1002 | 1.6.3.13.1.3 | User story review with developer |  | 1d | 2017-06-20 | 2017-06-20 |  |  |  | 20d |  | start no earlier than 2017-06-20 | UR - Dhanu | 8h |
| 1003 | 1.6.3.13.1.4 | Wireframe walkthru with Developer |  | 1d | 2017-06-20 | 2017-06-20 |  |  |  | 20d |  | start no earlier than 2017-06-20 | UX - Chethana | 8h |
| 1004 | 1.6.3.13.1.5 | Coding Backend |  | 2d | 2017-07-03 | 2017-07-04 |  |  |  | 8d | 0d | start no earlier than 2017-07-03 | RD13 - Karthik S S | 16h |
| 1005 | 1.6.3.13.1.6 | **Coding Frontend** |  | 1d | 2017-05-31 | 2017-05-31 |  |  |  | 32d | 24d |  | RD3 - Karthik P | 8h |
| 1006 | 1.6.3.13.1.6.1 | UI Development |  | 1d | 2017-05-31 | 2017-05-31 |  |  |  | 32d |  |  |  |  |
| 1007 | 1.6.3.13.1.6.2 | Navigation |  | 1d | 2017-05-31 | 2017-05-31 |  |  |  | 32d |  |  |  |  |
| 1008 | 1.6.3.13.1.6.3 | Business Logic |  | 1d | 2017-05-31 | 2017-05-31 |  |  |  | 32d |  |  |  |  |
| 1009 | 1.6.3.13.1.7 | Ux UI Review |  | 1d | 2017-07-05 | 2017-07-05 |  |  |  | 9d |  | start no earlier than 2017-07-05 | UX - Chethana | 8h |
| 1010 | 1.6.3.13.1.8 | Sanity Test Cases |  | 1d | 2017-06-23 | 2017-06-23 |  |  |  | 17d |  | start no earlier than 2017-06-23 | UQ - Lalit Kumar Jha [10%] | 0.8h |
| 1011 | 1.6.3.13.1.9 | Sanity Testing |  | 2d | 2017-07-05 | 2017-07-06 | 1004, 1005 |  |  | 8d |  |  | UQ - Lalit Kumar Jha [50%]; RQA - Sharath Shet [50%] | 12h |
| 1012 | 1.6.3.13.1.10 | Code Review |  | 1d | 2017-07-05 | 2017-07-05 | 1004, 1005 |  |  | 9d |  |  | RT - Debarghya Das [50%] | 4h |
| 1013 | 1.6.3.13.1.11 | Demo / acceptance test |  | 1d | 2017-07-10 | 2017-07-10 |  |  |  | 6d |  | start no earlier than 2017-07-10 | UO Rob Plummer | 8h |

Notes:
- 982: Text2: Stub
- 984: Text2: User Story, Design Notes (no design notes for stubbed out User Stories)
- 985: Text2: Full interactive prototype delivered
- 998: Text2: Stub
- 1000: Text2: User Story, Design Notes (no design notes for stubbed out User Stories)
- 1001: Text2: Full interactive prototype delivered

| ID | WBS | Task | Type | Duration | Start | Finish | Predecessors | Complete | Remaining | Total slack | Free slack | Constraint | Resources | Work |
| --- | --- | --- | --- | --- | --- | --- | --- | --- | --- | --- | --- | --- | --- | --- |
| 1014 | 1.6.3.14 | **(Investig:Social Work Contacts) Edit** |  | 22d | 2017-05-31 A | 2017-06-29 |  |  | 22d | 13d |  |  |  | 68.8h |
| 1015 | 1.6.3.14.1 | **Development** |  | 22d | 2017-05-31 A | 2017-06-29 |  |  | 22d | 13d |  |  |  | 68.8h |
| 1016 | 1.6.3.14.1.1 | User Story Defined | milestone | 0d | 2017-06-19 A | 2017-06-19 A |  | 100% |  |  |  | finish no earlier than 2017-06-19 | UR - Dhanu |  |
| 1017 | 1.6.3.14.1.2 | Prototype Wireframe | milestone | 0d | 2017-06-19 A | 2017-06-19 A |  | 100% |  |  |  | finish no earlier than 2017-06-19 | UX - Chethana |  |
| 1018 | 1.6.3.14.1.3 | User story review with developer |  | 1d | 2017-06-19 | 2017-06-19 |  |  |  | 21d |  | start no earlier than 2017-06-19 | UR - Dhanu | 8h |
| 1019 | 1.6.3.14.1.4 | Wireframe walkthru with Developer |  | 1d | 2017-06-19 | 2017-06-19 |  |  |  | 21d |  | finish no earlier than 2017-06-19 | UX - Chethana | 8h |
| 1020 | 1.6.3.14.1.5 | Coding Backend |  | 2d | 2017-06-26 | 2017-06-27 |  |  |  | 14d | 0d | start no earlier than 2017-06-26 | RD4 - Mahmooda | 16h |
| 1021 | 1.6.3.14.1.6 | **Coding Frontend** |  | 1d | 2017-05-31 | 2017-05-31 |  |  |  | 33d | 19d |  | RD10 - Basil | 8h |
| 1022 | 1.6.3.14.1.6.1 | UI Development |  | 1d | 2017-05-31 | 2017-05-31 |  |  |  | 33d |  |  |  |  |
| 1023 | 1.6.3.14.1.6.2 | Navigation |  | 1d | 2017-05-31 | 2017-05-31 |  |  |  | 33d |  |  |  |  |
| 1024 | 1.6.3.14.1.6.3 | Business Logic |  | 1d | 2017-05-31 | 2017-05-31 |  |  |  | 33d |  |  |  |  |
| 1025 | 1.6.3.14.1.7 | Ux UI Review |  | 1d | 2017-06-28 | 2017-06-28 |  |  |  | 13d | 0d | start no earlier than 2017-06-28 | UX - Chethana | 8h |
| 1026 | 1.6.3.14.1.8 | Sanity Test Cases |  | 1d | 2017-06-19 | 2017-06-19 |  |  |  | 21d |  | start no earlier than 2017-06-19 | UQ - Lalit Kumar Jha [10%] | 0.8h |
| 1027 | 1.6.3.14.1.9 | Sanity Testing |  | 1d | 2017-06-28 | 2017-06-28 | 1020, 1021 |  |  | 14d |  |  | RQA - Sharath Shet [50%]; UQ - Lalit Kumar Jha [50%] | 8h |
| 1028 | 1.6.3.14.1.10 | Code Review |  | 1d | 2017-06-28 | 2017-06-28 | 1020, 1021 |  |  | 14d |  |  | RT - Debarghya Das [50%] | 4h |
| 1029 | 1.6.3.14.1.11 | Demo / acceptance test |  | 1d | 2017-06-29 | 2017-06-29 | 1025 |  |  | 13d |  |  | UO Rob Plummer | 8h |
| 1030 | 1.6.3.15 | **(Investig:Safety Assessment) Basic Details Edit** |  | 23d | 2017-05-31 A | 2017-06-30 |  |  | 23d | 12d |  |  |  | 64.8h |
| 1031 | 1.6.3.15.1 | **Development** |  | 23d | 2017-05-31 A | 2017-06-30 |  |  | 23d | 12d |  |  |  | 64.8h |
| 1032 | 1.6.3.15.1.1 | User Story Defined | milestone | 0d | 2017-06-16 A | 2017-06-16 A |  | 100% |  |  |  | finish no earlier than 2017-06-16 | UR - Dhanu |  |
| 1033 | 1.6.3.15.1.2 | Prototype Wireframe | milestone | 0d | 2017-06-16 A | 2017-06-16 A |  | 100% |  |  |  | finish no earlier than 2017-06-16 | UX - Chethana |  |
| 1034 | 1.6.3.15.1.3 | User story review with developer |  | 1d | 2017-06-16 | 2017-06-16 |  |  |  | 22d |  | start no earlier than 2017-06-16 | UR - Dhanu | 8h |
| 1035 | 1.6.3.15.1.4 | Wireframe walkthru with Developer |  | 1d | 2017-06-16 | 2017-06-16 |  |  |  | 22d |  | start no earlier than 2017-06-16 | UX - Chethana | 8h |
| 1036 | 1.6.3.15.1.5 | Coding Backend |  | 1d | 2017-06-27 | 2017-06-27 |  |  |  | 13d | 0d | start no earlier than 2017-06-27 | UD3 - Miju Mathew | 8h |
| 1037 | 1.6.3.15.1.6 | **Coding Frontend** |  | 1d | 2017-05-31 | 2017-05-31 |  |  |  | 32d | 19d |  | UD1 - Ankit Kumar | 8h |
| 1038 | 1.6.3.15.1.6.1 | UI Development |  | 1d | 2017-05-31 | 2017-05-31 |  |  |  | 32d |  |  |  |  |
| 1039 | 1.6.3.15.1.6.2 | Navigation |  | 1d | 2017-05-31 | 2017-05-31 |  |  |  | 32d |  |  |  |  |
| 1040 | 1.6.3.15.1.6.3 | Business Logic |  | 1d | 2017-05-31 | 2017-05-31 |  |  |  | 32d |  |  |  |  |
| 1041 | 1.6.3.15.1.7 | Ux UI Review |  | 1d | 2017-06-29 | 2017-06-29 |  |  |  | 13d |  | start no earlier than 2017-06-29 | UX - Chethana | 8h |
| 1042 | 1.6.3.15.1.8 | Sanity Test Cases |  | 1d | 2017-06-16 | 2017-06-16 |  |  |  | 22d |  | start no earlier than 2017-06-16 | UQ - Lalit Kumar Jha [10%] | 0.8h |
| 1043 | 1.6.3.15.1.9 | Sanity Testing |  | 2d | 2017-06-28 | 2017-06-29 | 1036, 1037 |  |  | 13d |  |  | UQ - Lalit Kumar Jha [50%]; RQA - Sharath Shet [50%] | 12h |
| 1044 | 1.6.3.15.1.10 | Code Review |  | 1d | 2017-06-28 | 2017-06-28 | 1036, 1037 |  |  | 14d |  |  | RT - Debarghya Das [50%] | 4h |
| 1045 | 1.6.3.15.1.11 | Demo / acceptance test |  | 1d | 2017-06-30 | 2017-06-30 |  |  |  | 12d |  | start no earlier than 2017-06-30 | UO Rob Plummer | 8h |

Notes:
- 1014: Text2: TBD
- 1016: Text2: User Story, Design Notes (no design notes for stubbed out User Stories)
- 1017: Text2: Full interactive prototype delivered
- 1030: Text2: TBD
- 1032: Text2: User Story, Design Notes (no design notes for stubbed out User Stories)
- 1033: Text2: Full interactive prototype delivered

| ID | WBS | Task | Type | Duration | Start | Finish | Predecessors | Complete | Remaining | Total slack | Free slack | Constraint | Resources | Work |
| --- | --- | --- | --- | --- | --- | --- | --- | --- | --- | --- | --- | --- | --- | --- |
| 1046 | 1.6.3.16 | **(Investig:Allegation/Findings) Add Allegation** |  | 21d | 2017-05-31 A | 2017-06-28 |  |  | 21d | 14d |  |  |  | 60.8h |
| 1047 | 1.6.3.16.1 | **Development** |  | 21d | 2017-05-31 A | 2017-06-28 |  |  | 21d | 14d |  |  |  | 60.8h |
| 1048 | 1.6.3.16.1.1 | User Story Defined | milestone | 0d | 2017-06-19 A | 2017-06-19 A |  | 100% |  |  |  | start no earlier than 2017-06-19 | UR - Dhanu |  |
| 1049 | 1.6.3.16.1.2 | Prototype Wireframe | milestone | 0d | 2017-06-19 A | 2017-06-19 A |  | 100% |  |  |  | start no earlier than 2017-06-19 | UX - Chethana |  |
| 1050 | 1.6.3.16.1.3 | User story review with developer |  | 1d | 2017-06-19 | 2017-06-19 |  |  |  | 21d |  | start no earlier than 2017-06-19 | UR - Dhanu | 8h |
| 1051 | 1.6.3.16.1.4 | Wireframe walkthru with Developer |  | 1d | 2017-06-19 | 2017-06-19 |  |  |  | 21d |  | start no earlier than 2017-06-19 | UX - Chethana | 8h |
| 1052 | 1.6.3.16.1.5 | Coding Backend |  | 1d | 2017-06-26 | 2017-06-26 |  |  |  | 15d | 0d | start no earlier than 2017-06-26 | RD5 - Swarnashree | 8h |
| 1053 | 1.6.3.16.1.6 | **Coding Frontend** |  | 1d | 2017-05-31 | 2017-05-31 |  |  |  | 33d | 18d |  | RD12 - Vaishali N Telang | 8h |
| 1054 | 1.6.3.16.1.6.1 | UI Development |  | 1d | 2017-05-31 | 2017-05-31 |  |  |  | 33d |  |  |  |  |
| 1055 | 1.6.3.16.1.6.2 | Navigation |  | 1d | 2017-05-31 | 2017-05-31 |  |  |  | 33d |  |  |  |  |
| 1056 | 1.6.3.16.1.6.3 | Business Logic |  | 1d | 2017-05-31 | 2017-05-31 |  |  |  | 33d |  |  |  |  |
| 1057 | 1.6.3.16.1.7 | Ux UI Review |  | 1d | 2017-06-27 | 2017-06-27 |  |  |  | 15d |  | start no earlier than 2017-06-27 | UX - Chethana | 8h |
| 1058 | 1.6.3.16.1.8 | Sanity Test Cases |  | 1d | 2017-06-19 | 2017-06-19 |  |  |  | 21d |  | start no earlier than 2017-06-19 | UQ - Lalit Kumar Jha [10%] | 0.8h |
| 1059 | 1.6.3.16.1.9 | Sanity Testing |  | 1d | 2017-06-27 | 2017-06-27 | 1052, 1053 |  |  | 15d |  |  | UQ - Lalit Kumar Jha [50%]; RQA - Sharath Shet [50%] | 8h |
| 1060 | 1.6.3.16.1.10 | Code Review |  | 1d | 2017-06-27 | 2017-06-27 | 1052, 1053 |  |  | 15d |  |  | RT - Debarghya Das [50%] | 4h |
| 1061 | 1.6.3.16.1.11 | Demo / acceptance test |  | 1d | 2017-06-28 | 2017-06-28 |  |  |  | 14d |  | start no earlier than 2017-06-28 | UO Rob Plummer | 8h |
| 1062 | 1.6.3.17 | **(Investig:Allegation/Findings) View Allegation** |  | 22d | 2017-05-31 A | 2017-06-29 |  |  | 22d | 13d |  |  |  | 60.8h |
| 1063 | 1.6.3.17.1 | **Development** |  | 22d | 2017-05-31 A | 2017-06-29 |  |  | 22d | 13d |  |  |  | 60.8h |
| 1064 | 1.6.3.17.1.1 | User Story Defined | milestone | 0d | 2017-06-19 A | 2017-06-19 A |  | 100% |  |  |  | start no earlier than 2017-06-19 | UR - Dhanu |  |
| 1065 | 1.6.3.17.1.2 | Prototype Wireframe | milestone | 0d | 2017-06-19 A | 2017-06-19 A |  | 100% |  |  |  | start no earlier than 2017-06-19 | UX - Chethana |  |
| 1066 | 1.6.3.17.1.3 | User story review with developer |  | 1d | 2017-06-19 | 2017-06-19 |  |  |  | 21d |  | start no earlier than 2017-06-19 | UR - Dhanu | 8h |
| 1067 | 1.6.3.17.1.4 | Wireframe walkthru with Developer |  | 1d | 2017-06-19 | 2017-06-19 |  |  |  | 21d |  | start no earlier than 2017-06-19 | UX - Chethana | 8h |
| 1068 | 1.6.3.17.1.5 | Coding Backend |  | 1d | 2017-06-27 | 2017-06-27 |  |  |  | 14d | 0d | start no earlier than 2017-06-27 | RD5 - Swarnashree | 8h |
| 1069 | 1.6.3.17.1.6 | **Coding Frontend** |  | 1d | 2017-05-31 | 2017-05-31 |  |  |  | 33d | 19d |  | RD12 - Vaishali N Telang | 8h |
| 1070 | 1.6.3.17.1.6.1 | UI Development |  | 1d | 2017-05-31 | 2017-05-31 |  |  |  | 33d |  |  |  |  |
| 1071 | 1.6.3.17.1.6.2 | Navigation |  | 1d | 2017-05-31 | 2017-05-31 |  |  |  | 33d |  |  |  |  |
| 1072 | 1.6.3.17.1.6.3 | Business Logic |  | 1d | 2017-05-31 | 2017-05-31 |  |  |  | 33d |  |  |  |  |
| 1073 | 1.6.3.17.1.7 | Ux UI Review |  | 1d | 2017-06-28 | 2017-06-28 |  |  |  | 14d |  | start no earlier than 2017-06-28 | UX - Chethana | 8h |
| 1074 | 1.6.3.17.1.8 | Sanity Test Cases |  | 1d | 2017-06-19 | 2017-06-19 |  |  |  | 21d |  | start no earlier than 2017-06-19 | UQ - Lalit Kumar Jha [10%] | 0.8h |
| 1075 | 1.6.3.17.1.9 | Sanity Testing |  | 1d | 2017-06-28 | 2017-06-28 | 1068, 1069 |  |  | 14d |  |  | UQ - Lalit Kumar Jha [50%]; RQA - Sharath Shet [50%] | 8h |
| 1076 | 1.6.3.17.1.10 | Code Review |  | 1d | 2017-06-28 | 2017-06-28 | 1068, 1069 |  |  | 14d |  |  | RT - Debarghya Das [50%] | 4h |
| 1077 | 1.6.3.17.1.11 | Demo / acceptance test |  | 1d | 2017-06-29 | 2017-06-29 |  |  |  | 13d |  | start no earlier than 2017-06-29 | UO Rob Plummer | 8h |

Notes:
- 1046: Text2: Stub
- 1048: Text2: User Story, Design Notes (no design notes for stubbed out User Stories)
- 1049: Text2: Full interactive prototype delivered
- 1062: Text2: Stub
- 1064: Text2: User Story, Design Notes (no design notes for stubbed out User Stories)
- 1065: Text2: Full interactive prototype delivered

| ID | WBS | Task | Type | Duration | Start | Finish | Predecessors | Complete | Remaining | Total slack | Free slack | Constraint | Resources | Work | Text1 |
| --- | --- | --- | --- | --- | --- | --- | --- | --- | --- | --- | --- | --- | --- | --- | --- |
| 1078 | 1.6.3.18 | **(Investig:Allegation/Findings) Add Findings** |  | 23d | 2017-05-31 A | 2017-06-30 |  |  | 23d | 12d |  |  |  | 60.8h |  |
| 1079 | 1.6.3.18.1 | **Development** |  | 23d | 2017-05-31 A | 2017-06-30 |  |  | 23d | 12d |  |  |  | 60.8h |  |
| 1080 | 1.6.3.18.1.1 | User Story Defined | milestone | 0d | 2017-06-19 A | 2017-06-19 A |  | 100% |  |  |  | start no earlier than 2017-06-19 | UR - Dhanu |  |  |
| 1081 | 1.6.3.18.1.2 | Prototype Wireframe | milestone | 0d | 2017-06-19 A | 2017-06-19 A |  | 100% |  |  |  | start no earlier than 2017-06-19 | UX - Chethana |  |  |
| 1082 | 1.6.3.18.1.3 | User story review with developer |  | 1d | 2017-06-19 | 2017-06-19 |  |  |  | 21d |  | start no earlier than 2017-06-19 | UR - Dhanu | 8h |  |
| 1083 | 1.6.3.18.1.4 | Wireframe walkthru with Developer |  | 1d | 2017-06-19 | 2017-06-19 |  |  |  | 21d |  | start no earlier than 2017-06-19 | UX - Chethana | 8h |  |
| 1084 | 1.6.3.18.1.5 | Coding Backend |  | 1d | 2017-06-28 | 2017-06-28 |  |  |  | 13d | 0d | start no earlier than 2017-06-28 | RD5 - Swarnashree | 8h |  |
| 1085 | 1.6.3.18.1.6 | **Coding Frontend** |  | 1d | 2017-05-31 | 2017-05-31 |  |  |  | 33d | 20d |  | RD12 - Vaishali N Telang | 8h |  |
| 1086 | 1.6.3.18.1.6.1 | UI Development |  | 1d | 2017-05-31 | 2017-05-31 |  |  |  | 33d |  |  |  |  |  |
| 1087 | 1.6.3.18.1.6.2 | Navigation |  | 1d | 2017-05-31 | 2017-05-31 |  |  |  | 33d |  |  |  |  |  |
| 1088 | 1.6.3.18.1.6.3 | Business Logic |  | 1d | 2017-05-31 | 2017-05-31 |  |  |  | 33d |  |  |  |  |  |
| 1089 | 1.6.3.18.1.7 | Ux UI Review |  | 1d | 2017-06-29 | 2017-06-29 |  |  |  | 13d |  | start no earlier than 2017-06-29 | UX - Chethana | 8h |  |
| 1090 | 1.6.3.18.1.8 | Sanity Test Cases |  | 1d | 2017-06-19 | 2017-06-19 |  |  |  | 21d |  | start no earlier than 2017-06-19 | UQ - Lalit Kumar Jha [10%] | 0.8h |  |
| 1091 | 1.6.3.18.1.9 | Sanity Testing |  | 1d | 2017-06-29 | 2017-06-29 | 1084, 1085 |  |  | 13d |  |  | UQ - Lalit Kumar Jha [50%]; RQA - Sharath Shet [50%] | 8h |  |
| 1092 | 1.6.3.18.1.10 | Code Review |  | 1d | 2017-06-29 | 2017-06-29 | 1084, 1085 |  |  | 13d |  |  | RT - Debarghya Das [50%] | 4h |  |
| 1093 | 1.6.3.18.1.11 | Demo / acceptance test |  | 1d | 2017-06-30 | 2017-06-30 |  |  |  | 12d |  | start no earlier than 2017-06-30 | UO Rob Plummer | 8h |  |
| 1094 | 1.6.3.19 | **(Investig:Investigation Details) Intake Summary** |  | 24d | 2017-05-31 A | 2017-07-03 |  |  | 24d | 11d |  |  |  | 96.8h |  |
| 1095 | 1.6.3.19.1 | **Development** |  | 24d | 2017-05-31 A | 2017-07-03 |  |  | 24d | 11d |  |  |  | 96.8h |  |
| 1096 | 1.6.3.19.1.1 | User Story Defined | milestone | 0d | 2017-06-15 A | 2017-06-15 A |  | 100% |  |  |  | finish no earlier than 2017-06-16 | UR - Dhanu |  |  |
| 1097 | 1.6.3.19.1.2 | Prototype Wireframe |  | 1d | 2017-06-16 | 2017-06-16 |  |  |  | 22d |  | finish no earlier than 2017-06-16 | UX - Chethana | 8h |  |
| 1098 | 1.6.3.19.1.3 | User story review with developer |  | 1d | 2017-06-15 | 2017-06-15 |  |  |  | 23d |  | start no earlier than 2017-06-15 | UR - Dhanu | 8h |  |
| 1099 | 1.6.3.19.1.4 | Wireframe walkthru with Developer |  | 1d | 2017-06-15 | 2017-06-15 |  |  |  | 23d |  | start no earlier than 2017-06-15 | UX - Chethana | 8h |  |
| 1100 | 1.6.3.19.1.5 | Coding Backend |  | 4d | 2017-06-23 | 2017-06-28 |  |  |  | 12d | 0d | start no earlier than 2017-06-23 | RD6 - Kamalkanth | 32h | MBaaS Development complete |
| 1101 | 1.6.3.19.1.6 | **Coding Frontend** |  | 1d | 2017-05-31 | 2017-05-31 |  |  |  | 32d | 20d |  | RD3 - Karthik P | 8h |  |
| 1102 | 1.6.3.19.1.6.1 | UI Development |  | 1d | 2017-05-31 | 2017-05-31 |  |  |  | 32d |  |  |  |  |  |
| 1103 | 1.6.3.19.1.6.2 | Navigation |  | 1d | 2017-05-31 | 2017-05-31 |  |  |  | 32d |  |  |  |  |  |
| 1104 | 1.6.3.19.1.6.3 | Business Logic |  | 1d | 2017-05-31 | 2017-05-31 |  |  |  | 32d |  |  |  |  |  |
| 1105 | 1.6.3.19.1.7 | Ux UI Review |  | 1d | 2017-07-03 | 2017-07-03 |  |  |  | 11d |  | start no earlier than 2017-07-03 | UX - Chethana | 8h |  |
| 1106 | 1.6.3.19.1.8 | Sanity Test Cases |  | 1d | 2017-05-31 | 2017-05-31 |  |  |  | 34d |  |  | UQ - Lalit Kumar Jha [10%] | 0.8h |  |
| 1107 | 1.6.3.19.1.9 | Sanity Testing |  | 2d | 2017-06-29 | 2017-06-30 | 1100, 1101 |  |  | 12d |  |  | RQA - Sharath Shet [50%]; UQ - Lalit Kumar Jha [50%] | 12h |  |
| 1108 | 1.6.3.19.1.10 | Code Review |  | 1d | 2017-06-29 | 2017-06-29 | 1100, 1101 |  |  | 12d | 0d |  | RT - Debarghya Das [50%] | 4h |  |
| 1109 | 1.6.3.19.1.11 | Demo / acceptance test |  | 1d | 2017-06-30 | 2017-06-30 | 1108 |  |  | 12d |  |  | UO Rob Plummer | 8h |  |

Notes:
- 1078: Text2: TBD
- 1080: Text2: User Story, Design Notes (no design notes for stubbed out User Stories)
- 1081: Text2: Full interactive prototype delivered
- 1094: Text2: Stub
- 1096: Text2: User Story, Design Notes (no design notes for stubbed out User Stories)
- 1097: Text2: Full interactive prototype delivered

| ID | WBS | Task | Type | Duration | Start | Finish | Predecessors | Complete | Remaining | Total slack | Free slack | Constraint | Resources | Work | Actual work |
| --- | --- | --- | --- | --- | --- | --- | --- | --- | --- | --- | --- | --- | --- | --- | --- |
| 1110 | 1.6.3.20 | **(Investig:Security Management) Login** |  | 22d | 2017-05-31 A | 2017-06-29 |  |  | 22d | 13d |  |  |  | 60.8h |  |
| 1111 | 1.6.3.20.1 | **Development** |  | 22d | 2017-05-31 A | 2017-06-29 |  |  | 22d | 13d |  |  |  | 60.8h |  |
| 1112 | 1.6.3.20.1.1 | User Story Defined | milestone | 0d | 2017-06-16 A | 2017-06-16 A |  | 100% |  |  |  | finish no earlier than 2017-06-16 | UR - Dhanu |  |  |
| 1113 | 1.6.3.20.1.2 | Prototype Wireframe | milestone | 0d | 2017-06-16 A | 2017-06-16 A |  | 100% |  |  |  | finish no earlier than 2017-06-16 | UX - Chethana |  |  |
| 1114 | 1.6.3.20.1.3 | User story review with developer |  | 1d | 2017-06-16 | 2017-06-16 |  |  |  | 22d |  | start no earlier than 2017-06-16 | UR - Dhanu | 8h |  |
| 1115 | 1.6.3.20.1.4 | Wireframe walkthru with Developer |  | 1d | 2017-06-16 | 2017-06-16 |  |  |  | 22d |  | start no earlier than 2017-06-16 | UX - Chethana | 8h |  |
| 1116 | 1.6.3.20.1.5 | Coding Backend |  | 1d | 2017-06-28 | 2017-06-28 |  |  |  | 13d | 0d | start no earlier than 2017-06-28 | RD6 - Kamalkanth | 8h |  |
| 1117 | 1.6.3.20.1.6 | **Coding Frontend** |  | 1d | 2017-05-31 | 2017-05-31 |  |  |  | 33d | 20d |  | RD1 - Ravindra | 8h |  |
| 1118 | 1.6.3.20.1.6.1 | UI Development |  | 1d | 2017-05-31 | 2017-05-31 |  |  |  | 33d |  |  |  |  |  |
| 1119 | 1.6.3.20.1.6.2 | Navigation |  | 1d | 2017-05-31 | 2017-05-31 |  |  |  | 33d |  |  |  |  |  |
| 1120 | 1.6.3.20.1.6.3 | Business Logic |  | 1d | 2017-05-31 | 2017-05-31 |  |  |  | 33d |  |  |  |  |  |
| 1121 | 1.6.3.20.1.7 | Ux UI Review |  | 1d | 2017-06-26 | 2017-06-26 |  |  |  | 16d |  | start no earlier than 2017-06-26 | UX - Chethana | 8h |  |
| 1122 | 1.6.3.20.1.8 | Sanity Test Cases |  | 1d | 2017-06-16 | 2017-06-16 |  |  |  | 22d |  | start no earlier than 2017-06-16 | UQ - Lalit Kumar Jha [10%] | 0.8h |  |
| 1123 | 1.6.3.20.1.9 | Sanity Testing |  | 1d | 2017-06-27 | 2017-06-27 |  |  |  | 15d |  | start no earlier than 2017-06-27 | RQA - Sharath Shet [50%]; UQ - Lalit Kumar Jha [50%] | 8h |  |
| 1124 | 1.6.3.20.1.10 | Code Review |  | 1d | 2017-06-29 | 2017-06-29 | 1116, 1117 |  |  | 13d |  |  | RT - Debarghya Das [50%] | 4h |  |
| 1125 | 1.6.3.20.1.11 | Demo / acceptance test |  | 1d | 2017-06-28 | 2017-06-28 |  |  |  | 14d |  | start no earlier than 2017-06-28 | UO Rob Plummer | 8h |  |
| 1126 | 1.6.3.21 | **(Investig:Security Management) Login Using Touch ID** |  | 24d | 2017-05-31 A | 2017-07-03 |  | 8% | 22d | 11d |  |  |  | 68.8h | 8h |
| 1127 | 1.6.3.21.1 | **Development** |  | 24d | 2017-05-31 A | 2017-07-03 |  | 8% | 22d | 11d |  |  |  | 68.8h | 8h |
| 1128 | 1.6.3.21.1.1 | User Story Defined | milestone | 0d | 2017-06-16 | 2017-06-16 |  |  |  | 22d |  | finish no earlier than 2017-06-16 | UR - Dhanu |  |  |
| 1129 | 1.6.3.21.1.2 | Prototype Wireframe |  | 1d | 2017-06-16 A | 2017-06-16 A |  | 100% |  |  |  | finish no earlier than 2017-06-16 | UX - Chethana | 8h | 8h |
| 1130 | 1.6.3.21.1.3 | User story review with developer |  | 1d | 2017-06-16 | 2017-06-16 |  |  |  | 22d |  | start no earlier than 2017-06-16 | UR - Dhanu | 8h |  |
| 1131 | 1.6.3.21.1.4 | Wireframe walkthru with Developer |  | 1d | 2017-06-16 | 2017-06-16 |  |  |  | 22d |  | start no earlier than 2017-06-16 | UX - Chethana | 8h |  |
| 1132 | 1.6.3.21.1.5 | Coding Backend |  | 1d | 2017-06-29 | 2017-06-29 |  |  |  | 11d | 0d | start no earlier than 2017-06-29 | RD6 - Kamalkanth | 8h |  |
| 1133 | 1.6.3.21.1.6 | **Coding Frontend** |  | 1d | 2017-05-31 | 2017-05-31 |  |  |  | 32d | 21d |  | RD1 - Ravindra | 8h |  |
| 1134 | 1.6.3.21.1.6.1 | UI Development |  | 1d | 2017-05-31 | 2017-05-31 |  |  |  | 32d |  |  |  |  |  |
| 1135 | 1.6.3.21.1.6.2 | Navigation |  | 1d | 2017-05-31 | 2017-05-31 |  |  |  | 32d |  |  |  |  |  |
| 1136 | 1.6.3.21.1.6.3 | Business Logic |  | 1d | 2017-05-31 | 2017-05-31 |  |  |  | 32d |  |  |  |  |  |
| 1137 | 1.6.3.21.1.7 | Ux UI Review |  | 1d | 2017-06-30 | 2017-06-30 |  |  |  | 12d |  | start no earlier than 2017-06-30 | UX - Chethana | 8h |  |
| 1138 | 1.6.3.21.1.8 | Sanity Test Cases |  | 1d | 2017-06-16 | 2017-06-16 |  |  |  | 22d |  | start no earlier than 2017-06-16 | UQ - Lalit Kumar Jha [10%] | 0.8h |  |
| 1139 | 1.6.3.21.1.9 | Sanity Testing |  | 1d | 2017-06-30 | 2017-06-30 | 1132, 1133 |  |  | 12d |  | start no earlier than 2017-06-16 | RQA - Sharath Shet [50%]; UQ - Lalit Kumar Jha [50%] | 8h |  |
| 1140 | 1.6.3.21.1.10 | Code Review |  | 1d | 2017-06-30 | 2017-06-30 | 1132, 1133 |  |  | 11d | 0d |  | RT - Debarghya Das [50%] | 4h |  |
| 1141 | 1.6.3.21.1.11 | Demo / acceptance test |  | 1d | 2017-07-03 | 2017-07-03 | 1140 |  |  | 11d |  |  | UO Rob Plummer | 8h |  |

Notes:
- 1110: Text2: Stub
- 1112: Text2: User Story, Design Notes (no design notes for stubbed out User Stories)
- 1113: Text2: Full interactive prototype delivered
- 1126: Text2: Stub
- 1128: Text2: User Story, Design Notes (no design notes for stubbed out User Stories)
- 1129: Text2: Full interactive prototype delivered

| ID | WBS | Task | Type | Duration | Start | Finish | Predecessors | Complete | Remaining | Total slack | Free slack | Constraint | Resources | Work |
| --- | --- | --- | --- | --- | --- | --- | --- | --- | --- | --- | --- | --- | --- | --- |
| 1142 | 1.6.3.22 | **(Investig:Dashboard) View Calendar** |  | 15d | 2017-05-31 A | 2017-06-20 |  |  | 15d | 20d |  |  |  | 68.8h |
| 1143 | 1.6.3.22.1 | **Development** |  | 15d | 2017-05-31 A | 2017-06-20 |  |  | 15d | 20d |  |  |  | 68.8h |
| 1144 | 1.6.3.22.1.1 | User Story Defined | milestone | 0d | 2017-06-13 A | 2017-06-13 A |  | 100% |  |  |  | start no earlier than 2017-06-13 | UR - Dhanu |  |
| 1145 | 1.6.3.22.1.2 | Prototype Wireframe | milestone | 0d | 2017-06-13 A | 2017-06-13 A |  | 100% |  |  |  | start no earlier than 2017-06-13 | UX - Chethana |  |
| 1146 | 1.6.3.22.1.3 | User story review with developer |  | 1d | 2017-06-13 | 2017-06-13 |  |  |  | 25d |  | start no earlier than 2017-06-13 | UR - Dhanu | 8h |
| 1147 | 1.6.3.22.1.4 | Wireframe walkthru with Developer |  | 1d | 2017-06-13 | 2017-06-13 |  |  |  | 25d |  | start no earlier than 2017-06-13 | UX - Chethana | 8h |
| 1148 | 1.6.3.22.1.5 | Coding Backend |  | 2d | 2017-06-14 | 2017-06-15 |  |  |  | 22d | 0d | start no earlier than 2017-06-14 | RD13 - Karthik S S | 16h |
| 1149 | 1.6.3.22.1.6 | **Coding Frontend** |  | 1d | 2017-05-31 | 2017-05-31 |  |  |  | 33d | 11d |  | RD8 - Nagesha | 8h |
| 1150 | 1.6.3.22.1.6.1 | UI Development |  | 1d | 2017-05-31 | 2017-05-31 |  |  |  | 33d |  |  |  |  |
| 1151 | 1.6.3.22.1.6.2 | Navigation |  | 1d | 2017-05-31 | 2017-05-31 |  |  |  | 33d |  |  |  |  |
| 1152 | 1.6.3.22.1.6.3 | Business Logic |  | 1d | 2017-05-31 | 2017-05-31 |  |  |  | 33d |  |  |  |  |
| 1153 | 1.6.3.22.1.7 | Ux UI Review |  | 1d | 2017-06-19 | 2017-06-19 |  |  |  | 21d |  | start no earlier than 2017-06-19 | UX - Chethana | 8h |
| 1154 | 1.6.3.22.1.8 | Sanity Test Cases |  | 1d | 2017-06-13 | 2017-06-13 |  |  |  | 25d |  | start no earlier than 2017-06-13 | UQ - Lalit Kumar Jha [10%] | 0.8h |
| 1155 | 1.6.3.22.1.9 | Sanity Testing |  | 1d | 2017-06-16 | 2017-06-16 | 1148, 1149 |  |  | 22d |  |  | RQA - Sharath Shet [50%]; UQ - Lalit Kumar Jha [50%] | 8h |
| 1156 | 1.6.3.22.1.10 | Code Review |  | 1d | 2017-06-16 | 2017-06-16 | 1148, 1149 |  |  | 22d |  |  | RT - Debarghya Das [50%] | 4h |
| 1157 | 1.6.3.22.1.11 | Demo / acceptance test |  | 1d | 2017-06-20 | 2017-06-20 |  |  |  | 20d |  | start no earlier than 2017-06-20 | UO Rob Plummer | 8h |
| 1158 | 1.6.3.23 | **(Investig:Dashboard) View Appointment** |  | 18d | 2017-05-31 A | 2017-06-23 |  |  | 18d | 17d |  |  |  | 68.8h |
| 1159 | 1.6.3.23.1 | **Development** |  | 18d | 2017-05-31 A | 2017-06-23 |  |  | 18d | 17d |  |  |  | 68.8h |
| 1160 | 1.6.3.23.1.1 | User Story Defined | milestone | 0d | 2017-06-13 A | 2017-06-13 A |  | 100% |  |  |  | start no earlier than 2017-06-13 | UR - Dhanu |  |
| 1161 | 1.6.3.23.1.2 | Prototype Wireframe | milestone | 0d | 2017-06-13 A | 2017-06-13 A |  | 100% |  |  |  | start no earlier than 2017-06-13 | UX - Chethana |  |
| 1162 | 1.6.3.23.1.3 | User story review with developer |  | 1d | 2017-06-13 | 2017-06-13 |  |  |  | 25d |  | start no earlier than 2017-06-13 | UR - Dhanu | 8h |
| 1163 | 1.6.3.23.1.4 | Wireframe walkthru with Developer |  | 1d | 2017-06-13 | 2017-06-13 |  |  |  | 25d |  | start no earlier than 2017-06-13 | UX - Chethana | 8h |
| 1164 | 1.6.3.23.1.5 | Coding Backend |  | 2d | 2017-06-16 | 2017-06-19 |  |  |  | 19d | 0d | start no earlier than 2017-06-16 | RD13 - Karthik S S | 16h |
| 1165 | 1.6.3.23.1.6 | **Coding Frontend** |  | 1d | 2017-05-31 | 2017-05-31 |  |  |  | 32d | 13d |  | RD8 - Nagesha | 8h |
| 1166 | 1.6.3.23.1.6.1 | UI Development |  | 1d | 2017-05-31 | 2017-05-31 |  |  |  | 32d |  |  |  |  |
| 1167 | 1.6.3.23.1.6.2 | Navigation |  | 1d | 2017-05-31 | 2017-05-31 |  |  |  | 32d |  |  |  |  |
| 1168 | 1.6.3.23.1.6.3 | Business Logic |  | 1d | 2017-05-31 | 2017-05-31 |  |  |  | 32d |  |  |  |  |
| 1169 | 1.6.3.23.1.7 | Ux UI Review |  | 1d | 2017-06-23 | 2017-06-23 |  |  |  | 17d |  | start no earlier than 2017-06-23 | UX - Chethana | 8h |
| 1170 | 1.6.3.23.1.8 | Sanity Test Cases |  | 1d | 2017-06-13 | 2017-06-13 |  |  |  | 25d |  | start no earlier than 2017-06-13 | UQ - Lalit Kumar Jha [10%] | 0.8h |
| 1171 | 1.6.3.23.1.9 | Sanity Testing |  | 1d | 2017-06-20 | 2017-06-20 | 1164, 1165 |  |  | 20d |  |  | RQA - Sharath Shet [50%]; UQ - Lalit Kumar Jha [50%] | 8h |
| 1172 | 1.6.3.23.1.10 | Code Review |  | 1d | 2017-06-20 | 2017-06-20 | 1164, 1165 |  |  | 19d | 0d |  | RT - Debarghya Das [50%] | 4h |
| 1173 | 1.6.3.23.1.11 | Demo / acceptance test |  | 1d | 2017-06-21 | 2017-06-21 | 1172 |  |  | 19d |  |  | UO Rob Plummer | 8h |

Notes:
- 1142: Text2: Stub
- 1144: Text2: User Story, Design Notes (no design notes for stubbed out User Stories)
- 1145: Text2: Full interactive prototype delivered
- 1158: Text2: Stub
- 1160: Text2: User Story, Design Notes (no design notes for stubbed out User Stories)
- 1161: Text2: Full interactive prototype delivered

| ID | WBS | Task | Type | Duration | Start | Finish | Predecessors | Complete | Remaining | Total slack | Free slack | Constraint | Resources | Work |
| --- | --- | --- | --- | --- | --- | --- | --- | --- | --- | --- | --- | --- | --- | --- |
| 1174 | 1.6.3.24 | **(Investig:Dashboard) View Tasklist** |  | 21d | 2017-05-31 A | 2017-06-28 |  |  | 21d | 14d |  |  |  | 68.8h |
| 1175 | 1.6.3.24.1 | **Development** |  | 21d | 2017-05-31 A | 2017-06-28 |  |  | 21d | 14d |  |  |  | 68.8h |
| 1176 | 1.6.3.24.1.1 | User Story Defined | milestone | 0d | 2017-06-13 A | 2017-06-13 A |  | 100% |  |  |  | start no earlier than 2017-06-13 | UR - Dhanu |  |
| 1177 | 1.6.3.24.1.2 | Prototype Wireframe | milestone | 0d | 2017-06-13 A | 2017-06-13 A |  | 100% |  |  |  | start no earlier than 2017-06-13 | UX - Chethana |  |
| 1178 | 1.6.3.24.1.3 | User story review with developer |  | 1d | 2017-06-13 | 2017-06-13 |  |  |  | 25d |  | start no earlier than 2017-06-13 | UR - Dhanu | 8h |
| 1179 | 1.6.3.24.1.4 | Wireframe walkthru with Developer |  | 1d | 2017-06-13 | 2017-06-13 |  |  |  | 25d |  | start no earlier than 2017-06-13 | UX - Chethana | 8h |
| 1180 | 1.6.3.24.1.5 | Coding Backend |  | 2d | 2017-06-20 | 2017-06-21 |  |  |  | 17d | 0d | start no earlier than 2017-06-20 | RD13 - Karthik S S | 16h |
| 1181 | 1.6.3.24.1.6 | **Coding Frontend** |  | 1d | 2017-05-31 | 2017-05-31 |  |  |  | 32d | 15d |  | RD8 - Nagesha | 8h |
| 1182 | 1.6.3.24.1.6.1 | UI Development |  | 1d | 2017-05-31 | 2017-05-31 |  |  |  | 32d |  |  |  |  |
| 1183 | 1.6.3.24.1.6.2 | Navigation |  | 1d | 2017-05-31 | 2017-05-31 |  |  |  | 32d |  |  |  |  |
| 1184 | 1.6.3.24.1.6.3 | Business Logic |  | 1d | 2017-05-31 | 2017-05-31 |  |  |  | 32d |  |  |  |  |
| 1185 | 1.6.3.24.1.7 | Ux UI Review |  | 1d | 2017-06-28 | 2017-06-28 |  |  |  | 14d |  | start no earlier than 2017-06-28 | UX - Chethana | 8h |
| 1186 | 1.6.3.24.1.8 | Sanity Test Cases |  | 1d | 2017-06-13 | 2017-06-13 |  |  |  | 25d |  | start no earlier than 2017-06-13 | UQ - Lalit Kumar Jha [10%] | 0.8h |
| 1187 | 1.6.3.24.1.9 | Sanity Testing |  | 1d | 2017-06-22 | 2017-06-22 | 1180, 1181 |  |  | 18d |  |  | RQA - Sharath Shet [50%]; UQ - Lalit Kumar Jha [50%] | 8h |
| 1188 | 1.6.3.24.1.10 | Code Review |  | 1d | 2017-06-22 | 2017-06-22 | 1180, 1181 |  |  | 17d | 0d |  | RT - Debarghya Das [50%] | 4h |
| 1189 | 1.6.3.24.1.11 | Demo / acceptance test |  | 1d | 2017-06-23 | 2017-06-23 | 1188 |  |  | 17d |  |  | UO Rob Plummer | 8h |
| 1190 | 1.6.3.25 | **(Investig:Alert/Notification) Alert / Notification** |  | 24d | 2017-05-31 A | 2017-07-03 |  |  | 24d | 11d |  |  |  | 68.8h |
| 1191 | 1.6.3.25.1 | **Development** |  | 24d | 2017-05-31 A | 2017-07-03 |  |  | 24d | 11d |  |  |  | 68.8h |
| 1192 | 1.6.3.25.1.1 | User Story Defined | milestone | 0d | 2017-06-13 A | 2017-06-13 A |  | 100% |  |  |  | finish no earlier than 2017-06-13 | UR - Dhanu |  |
| 1193 | 1.6.3.25.1.2 | Prototype Wireframe | milestone | 0d | 2017-06-13 A | 2017-06-13 A |  | 100% |  |  |  | finish no earlier than 2017-06-13 | UX - Chethana |  |
| 1194 | 1.6.3.25.1.3 | User story review with developer |  | 1d | 2017-06-13 | 2017-06-13 |  |  |  | 25d |  | start no earlier than 2017-06-13 | UR - Dhanu | 8h |
| 1195 | 1.6.3.25.1.4 | Wireframe walkthru with Developer |  | 1d | 2017-06-13 | 2017-06-13 |  |  |  | 25d |  | start no earlier than 2017-06-13 | UX - Chethana | 8h |
| 1196 | 1.6.3.25.1.5 | Coding Backend |  | 2d | 2017-06-22 | 2017-06-23 |  |  |  | 16d | 0d | start no earlier than 2017-06-22 | RD13 - Karthik S S | 16h |
| 1197 | 1.6.3.25.1.6 | **Coding Frontend** |  | 1d | 2017-05-31 | 2017-05-31 |  |  |  | 33d | 17d |  | RD8 - Nagesha | 8h |
| 1198 | 1.6.3.25.1.6.1 | UI Development |  | 1d | 2017-05-31 | 2017-05-31 |  |  |  | 33d |  |  |  |  |
| 1199 | 1.6.3.25.1.6.2 | Navigation |  | 1d | 2017-05-31 | 2017-05-31 |  |  |  | 33d |  |  |  |  |
| 1200 | 1.6.3.25.1.6.3 | Business Logic |  | 1d | 2017-05-31 | 2017-05-31 |  |  |  | 33d |  |  |  |  |
| 1201 | 1.6.3.25.1.7 | Ux UI Review |  | 1d | 2017-06-30 | 2017-06-30 |  |  |  | 11d | 0d | start no earlier than 2017-06-30 | UX - Chethana | 8h |
| 1202 | 1.6.3.25.1.8 | Sanity Test Cases |  | 1d | 2017-06-13 | 2017-06-13 |  |  |  | 25d |  | start no earlier than 2017-06-13 | UQ - Lalit Kumar Jha [10%] | 0.8h |
| 1203 | 1.6.3.25.1.9 | Sanity Testing |  | 1d | 2017-06-26 | 2017-06-26 | 1196, 1197 |  |  | 16d |  |  | RQA - Sharath Shet [50%]; UQ - Lalit Kumar Jha [50%] | 8h |
| 1204 | 1.6.3.25.1.10 | Code Review |  | 1d | 2017-06-26 | 2017-06-26 | 1196, 1197 |  |  | 16d |  |  | RT - Debarghya Das [50%] | 4h |
| 1205 | 1.6.3.25.1.11 | Demo / acceptance test |  | 1d | 2017-07-03 | 2017-07-03 | 1201 |  |  | 11d |  |  | UO Rob Plummer | 8h |

Notes:
- 1174: Text2: Stub
- 1176: Text2: User Story, Design Notes (no design notes for stubbed out User Stories)
- 1177: Text2: Full interactive prototype delivered
- 1190: Text2: Stub
- 1192: Text2: User Story, Design Notes (no design notes for stubbed out User Stories)
- 1193: Text2: Full interactive prototype delivered

| ID | WBS | Task | Duration | Start | Finish | Predecessors | Total slack | Free slack | Constraint | Resources | Work |
| --- | --- | --- | --- | --- | --- | --- | --- | --- | --- | --- | --- |
| 1206 | 1.6.3.26 | **(Investig:CaseWorker Resources) Safe Texting** | 18d | 2017-05-31 | 2017-06-23 |  | 17d |  |  |  | 68.8h |
| 1207 | 1.6.3.26.1 | **Development** | 18d | 2017-05-31 | 2017-06-23 |  | 17d |  |  |  | 68.8h |
| 1208 | 1.6.3.26.1.1 | User Story Defined | 1d | 2017-06-19 | 2017-06-19 |  | 21d |  | finish no earlier than 2017-06-19 | UR - Dhanu | 8h |
| 1209 | 1.6.3.26.1.2 | Prototype Wireframe | 1d | 2017-06-19 | 2017-06-19 |  | 21d |  | finish no earlier than 2017-06-19 | UX - Chethana | 8h |
| 1210 | 1.6.3.26.1.3 | User story review with developer | 1d | 2017-06-19 | 2017-06-19 |  | 21d |  | start no earlier than 2017-06-19 | UR - Dhanu | 8h |
| 1211 | 1.6.3.26.1.4 | Wireframe walkthru with Developer | 1d | 2017-06-19 | 2017-06-19 |  | 21d |  | start no earlier than 2017-06-19 | UX - Chethana | 8h |
| 1212 | 1.6.3.26.1.5 | Coding Backend | 1d | 2017-05-31 | 2017-05-31 |  | 33d | 0d |  |  |  |
| 1213 | 1.6.3.26.1.6 | **Coding Frontend** | 1d | 2017-05-31 | 2017-05-31 |  | 33d | 0d |  | UD2 - Yuvaraj | 8h |
| 1214 | 1.6.3.26.1.6.1 | UI Development | 1d | 2017-05-31 | 2017-05-31 |  | 33d |  |  |  |  |
| 1215 | 1.6.3.26.1.6.2 | Navigation | 1d | 2017-05-31 | 2017-05-31 |  | 33d |  |  |  |  |
| 1216 | 1.6.3.26.1.6.3 | Business Logic | 1d | 2017-05-31 | 2017-05-31 |  | 33d |  |  |  |  |
| 1217 | 1.6.3.26.1.7 | Ux UI Review | 1d | 2017-06-22 | 2017-06-22 |  | 18d |  | start no earlier than 2017-06-22 | UX - Chethana | 8h |
| 1218 | 1.6.3.26.1.8 | Sanity Test Cases | 1d | 2017-06-19 | 2017-06-19 |  | 20d | 3d | start no earlier than 2017-06-19 | UQ - Lalit Kumar Jha [10%] | 0.8h |
| 1219 | 1.6.3.26.1.9 | Sanity Testing | 1d | 2017-06-01 | 2017-06-01 | 1212, 1213 | 33d |  |  | RQA - Sharath Shet [50%]; UQ - Lalit Kumar Jha [50%] | 8h |
| 1220 | 1.6.3.26.1.10 | Code Review | 1d | 2017-06-01 | 2017-06-01 | 1212, 1213 | 33d |  |  | RT - Debarghya Das [50%] | 4h |
| 1221 | 1.6.3.26.1.11 | Demo / acceptance test | 1d | 2017-06-23 | 2017-06-23 | 1218 | 17d |  | start no earlier than 2017-06-23 | UO Rob Plummer | 8h |
| 1222 | 1.6.3.27 | **(Investig:CaseWorker Resources) Policy Manual** | 19d | 2017-05-31 | 2017-06-26 |  | 16d |  |  |  | 72.8h |
| 1223 | 1.6.3.27.1 | **Development** | 19d | 2017-05-31 | 2017-06-26 |  | 16d |  |  |  | 72.8h |
| 1224 | 1.6.3.27.1.1 | User Story Defined | 1d | 2017-06-19 | 2017-06-19 |  | 21d |  | finish no earlier than 2017-06-19 | UR - Dhanu | 8h |
| 1225 | 1.6.3.27.1.2 | Prototype Wireframe | 1d | 2017-06-19 | 2017-06-19 |  | 21d |  | finish no earlier than 2017-06-19 | UX - Chethana | 8h |
| 1226 | 1.6.3.27.1.3 | User story review with developer | 1d | 2017-06-19 | 2017-06-19 |  | 21d |  | start no earlier than 2017-06-19 | UR - Dhanu | 8h |
| 1227 | 1.6.3.27.1.4 | Wireframe walkthru with Developer | 1d | 2017-06-19 | 2017-06-19 |  | 21d |  | start no earlier than 2017-06-19 | UX - Chethana | 8h |
| 1228 | 1.6.3.27.1.5 | Coding Backend | 1d | 2017-05-31 | 2017-05-31 |  | 32d | 0d |  |  |  |
| 1229 | 1.6.3.27.1.6 | **Coding Frontend** | 1d | 2017-05-31 | 2017-05-31 |  | 32d | 0d |  | UD2 - Yuvaraj | 8h |
| 1230 | 1.6.3.27.1.6.1 | UI Development | 1d | 2017-05-31 | 2017-05-31 |  | 32d |  |  |  |  |
| 1231 | 1.6.3.27.1.6.2 | Navigation | 1d | 2017-05-31 | 2017-05-31 |  | 32d |  |  |  |  |
| 1232 | 1.6.3.27.1.6.3 | Business Logic | 1d | 2017-05-31 | 2017-05-31 |  | 32d |  |  |  |  |
| 1233 | 1.6.3.27.1.7 | Ux UI Review | 1d | 2017-06-23 | 2017-06-23 |  | 17d |  | start no earlier than 2017-06-23 | UX - Chethana | 8h |
| 1234 | 1.6.3.27.1.8 | Sanity Test Cases | 1d | 2017-06-14 | 2017-06-14 |  | 23d | 7d | start no earlier than 2017-06-14 | UQ - Lalit Kumar Jha [10%] | 0.8h |
| 1235 | 1.6.3.27.1.9 | Sanity Testing | 2d | 2017-06-01 | 2017-06-02 | 1228, 1229 | 32d |  |  | RQA - Sharath Shet [50%]; UQ - Lalit Kumar Jha [50%] | 12h |
| 1236 | 1.6.3.27.1.10 | Code Review | 1d | 2017-06-01 | 2017-06-01 | 1228, 1229 | 33d |  |  | RT - Debarghya Das [50%] | 4h |
| 1237 | 1.6.3.27.1.11 | Demo / acceptance test | 1d | 2017-06-26 | 2017-06-26 | 1234 | 16d |  | start no earlier than 2017-06-26 | UO Rob Plummer | 8h |

Notes:
- 1206: Text2: Stub
- 1208: Text2: User Story, Design Notes (no design notes for stubbed out User Stories)
- 1209: Text2: Full interactive prototype delivered
- 1222: Text2: Stub
- 1224: Text2: User Story, Design Notes (no design notes for stubbed out User Stories)
- 1225: Text2: Full interactive prototype delivered

| ID | WBS | Task | Type | Duration | Start | Finish | Predecessors | Complete | Remaining | Total slack | Free slack | Constraint | Resources | Work |
| --- | --- | --- | --- | --- | --- | --- | --- | --- | --- | --- | --- | --- | --- | --- |
| 1238 | 1.6.3.28 | **(Investig:Push Notification) Push Notification** |  | 29d | 2017-05-31 | 2017-07-10 |  |  |  | 6d |  |  |  | 88.8h |
| 1239 | 1.6.3.28.1 | **Development** |  | 29d | 2017-05-31 | 2017-07-10 |  |  |  | 6d |  |  |  | 88.8h |
| 1240 | 1.6.3.28.1.1 | User Story Defined |  | 1d | 2017-06-20 | 2017-06-20 |  |  |  | 20d |  | start no earlier than 2017-06-20 | UR - Dhanu | 8h |
| 1241 | 1.6.3.28.1.2 | Prototype Wireframe |  | 1d | 2017-06-20 | 2017-06-20 |  |  |  | 20d |  | start no earlier than 2017-06-20 | UX - Chethana | 8h |
| 1242 | 1.6.3.28.1.3 | User story review with developer |  | 1d | 2017-06-20 | 2017-06-20 |  |  |  | 20d |  | start no earlier than 2017-06-20 | UR - Dhanu | 8h |
| 1243 | 1.6.3.28.1.4 | Wireframe walkthru with Developer |  | 1d | 2017-06-20 | 2017-06-20 |  |  |  | 20d |  | start no earlier than 2017-06-20 | UX - Chethana | 8h |
| 1244 | 1.6.3.28.1.5 | Coding Backend |  | 2d | 2017-07-03 | 2017-07-04 |  |  |  | 8d | 0d | start no earlier than 2017-07-03 | RD13 - Karthik S S | 16h |
| 1245 | 1.6.3.28.1.6 | **Coding Frontend** |  | 1d | 2017-05-31 | 2017-05-31 |  |  |  | 32d | 24d |  | RD3 - Karthik P | 8h |
| 1246 | 1.6.3.28.1.6.1 | UI Development |  | 1d | 2017-05-31 | 2017-05-31 |  |  |  | 32d |  |  |  |  |
| 1247 | 1.6.3.28.1.6.2 | Navigation |  | 1d | 2017-05-31 | 2017-05-31 |  |  |  | 32d |  |  |  |  |
| 1248 | 1.6.3.28.1.6.3 | Business Logic |  | 1d | 2017-05-31 | 2017-05-31 |  |  |  | 32d |  |  |  |  |
| 1249 | 1.6.3.28.1.7 | Ux UI Review |  | 1d | 2017-07-05 | 2017-07-05 |  |  |  | 9d |  | start no earlier than 2017-07-05 | UX - Chethana | 8h |
| 1250 | 1.6.3.28.1.8 | Sanity Test Cases |  | 1d | 2017-06-23 | 2017-06-23 |  |  |  | 17d |  | start no earlier than 2017-06-23 | UQ - Lalit Kumar Jha [10%] | 0.8h |
| 1251 | 1.6.3.28.1.9 | Sanity Testing |  | 2d | 2017-07-05 | 2017-07-06 | 1244, 1245 |  |  | 8d |  |  | UQ - Lalit Kumar Jha [50%]; RQA - Sharath Shet [50%] | 12h |
| 1252 | 1.6.3.28.1.10 | Code Review |  | 1d | 2017-07-05 | 2017-07-05 | 1244, 1245 |  |  | 9d |  |  | RT - Debarghya Das [50%] | 4h |
| 1253 | 1.6.3.28.1.11 | Demo / acceptance test |  | 1d | 2017-07-10 | 2017-07-10 |  |  |  | 6d |  | start no earlier than 2017-07-10 | UO Rob Plummer | 8h |
| 1254 | 1.6.3.29 | **(Investig:CaseWorker Resources) Contacts** |  | 16d | 2017-05-31 A | 2017-06-21 |  |  | 16d | 19d |  |  |  | 56.8h |
| 1255 | 1.6.3.29.1 | **Development** |  | 16d | 2017-05-31 A | 2017-06-21 |  |  | 16d | 19d |  |  |  | 56.8h |
| 1256 | 1.6.3.29.1.1 | User Story Defined | milestone | 0d | 2017-06-13 A | 2017-06-13 A |  | 100% |  |  |  | finish no earlier than 2017-06-13 | UR - Dhanu |  |
| 1257 | 1.6.3.29.1.2 | Prototype Wireframe | milestone | 0d | 2017-06-13 A | 2017-06-13 A |  | 100% |  |  |  | finish no earlier than 2017-06-13 | UX - Chethana |  |
| 1258 | 1.6.3.29.1.3 | User story review with developer |  | 1d | 2017-06-13 | 2017-06-13 |  |  |  | 25d |  | start no earlier than 2017-06-13 | UR - Dhanu | 8h |
| 1259 | 1.6.3.29.1.4 | Wireframe walkthru with Developer |  | 1d | 2017-06-13 | 2017-06-13 |  |  |  | 25d |  | start no earlier than 2017-06-13 | UX - Chethana | 8h |
| 1260 | 1.6.3.29.1.5 | Coding Backend |  | 1d | 2017-05-31 | 2017-05-31 |  |  |  | 32d | 0d |  |  |  |
| 1261 | 1.6.3.29.1.6 | **Coding Frontend** |  | 1d | 2017-05-31 | 2017-05-31 |  |  |  | 32d | 0d |  | UD2 - Yuvaraj | 8h |
| 1262 | 1.6.3.29.1.6.1 | UI Development |  | 1d | 2017-05-31 | 2017-05-31 |  |  |  | 32d |  |  |  |  |
| 1263 | 1.6.3.29.1.6.2 | Navigation |  | 1d | 2017-05-31 | 2017-05-31 |  |  |  | 32d |  |  |  |  |
| 1264 | 1.6.3.29.1.6.3 | Business Logic |  | 1d | 2017-05-31 | 2017-05-31 |  |  |  | 32d |  |  |  |  |
| 1265 | 1.6.3.29.1.7 | Ux UI Review |  | 1d | 2017-06-20 | 2017-06-20 |  |  |  | 20d |  | start no earlier than 2017-06-20 | UX - Chethana | 8h |
| 1266 | 1.6.3.29.1.8 | Sanity Test Cases |  | 1d | 2017-06-13 | 2017-06-13 |  |  |  | 24d | 5d | start no earlier than 2017-06-13 | UQ - Lalit Kumar Jha [10%] | 0.8h |
| 1267 | 1.6.3.29.1.9 | Sanity Testing |  | 2d | 2017-06-01 | 2017-06-02 | 1260, 1261 |  |  | 32d |  |  | RQA - Sharath Shet [50%]; UQ - Lalit Kumar Jha [50%] | 12h |
| 1268 | 1.6.3.29.1.10 | Code Review |  | 1d | 2017-06-01 | 2017-06-01 | 1260, 1261 |  |  | 33d |  |  | RT - Debarghya Das [50%] | 4h |
| 1269 | 1.6.3.29.1.11 | Demo / acceptance test |  | 1d | 2017-06-21 | 2017-06-21 | 1266 |  |  | 19d |  | start no earlier than 2017-06-21 | UO Rob Plummer | 8h |

Notes:
- 1238: Text2: Stub
- 1240: Text2: User Story, Design Notes (no design notes for stubbed out User Stories)
- 1241: Text2: Full interactive prototype delivered
- 1254: Text2: Stub
- 1256: Text2: User Story, Design Notes (no design notes for stubbed out User Stories)
- 1257: Text2: Full interactive prototype delivered

| ID | WBS | Task | Duration | Start | Finish | Predecessors | Total slack | Free slack | Constraint | Resources | Work |
| --- | --- | --- | --- | --- | --- | --- | --- | --- | --- | --- | --- |
| 1270 | 1.6.3.30 | **(Investig:CaseWorker Resources) Contacts Search** | 17d | 2017-05-31 | 2017-06-22 |  | 18d |  |  |  | 72.8h |
| 1271 | 1.6.3.30.1 | **Development** | 17d | 2017-05-31 | 2017-06-22 |  | 18d |  |  |  | 72.8h |
| 1272 | 1.6.3.30.1.1 | User Story Defined | 1d | 2017-06-16 | 2017-06-16 |  | 22d |  | finish no earlier than 2017-06-16 | UR - Dhanu | 8h |
| 1273 | 1.6.3.30.1.2 | Prototype Wireframe | 1d | 2017-06-16 | 2017-06-16 |  | 22d |  | finish no earlier than 2017-06-16 | UX - Chethana | 8h |
| 1274 | 1.6.3.30.1.3 | User story review with developer | 1d | 2017-06-16 | 2017-06-16 |  | 22d |  | start no earlier than 2017-06-16 | UR - Dhanu | 8h |
| 1275 | 1.6.3.30.1.4 | Wireframe walkthru with Developer | 1d | 2017-06-16 | 2017-06-16 |  | 22d |  | start no earlier than 2017-06-16 | UX - Chethana | 8h |
| 1276 | 1.6.3.30.1.5 | Coding Backend | 1d | 2017-06-19 | 2017-06-19 |  | 19d | 0d | start no earlier than 2017-06-19 |  |  |
| 1277 | 1.6.3.30.1.6 | **Coding Frontend** | 1d | 2017-05-31 | 2017-05-31 |  | 32d | 13d |  | UD2 - Yuvaraj | 8h |
| 1278 | 1.6.3.30.1.6.1 | UI Development | 1d | 2017-05-31 | 2017-05-31 |  | 32d |  |  |  |  |
| 1279 | 1.6.3.30.1.6.2 | Navigation | 1d | 2017-05-31 | 2017-05-31 |  | 32d |  |  |  |  |
| 1280 | 1.6.3.30.1.6.3 | Business Logic | 1d | 2017-05-31 | 2017-05-31 |  | 32d |  |  |  |  |
| 1281 | 1.6.3.30.1.7 | Ux UI Review | 1d | 2017-06-21 | 2017-06-21 |  | 19d |  | start no earlier than 2017-06-21 | UX - Chethana | 8h |
| 1282 | 1.6.3.30.1.8 | Sanity Test Cases | 1d | 2017-06-16 | 2017-06-16 |  | 21d | 3d | start no earlier than 2017-06-16 | UQ - Lalit Kumar Jha [10%] | 0.8h |
| 1283 | 1.6.3.30.1.9 | Sanity Testing | 2d | 2017-06-20 | 2017-06-21 | 1276, 1277 | 19d |  |  | RQA - Sharath Shet [50%]; UQ - Lalit Kumar Jha [50%] | 12h |
| 1284 | 1.6.3.30.1.10 | Code Review | 1d | 2017-06-20 | 2017-06-20 | 1276, 1277 | 20d |  |  | RT - Debarghya Das [50%] | 4h |
| 1285 | 1.6.3.30.1.11 | Demo / acceptance test | 1d | 2017-06-22 | 2017-06-22 | 1282 | 18d |  | start no earlier than 2017-06-22 | UO Rob Plummer | 8h |
| 1286 | 1.6.4 | **Sprint 4 - Acceptance** | 7d | 2017-07-10 | 2017-07-18 |  | 4d |  |  |  | 8h |
| 1287 | 1.6.4.1 | Code Merge - Sprint 3 | 2d | 2017-07-10 | 2017-07-11 |  | 3d | 0d | start no earlier than 2017-07-10 |  |  |
| 1288 | 1.6.4.2 | Integration Testing | 1d | 2017-07-12 | 2017-07-12 | 1287 | 3d | 0d |  |  |  |
| 1289 | 1.6.4.3 | Regression Testing of Sprint 3 - Unisys | 1d | 2017-07-13 | 2017-07-13 | 1288 | 3d |  |  |  |  |
| 1290 | 1.6.4.4 | Acceptance Testing | 1d | 2017-07-14 | 2017-07-14 |  | 2d |  | start no earlier than 2017-07-14 | UO - Rob Plummer | 8h |
| 1291 | 1.6.4.5 | Rework and Closure of all Identified defects | 3d | 2017-07-14 | 2017-07-18 |  | 4d |  | start no earlier than 2017-07-14 |  |  |
| 1292 | 1.6.5 | Demo - Sprint 4 | 1d | 2017-07-18 | 2017-07-18 |  | 4d |  | start no earlier than 2017-07-18 |  |  |
| 1293 | 1.7 | **RFP Response & Review (Pre-sales)** | 8d | 2017-06-07 | 2017-06-16 |  | 22d |  |  |  | 128h |
| 1294 | 1.7.1 | Iteration 1 | 4d | 2017-06-07 | 2017-06-12 |  | 22d | 0d | start no earlier than 2017-06-07 | RS - Niranjan Bhat; RA - Prashanth Hegde | 64h |
| 1295 | 1.7.2 | Iteration 2 | 2d | 2017-06-13 | 2017-06-14 | 1294 | 22d | 0d |  | RA - Prashanth Hegde; RS - Niranjan Bhat | 32h |
| 1296 | 1.7.3 | Iteration 3 | 2d | 2017-06-15 | 2017-06-16 | 1295 | 22d |  |  | RA - Prashanth Hegde; RS - Niranjan Bhat | 32h |

Notes:
- 1270: Text2: Stub
- 1272: Text2: User Story, Design Notes (no design notes for stubbed out User Stories)
- 1273: Text2: Full interactive prototype delivered

| ID | WBS | Task | Duration | Start | Finish | Predecessors | Total slack | Free slack | Constraint | Resources | Work | Text2 |
| --- | --- | --- | --- | --- | --- | --- | --- | --- | --- | --- | --- | --- |
| 1297 | 1.8 | **Demo Environment** | 20d | 2017-06-28 | 2017-07-25 |  | 0d |  |  |  | 232h | Demo Script Executable and Able to reset environment |
| 1298 | 1.8.1 | **Laptop Demo** | 20d | 2017-06-28 | 2017-07-25 |  | 0d |  |  |  | 232h | Demo executable on laptop - not amazon |
| 1299 | 1.8.1.1 | Laptop Requirements | 1d | 2017-06-28 | 2017-06-28 |  | 18d |  | finish no earlier than 2017-06-28 | RA - Guruprasad K J | 8h | memory/hard drive / processor |
| 1300 | 1.8.1.2 | Server Environment installed | 6d | 2017-07-03 | 2017-07-10 |  | 9d | 5d | finish no earlier than 2017-07-10 | UA - Raju | 48h |  |
| 1301 | 1.8.1.3 | Mobile Environment Installed | 1d | 2017-07-18 | 2017-07-18 | 1300 | 4d |  | finish no earlier than 2017-07-18 | UA - Raju | 8h |  |
| 1302 | 1.8.1.4 | Demo Script | 3d | 2017-07-17 | 2017-07-19 |  | 1d | 0d | finish no earlier than 2017-07-19 | UO Rob Plummer | 24h |  |
| 1303 | 1.8.1.5 | Test Data | 2d | 2017-07-20 | 2017-07-21 | 1302 | 1d |  |  | UO Rob Plummer | 16h |  |
| 1304 | 1.8.1.6 | Installation Documentation | 13d | 2017-07-04 | 2017-07-20 |  | 2d |  | finish no earlier than 2017-07-20 | RA - Guruprasad K J | 104h |  |
| 1305 | 1.8.1.7 | Reset instructions | 3d | 2017-07-21 | 2017-07-25 |  | 0d |  | finish no earlier than 2017-07-25 | RA - Guruprasad K J | 24h |  |
| 1306 | 1.9 | **Proj Plan not accounting for Demo User Stories? - need to verify** | 1d | 2017-05-31 | 2017-05-31 |  | 34d |  |  |  |  |  |
| 1307 | 1.9.1 | **Caseworker App - 2b started after sprint 2** | 1d | 2017-05-31 | 2017-05-31 |  | 34d |  |  |  |  |  |
| 1308 | 1.9.1.1 | (CW:Security Management) Login Online | 1d | 2017-05-31 | 2017-05-31 |  | 34d |  |  |  |  | Stub |
| 1309 | 1.9.1.2 | (CW:Security Management) Login using touch ID | 1d | 2017-05-31 | 2017-05-31 |  | 34d |  |  |  |  | Stub |
| 1310 | 1.9.1.3 | (CW:Dashboard) View calendar | 1d | 2017-05-31 | 2017-05-31 |  | 34d |  |  |  |  | Stub |
| 1311 | 1.9.1.4 | (CW:Dashboard) View Appointment | 1d | 2017-05-31 | 2017-05-31 |  | 34d |  |  |  |  | Stub |
| 1312 | 1.9.1.5 | (CW:Dashboard) View Tasklist | 1d | 2017-05-31 | 2017-05-31 |  | 34d |  |  |  |  | Stub |
| 1313 | 1.9.1.6 | (CW:Alert/Notification) Alert/Notification | 1d | 2017-05-31 | 2017-05-31 |  | 34d |  |  |  |  | Stub |
| 1314 | 1.9.1.7 | (CW:Case Workload) Case Workload | 1d | 2017-05-31 | 2017-05-31 |  | 34d |  |  |  |  | TBD |
| 1315 | 1.9.1.8 | (CW:Case Workload) Get Directions to house | 1d | 2017-05-31 | 2017-05-31 |  | 34d |  |  |  |  | TBD |
| 1316 | 1.9.1.9 | (CW:Case Workload) Call Case Contact | 1d | 2017-05-31 | 2017-05-31 |  | 34d |  |  |  |  | TBD |
| 1317 | 1.9.1.10 | (CW:Case Workload) SMS Case Contact | 1d | 2017-05-31 | 2017-05-31 |  | 34d |  |  |  |  | TBD |
| 1318 | 1.9.1.11 | (CW:Case Details) Case Tabs | 1d | 2017-05-31 | 2017-05-31 |  | 34d |  |  |  |  | TBD |
| 1319 | 1.9.1.12 | (CW:Case Details) Case Overview | 1d | 2017-05-31 | 2017-05-31 |  | 34d |  |  |  |  | TBD |
| 1320 | 1.9.1.13 | (CW:Case Details) Case Tasks | 1d | 2017-05-31 | 2017-05-31 |  | 34d |  |  |  |  | TBD |
| 1321 | 1.9.1.14 | (CW:FPM/CFTM) Create CFTM | 1d | 2017-05-31 | 2017-05-31 |  | 34d |  |  |  |  | TBD |
| 1322 | 1.9.1.15 | (CW:FPM/CFTM) Choose Participants | 1d | 2017-05-31 | 2017-05-31 |  | 34d |  |  |  |  | TBD |
| 1323 | 1.9.1.16 | (CW:FPM/CFTM) Choose Type | 1d | 2017-05-31 | 2017-05-31 |  | 34d |  |  |  |  | TBD |
| 1324 | 1.9.1.17 | (CW:FPM/CFTM) Schedule | 1d | 2017-05-31 | 2017-05-31 |  | 34d |  |  |  |  | TBD |
| 1325 | 1.9.1.18 | (CW:FPM/CFTM) Send Invites | 1d | 2017-05-31 | 2017-05-31 |  | 34d |  |  |  |  | TBD |
| 1326 | 1.9.1.19 | (CW:FPM/CFTM) CFTM Details | 1d | 2017-05-31 | 2017-05-31 |  | 34d |  |  |  |  | TBD |
| 1327 | 1.9.1.20 | (CW:FPM/CFTM) FPM Details | 1d | 2017-05-31 | 2017-05-31 |  | 34d |  |  |  |  | TBD |
| 1328 | 1.9.1.21 | (CW:FPM/CFTM) TDM Details | 1d | 2017-05-31 | 2017-05-31 |  | 34d |  |  |  |  | TBD |
| 1329 | 1.9.1.22 | (CW:FPM/CFTM) Add Need(s) | 1d | 2017-05-31 | 2017-05-31 |  | 34d |  |  |  |  | TBD |
| 1330 | 1.9.1.23 | (CW:FPM/CFTM) Add Participant(s) to Need record | 1d | 2017-05-31 | 2017-05-31 |  | 34d |  |  |  |  | TBD |
| 1331 | 1.9.1.24 | (CW:FPM/CFTM) Action Steps/Follow Up | 1d | 2017-05-31 | 2017-05-31 |  | 34d |  |  |  |  | TBD |
| 1332 | 1.9.1.25 | (CW:FPM/CFTM) Add Participant(s) to Action Steps | 1d | 2017-05-31 | 2017-05-31 |  | 34d |  |  |  |  | TBD |
| 1333 | 1.9.1.26 | (CW:FPM/CFTM) Add Placement and Resource Options | 1d | 2017-05-31 | 2017-05-31 |  | 34d |  |  |  |  | Stub |
| 1334 | 1.9.1.27 | (CW:FPM/CFTM) Select Focus Child for Placement Resource | 1d | 2017-05-31 | 2017-05-31 |  | 34d |  |  |  |  | Stub |
| 1335 | 1.9.1.28 | (CW:FPM/CFTM) Select Placement Type in focus Child in Placement Resource | 1d | 2017-05-31 | 2017-05-31 |  | 34d |  |  |  |  | stub |
| 1336 | 1.9.1.29 | (CW:FPM/CFTM) Signatures | 1d | 2017-05-31 | 2017-05-31 |  | 34d |  |  |  |  | TBD |
| 1337 | 1.9.1.30 | (CW:FPM/CFTM) Update CFTM | 1d | 2017-05-31 | 2017-05-31 |  | 34d |  |  |  |  | TBD |
| 1338 | 1.9.1.31 | (CW: Social Work Contacts) On-boarding | 1d | 2017-05-31 | 2017-05-31 |  | 34d |  |  |  |  | TBD |
| 1339 | 1.9.1.32 | (CW: Social Work Contacts) List | 1d | 2017-05-31 | 2017-05-31 |  | 34d |  |  |  |  | TBD |
| 1340 | 1.9.1.33 | (CW: Social Work Contacts) Add-Activity Details | 1d | 2017-05-31 | 2017-05-31 |  | 34d |  |  |  |  | TBD |
| 1341 | 1.9.1.34 | (CW:Social Work Contact) Add- Contact Summary | 1d | 2017-05-31 | 2017-05-31 |  | 34d |  |  |  |  | TBD |
| 1342 | 1.9.1.35 | (CW:Social Work Contact) Read Contact Summary | 1d | 2017-05-31 | 2017-05-31 |  | 34d |  |  |  |  | TBD |
| 1343 | 1.9.1.36 | (CW: Social Work Contacts) Select Participants | 1d | 2017-05-31 | 2017-05-31 |  | 34d |  |  |  |  | TBD |
| 1344 | 1.9.1.37 | (CW: Social Work Contacts) View | 1d | 2017-05-31 | 2017-05-31 |  | 34d |  |  |  |  | TBD |
| 1345 | 1.9.1.38 | (CW: Social Work Contacts) Photos - Capture and Attach | 1d | 2017-05-31 | 2017-05-31 |  | 34d |  |  |  |  | TBD |
| 1346 | 1.9.1.39 | (CW:Common) Panic Button | 1d | 2017-05-31 | 2017-05-31 |  | 34d |  |  |  |  | Stub |
| 1347 | 1.9.1.40 | (CW:Engagement Tools) Engagement tools | 1d | 2017-05-31 | 2017-05-31 |  | 34d |  |  |  |  | Stub |
| 1348 | 1.9.1.41 | (CW:Family Resources) Family Resources | 1d | 2017-05-31 | 2017-05-31 |  | 34d |  |  |  |  | Stub |
| 1349 | 1.9.1.42 | (CW:CaseWorker Resources) Caseworker Resources | 1d | 2017-05-31 | 2017-05-31 |  | 34d |  |  |  |  | Stub |
| 1350 | 1.9.1.43 | (CW:CaseWorker Resources) Contacts | 1d | 2017-05-31 | 2017-05-31 |  | 34d |  |  |  |  | Stub |
| 1351 | 1.9.1.44 | (CW:CaseWorker Resources) Contacts Search | 1d | 2017-05-31 | 2017-05-31 |  | 34d |  |  |  |  | Stub |
| 1352 | 1.9.1.45 | (CW:CaseWorker Resources) Safe Texting | 1d | 2017-05-31 | 2017-05-31 |  | 34d |  |  |  |  | Stub |
| 1353 | 1.9.1.46 | (CW:CaseWorker Resources) Policy Manual | 1d | 2017-05-31 | 2017-05-31 |  | 34d |  |  |  |  | Stub |
| 1354 | 1.9.1.47 | (CW:CaseWorker Resources) Forms Library | 1d | 2017-05-31 | 2017-05-31 |  | 34d |  |  |  |  | Stub |
| 1355 | 1.9.1.48 | (CW:CaseWorker Resources) Calendar | 1d | 2017-05-31 | 2017-05-31 |  | 34d |  |  |  |  | Stub |
